# Cronograma Leonardo_v2

How a schedule from MS Project changed from version to version. A marks actual dates.

## Version 1 (data date 2015-03-27, saved 2015-03-30, file Cronograma Leonardo_v2.mpp)

Note of the change: Inicial

| ID | WBS | Task | Duration | Start | Finish | Predecessors | Complete | Total float | Constraint |
| --- | --- | --- | --- | --- | --- | --- | --- | --- | --- |
| 1 | 1 | **Projeto Metas e Competência SuccessFactors** | 104d | 2015-02-09 A | 2015-07-24 |  | 14% | 0d |  |
| 2 | 1.1 | **Fase 1 - Preparação do Projeto** | 10d | 2015-02-09 A | 2015-02-20 A |  | 100% |  |  |
| 3 |  | Confirmação e Mobilização de Equipe | 8d | 2015-02-09 A | 2015-02-18 A |  | 100% |  | start no earlier than 2015-02-09 |
| 4 |  | Reunião Pré Kick-off | 1d | 2015-02-19 A | 2015-02-19 A | 3 | 100% |  |  |
| 5 |  | Kick-Off | 1d | 2015-02-20 A | 2015-02-20 A | 4 | 100% |  |  |
| 6 |  | Identificação dos Usuários | 2d | 2015-02-19 A | 2015-02-20 A | 3 | 100% |  |  |
| 7 | 1.1.5 | **Termo de Aceite Fase 1** | 0d | 2015-02-20 A | 2015-02-20 A |  | 100% |  |  |
| 8 |  | Assinatura Fase 1 - Preparação do Projeto | 0d | 2015-02-20 A | 2015-02-20 A | 6 | 100% |  |  |
| 9 | 1.2 | **Fase 2 - Business Blueprint** | 10d | 2015-02-23 A | 2015-03-06 |  | 92% |  |  |
| 10 | 1.2.1 | **Levantamento Gestão de Metas** | 5d | 2015-02-23 A | 2015-02-27 |  | 95% | 5d |  |
| 11 |  | Mapeamento dos Processos | 3d | 2015-02-23 A | 2015-02-25 A | 6 | 100% |  |  |
| 12 |  | Elaboração dos BBPs | 1d | 2015-02-26 A | 2015-02-26 A | 11 | 100% |  |  |
| 13 |  | Ajustes / Aprovação dos BBPs | 1d | 2015-02-27 A | 2015-02-27 | 12 | 75% | 5d |  |
| 14 | 1.2.2 | **Levantamento Gestão de Competência** | 8d | 2015-02-26 A | 2015-03-23 |  | 90% | 0d |  |
| 15 |  | Mapeamento dos Processos | 4d | 2015-02-26 A | 2015-03-03 A | 11 | 100% |  |  |
| 16 | 1.2.2.2 | **Elaboração dos BBPs** | 1d | 2015-03-04 A | 2015-03-04 A |  | 100% |  |  |
| 17 |  | EP | 0.5d | 2015-03-04 A | 2015-03-04 A | 15 | 100% |  |  |
| 18 |  | PDI | 0.5d | 2015-03-04 A | 2015-03-04 A | 17 | 100% |  |  |
| 19 |  | Competência | 0.5d | 2015-03-04 A | 2015-03-04 A | 15 | 100% |  | start no earlier than 2015-03-05 |
| 20 |  | Sucessão | 0.5d | 2015-03-04 A | 2015-03-04 A | 19 | 100% |  |  |
| 21 | 1.2.2.3 | **Ajustes / Aprovação dos BBPs** | 2d | 2015-03-06 | 2015-03-23 |  | 75% |  |  |
| 22 |  | EP | 1d | 2015-03-05 A | 2015-03-05 | 20 | 75% |  |  |
| 23 |  | PDI | 1d | 2015-03-06 A | 2015-03-06 | 22 | 75% | 1d |  |
| 24 |  | Competência | 1d | 2015-03-05 A | 2015-03-05 | 20 | 75% |  | start no earlier than 2015-03-05 |
| 25 |  | Sucesão | 1d | 2015-03-06 A | 2015-03-06 | 24 | 75% | 0d |  |
| 26 | 1.2.2.4 | **Termo de Aceite Fase 2** | 0d | 2015-03-06 | 2015-03-06 |  |  | 0d |  |
| 27 |  | Assinatura Fase 2 - Business Blueprint | 0d | 2015-03-06 | 2015-03-06 | 25 |  | 0d |  |
| 28 | 1.3 | **Fase 3 - Realização** | 49d | 2015-03-23 A | 2015-06-03 |  | 14% | 35d |  |
| 29 | 1.3.1 | **Gestão de Competência** | 14d | 2015-03-23 A | 2015-04-10 |  | 28% | 70d |  |
| 30 | 1.3.1.1 | **EP** | 5d | 2015-03-23 A | 2015-03-27 |  | 75% | 79d |  |
| 31 |  | Configurar EP (Employee Profile) - VE | 2d | 2015-03-23 A | 2015-03-24 |  | 75% |  | start no earlier than 2015-03-23 |
| 32 |  | Configurar EP (Employee Profile) - VS | 1d | 2015-03-25 A | 2015-03-25 | 31 | 75% | 0.75d |  |
| 33 |  | Configurar EP (Employee Profile) - VM | 1d | 2015-03-26 A | 2015-03-26 | 32 | 75% | 0.75d |  |
| 34 |  | Configurar EP (Employee Profile) - VID São Paulo e Curitiba | 1d | 2015-03-27 A | 2015-03-27 | 33 | 75% | 0d |  |
| 35 |  | Onda 1 - Entrega Fase 3 - Realização - EP | 0d | 2015-03-27 | 2015-03-27 | 34 |  | 79d |  |
| 36 | 1.3.1.2 | **PDI** | 5d | 2015-03-23 A | 2015-03-27 A |  | 100% |  |  |
| 37 |  | Configurar PDI (Palno de Desenvolvimento Individual) - VS | 2d | 2015-03-23 A | 2015-03-24 A |  | 100% |  | start no earlier than 2015-02-23 |
| 38 |  | Configurar PDI (Palno de Desenvolvimento Individual) - VE | 1d | 2015-03-25 A | 2015-03-25 A | 31 | 100% |  |  |
| 39 |  | Configurar PDI (Palno de Desenvolvimento Individual) - VM | 1d | 2015-03-26 A | 2015-03-26 A | 32 | 100% |  |  |
| 40 |  | Configurar PDI (Palno de Desenvolvimento Individual) - VID São Paulo e Curitiba | 1d | 2015-03-27 A | 2015-03-27 A | 33 | 100% |  |  |
| 41 |  | Onda 1 - Entrega Fase 3 - Realização - PDI | 0d | 2015-03-27 A | 2015-03-27 A | 40 | 100% |  |  |
| 42 | 1.3.1.3 | **Sucessão** | 5d | 2015-03-30 A | 2015-04-06 |  | 25% | 74d |  |
| 43 |  | Configurar Sucessão - VS | 2d | 2015-03-30 A | 2015-03-31 | 34 | 25% |  | start no earlier than 2015-03-30 |
| 44 |  | Configurar Sucessão - VM | 1d | 2015-04-01 A | 2015-04-01 | 43 | 25% | 0.25d |  |
| 45 |  | Configurar Sucessão - VID São Paulo e Curitiba | 1d | 2015-04-02 A | 2015-04-02 | 44 | 25% | 0.25d |  |
| 46 |  | Configurar Sucessão - VE | 1d | 2015-04-06 A | 2015-04-06 | 45 | 25% | 71d |  |
| 47 |  | Onda 1 - Entrega Fase 3 - Realização - Sucessão | 0d | 2015-04-06 | 2015-04-06 | 46 |  | 74d |  |
| 48 | 1.3.1.4 | **PM** | 8d | 2015-03-30 A | 2015-04-09 |  | 14% | 71d |  |
| 49 |  | Configurar PM - VS | 4d | 2015-03-30 A | 2015-04-02 | 34 | 25% |  | start no earlier than 2015-03-30 |
| 50 |  | Configurar PM - VM | 4d | 2015-03-30 A | 2015-04-02 | 40 | 25% | 72d |  |
| 51 |  | Configurar PM - VID São Paulo e Curitiba | 3d | 2015-04-07 | 2015-04-09 | 46 |  | 71d |  |
| 52 |  | Configurar PM - VE | 3d | 2015-04-06 | 2015-04-08 | 50 |  | 72d |  |
| 53 |  | Onda 1 - Entrega Fase 3 - Realização - PM | 0d | 2015-04-08 | 2015-04-08 | 52 |  | 72d |  |
| 54 | 1.3.1.5 | **Relatórios** | 5d | 2015-04-06 | 2015-04-10 |  |  | 70d |  |
| 55 |  | Configurar Relatórios - VS | 2d | 2015-04-06 | 2015-04-07 | 49 |  | 70d |  |
| 56 |  | Configurar Relatórios - VM | 1d | 2015-04-08 | 2015-04-08 | 55 |  | 70d |  |
| 57 |  | Configurar Relatórios - VID São Paulo e Curitiba | 1d | 2015-04-09 | 2015-04-09 | 56 |  | 70d |  |
| 58 |  | Configurar Relatórios - VE | 1d | 2015-04-10 | 2015-04-10 | 57 |  | 70d |  |
| 59 |  | Onda 1 - Entrega Fase 3 - Realização - Relatórios | 0d | 2015-04-10 | 2015-04-10 | 58 |  | 70d |  |
| 60 |  | Desenvolvimento Abap - Ajustes Integração | 9d | 2015-03-30 | 2015-04-10 | 34 |  | 0d |  |
| 61 | 1.3.1.7 | **Onda 1 - Termo de Aceite Fase 3 - Realização** | 0d | 2015-04-10 | 2015-04-10 |  |  | 70d |  |
| 62 |  | Onda 1 - Assinatura Fase 3 - Realização | 0d | 2015-04-10 | 2015-04-10 | 60 |  | 70d |  |
| 63 | 1.3.2 | **Gestão de Metas** | 18d | 2015-05-11 | 2015-06-03 |  |  | 5d |  |
| 64 | 1.3.2.1 | **VS** | 11d | 2015-05-11 | 2015-05-25 |  |  | 35.5d |  |
| 65 |  | Alteração de label na instância | 1d | 2015-05-11 | 2015-05-11 | 186 |  | 35.5d |  |
| 66 |  | Configurar o mapa de rota | 1d | 2015-05-12 | 2015-05-12 | 65 |  | 35.5d |  |
| 67 |  | Configurar Formulários | 1d | 2015-05-13 | 2015-05-13 | 66 |  | 35.5d |  |
| 68 |  | Configurar permissões | 1d | 2015-05-14 | 2015-05-14 | 67 |  | 35.5d |  |
| 69 |  | Definir layout para importar a Biblioteca de Metas | 1d | 2015-05-15 | 2015-05-15 | 68 |  | 35.5d |  |
| 70 |  | Definir layout para carga de empregados | 1d | 2015-05-18 | 2015-05-18 | 69 |  | 35.5d |  |

| ID | WBS | Task | Duration | Start | Finish | Predecessors | Total float |
| --- | --- | --- | --- | --- | --- | --- | --- |
| 71 |  | Passar para Votorantim informações para carga de fotos | 1d | 2015-05-19 | 2015-05-19 | 70 | 35.5d |
| 72 |  | Fazer a carga de metas | 1d | 2015-05-20 | 2015-05-20 | 71 | 35.5d |
| 73 |  | Fazer a carga de empregados | 1d | 2015-05-21 | 2015-05-21 | 72 | 35.5d |
| 74 |  | Agendar job para carga de fotos | 1d | 2015-05-22 | 2015-05-22 | 73 | 35.5d |
| 75 |  | Configurar Relatórios | 1d | 2015-05-25 | 2015-05-25 | 74 | 35.5d |
| 76 |  | Onda 2 - Entrega Fase 3 - Realização - VS | 0d | 2015-05-25 | 2015-05-25 | 75 | 42d |
| 77 | 1.3.2.2 | **VM** | 11d | 2015-05-11 | 2015-05-25 |  | 42d |
| 78 |  | Alteração de label na instância | 1d | 2015-05-11 | 2015-05-11 | 186 | 42d |
| 79 |  | Configurar o mapa de rota | 1d | 2015-05-12 | 2015-05-12 | 78 | 42d |
| 80 |  | Configurar Formulários | 1d | 2015-05-13 | 2015-05-13 | 79 | 42d |
| 81 |  | Configurar permissões | 1d | 2015-05-14 | 2015-05-14 | 80 | 42d |
| 82 |  | Definir layout para importar a Biblioteca de Metas | 1d | 2015-05-15 | 2015-05-15 | 81 | 42d |
| 83 |  | Definir layout para carga de empregados | 1d | 2015-05-18 | 2015-05-18 | 82 | 42d |
| 84 |  | Passar para Votorantim informações para carga de fotos | 1d | 2015-05-19 | 2015-05-19 | 83 | 42d |
| 85 |  | Fazer a carga de metas | 1d | 2015-05-20 | 2015-05-20 | 84 | 42d |
| 86 |  | Fazer a carga de empregados | 1d | 2015-05-21 | 2015-05-21 | 85 | 42d |
| 87 |  | Agendar job para carga de fotos | 1d | 2015-05-22 | 2015-05-22 | 86 | 42d |
| 88 |  | Configurar Relatórios | 1d | 2015-05-25 | 2015-05-25 | 87 | 42d |
| 89 |  | Onda 2 - Entrega Fase 3 - Realização - VM | 0d | 2015-05-25 | 2015-05-25 | 88 | 42d |
| 90 | 1.3.2.3 | **VID São Paulo e Curitiba** | 13d | 2015-05-18 | 2015-06-03 |  | 0d |
| 91 |  | Alteração de label na instância | 1d | 2015-05-18 | 2015-05-18 | 191 | 0d |
| 92 |  | Configurar o mapa de rota | 1d | 2015-05-19 | 2015-05-19 | 91 | 0d |
| 93 |  | Configurar Formulários | 1d | 2015-05-20 | 2015-05-20 | 92 | 0d |
| 94 |  | Configurar permissões | 1d | 2015-05-21 | 2015-05-21 | 93 | 0d |
| 95 |  | Definir layout para importar a Biblioteca de Metas | 1d | 2015-05-22 | 2015-05-22 | 94 | 0d |
| 96 |  | Definir layout para carga de empregados | 1d | 2015-05-25 | 2015-05-25 | 95 | 0d |
| 97 |  | Passar para Votorantim informações para carga de fotos | 1d | 2015-05-26 | 2015-05-26 | 96 | 0d |
| 98 |  | Fazer a carga de metas | 1d | 2015-05-27 | 2015-05-27 | 97 | 0d |
| 99 |  | Fazer a carga de empregados | 1d | 2015-05-28 | 2015-05-28 | 98 | 0d |
| 100 |  | Agendar job para carga de fotos | 2d | 2015-05-29 | 2015-06-01 | 99 | 0d |
| 101 |  | Configurar Relatórios | 2d | 2015-06-02 | 2015-06-03 | 100 | 0d |
| 102 |  | Onda 2 - Entrega Fase 3 - Realização - VID São Paulo e Curitiba | 0d | 2015-06-03 | 2015-06-03 | 101 | 35d |
| 103 | 1.3.2.4 | **VE** | 6.5d | 2015-05-26 | 2015-06-03 |  | 35.5d |
| 104 |  | Alteração de label na instância | 0.5d | 2015-05-26 | 2015-05-26 | 75 | 35.5d |
| 105 |  | Configurar o mapa de rota | 0.5d | 2015-05-26 | 2015-05-26 | 104 | 35.5d |
| 106 |  | Configurar Formulários | 1d | 2015-05-27 | 2015-05-27 | 105 | 35.5d |
| 107 |  | Configurar permissões | 0.5d | 2015-05-28 | 2015-05-28 | 106 | 35.5d |
| 108 |  | Definir layout para importar a Biblioteca de Metas | 0.5d | 2015-05-28 | 2015-05-28 | 107 | 35.5d |
| 109 |  | Definir layout para carga de empregados | 0.5d | 2015-05-29 | 2015-05-29 | 108 | 35.5d |
| 110 |  | Passar para Votorantim informações para carga de fotos | 0.5d | 2015-05-29 | 2015-05-29 | 109 | 35.5d |
| 111 |  | Fazer a carga de metas | 0.5d | 2015-06-01 | 2015-06-01 | 110 | 35.5d |
| 112 |  | Fazer a carga de empregados | 0.5d | 2015-06-01 | 2015-06-01 | 111 | 35.5d |
| 113 |  | Agendar job para carga de fotos | 0.5d | 2015-06-02 | 2015-06-02 | 112 | 35.5d |
| 114 |  | Configurar Relatórios | 1d | 2015-06-02 | 2015-06-03 | 113 | 35.5d |
| 115 |  | Onda 2 - Entrega Fase 3 - Realização - VE | 0d | 2015-06-03 | 2015-06-03 | 114 | 35.5d |
| 116 | 1.3.2.5 | **Termo de Aceite Fase 3** | 0d | 2015-06-03 | 2015-06-03 |  | 35.5d |
| 117 |  | Onda 2 - Entrega Final Fase 3 - Realização | 0d | 2015-06-03 | 2015-06-03 | 114 | 35.5d |
| 118 | 1.4 | **Fase 4 - Preparação Final** | 60d | 2015-04-13 | 2015-07-10 |  | 0d |
| 119 | 1.4.1 | **Testes Funcionais** | 40d | 2015-04-13 | 2015-06-12 |  | 0d |
| 120 | 1.4.1.1 | **Gestão de Competência** | 5d | 2015-04-13 | 2015-04-17 |  | 0d |
| 121 | 1.4.1.1.1 | **VS** | 3d | 2015-04-13 | 2015-04-15 |  | 0d |
| 122 |  | Realizar Testes Funcionais - VS | 1d | 2015-04-13 | 2015-04-13 | 60 | 0d |
| 123 |  | Ajustes Testes Funcionais - VS | 2d | 2015-04-14 | 2015-04-15 | 122 | 0d |
| 124 | 1.4.1.1.2 | **VM** | 3d | 2015-04-13 | 2015-04-15 |  | 67d |
| 125 |  | Realizar Testes Funcionais - VM | 1d | 2015-04-13 | 2015-04-13 | 60 | 67d |
| 126 |  | Ajustes Testes Funcionais - VM | 2d | 2015-04-14 | 2015-04-15 | 125 | 67d |
| 127 |  | Onda 1 - Entrega Testes Funcionais - VS e VM | 0d | 2015-04-15 | 2015-04-15 | 126 | 67d |
| 128 | 1.4.1.1.4 | **VID São Paulo e Curitiba** | 3d | 2015-04-13 | 2015-04-15 |  | 67d |
| 129 |  | Realizar Testes Funcionais - VID | 1d | 2015-04-13 | 2015-04-13 | 60 | 67d |
| 130 |  | Ajustes Testes Funcionais - VID | 2d | 2015-04-14 | 2015-04-15 | 129 | 67d |
| 131 | 1.4.1.1.5 | **VE** | 2d | 2015-04-16 | 2015-04-17 |  | 0d |
| 132 |  | Realizar Testes Funcionais - VE | 1d | 2015-04-16 | 2015-04-16 | 123 | 0d |
| 133 |  | Ajustes Testes Funcionais - VE | 1d | 2015-04-17 | 2015-04-17 | 132 | 0d |
| 134 |  | Onda 1 - Entrega Testes Funcionais - VID SP - VID CTB - VE | 0d | 2015-04-17 | 2015-04-17 | 133 | 65d |
| 135 | 1.4.1.2 | **Gestão de Metas** | 5d | 2015-06-08 | 2015-06-12 |  | 0d |
| 136 | 1.4.1.2.1 | **VS** | 3d | 2015-06-08 | 2015-06-10 |  | 0d |
| 137 |  | Realizar Testes Funcionais | 1d | 2015-06-08 | 2015-06-08 | 101 | 0d |
| 138 |  | Ajustes Testes Funcionais | 2d | 2015-06-09 | 2015-06-10 | 137 | 0d |
| 139 | 1.4.1.2.2 | **VM** | 3d | 2015-06-08 | 2015-06-10 |  | 32d |
| 140 |  | Realizar Testes Funcionais | 1d | 2015-06-08 | 2015-06-08 | 101 | 32d |

| ID | WBS | Task | Duration | Start | Finish | Predecessors | Total float |
| --- | --- | --- | --- | --- | --- | --- | --- |
| 141 |  | Ajustes Testes Funcionais | 2d | 2015-06-09 | 2015-06-10 | 140 | 32d |
| 142 |  | Onda 2 - Entrega Testes Funcionais - VS e VM | 0d | 2015-06-10 | 2015-06-10 | 141 | 32d |
| 143 | 1.4.1.2.4 | **VID São Paulo e Curitiba** | 3d | 2015-06-08 | 2015-06-10 |  | 32d |
| 144 |  | Realizar Testes Funcionais | 1d | 2015-06-08 | 2015-06-08 | 101 | 32d |
| 145 |  | Ajustes Testes Funcionais | 2d | 2015-06-09 | 2015-06-10 | 144 | 32d |
| 146 | 1.4.1.2.5 | **VE** | 2d | 2015-06-11 | 2015-06-12 |  | 0d |
| 147 |  | Realizar Testes Funcionais | 1d | 2015-06-11 | 2015-06-11 | 138 | 0d |
| 148 |  | Ajustes Testes Funcionais | 1d | 2015-06-12 | 2015-06-12 | 147 | 0d |
| 149 |  | Onda 2 - Entrega Testes Funcionais - VID SP - VID CTB - VE | 0d | 2015-06-12 | 2015-06-12 | 148 | 30d |
| 150 | 1.4.2 | **Testes Unitários** | 45d | 2015-04-22 | 2015-06-26 |  | 0d |
| 151 | 1.4.2.1 | **Gestão de Competência** | 7d | 2015-04-22 | 2015-04-30 |  | 0d |
| 152 | 1.4.2.1.1 | **VS** | 5d | 2015-04-22 | 2015-04-28 |  | 0d |
| 153 |  | Realizar Testes Unitários | 2d | 2015-04-22 | 2015-04-23 | 133 | 0d |
| 154 |  | Ajustes Testes Unitários | 3d | 2015-04-24 | 2015-04-28 | 153 | 60d |
| 155 | 1.4.2.1.2 | **VM** | 3d | 2015-04-24 | 2015-04-28 |  | 0d |
| 156 |  | Realizar Testes Unitários | 1d | 2015-04-24 | 2015-04-24 | 153 | 0d |
| 157 |  | Ajustes Testes Unitários | 2d | 2015-04-27 | 2015-04-28 | 156 | 60d |
| 158 |  | Onda 1 - Entrega Testes Unitários - VS e VM | 0d | 2015-04-28 | 2015-04-28 | 157 | 60d |
| 159 | 1.4.2.1.4 | **VID São Paulo e Curitiba** | 3d | 2015-04-27 | 2015-04-29 |  | 0d |
| 160 |  | Realizar Testes Unitários | 1d | 2015-04-27 | 2015-04-27 | 156 | 0d |
| 161 |  | Ajustes Testes Unitários | 2d | 2015-04-28 | 2015-04-29 | 160 | 59d |
| 162 | 1.4.2.1.5 | **VE** | 3d | 2015-04-28 | 2015-04-30 |  | 0d |
| 163 |  | Realizar Testes Unitários | 1d | 2015-04-28 | 2015-04-28 | 160 | 0d |
| 164 |  | Ajustes Testes Unitários | 2d | 2015-04-29 | 2015-04-30 | 163 | 0d |
| 165 |  | Onda 1 - Entrega Testes Unitários - VID SP - VID CTB - VE | 0d | 2015-04-30 | 2015-04-30 | 164 | 58d |
| 166 | 1.4.2.2 | **Gestão de Metas** | 10d | 2015-06-15 | 2015-06-26 |  | 0d |
| 167 | 1.4.2.2.1 | **VS** | 5d | 2015-06-15 | 2015-06-19 |  | 0d |
| 168 |  | Realizar Testes Unitários | 2d | 2015-06-15 | 2015-06-16 | 148 | 0d |
| 169 |  | Ajustes de Testes Unitários | 3d | 2015-06-17 | 2015-06-19 | 168 | 25d |
| 170 | 1.4.2.2.2 | **VM** | 4d | 2015-06-17 | 2015-06-22 |  | 0d |
| 171 |  | Realizar Testes Unitários | 2d | 2015-06-17 | 2015-06-18 | 168 | 0d |
| 172 |  | Ajustes de Testes Unitários | 2d | 2015-06-19 | 2015-06-22 | 171 | 24d |
| 173 |  | Onda 1 - Entrega Testes Unitários - VS e VM | 0d | 2015-06-22 | 2015-06-22 | 172 | 24d |
| 174 | 1.4.2.2.4 | **VID São Paulo e Curitiba** | 4d | 2015-06-19 | 2015-06-24 |  | 0d |
| 175 |  | Realizar Testes Unitários | 2d | 2015-06-19 | 2015-06-22 | 171 | 0d |
| 176 |  | Ajustes de Testes Unitários | 2d | 2015-06-23 | 2015-06-24 | 175 | 22d |
| 177 | 1.4.2.2.5 | **VE** | 4d | 2015-06-23 | 2015-06-26 |  | 0d |
| 178 |  | Realizar Testes Unitários | 2d | 2015-06-23 | 2015-06-24 | 175 | 0d |
| 179 |  | Ajustes de Testes Unitários | 2d | 2015-06-25 | 2015-06-26 | 178 | 0d |
| 180 |  | Onda 2 - Entrega Testes Unitários - VID SP - VID CTB - VE | 0d | 2015-06-26 | 2015-06-26 | 179 | 20d |
| 181 | 1.4.3 | **Testes Integrados** | 48d | 2015-05-04 | 2015-07-10 |  | 0d |
| 182 | 1.4.3.1 | **Gestão de Competência** | 10d | 2015-05-04 | 2015-05-15 |  | 0d |
| 183 |  | Testes Integrados VS | 5d | 2015-05-04 | 2015-05-08 | 164 | 48d |
| 184 |  | Testes Integrados VM | 5d | 2015-05-04 | 2015-05-08 | 164 | 48d |
| 185 |  | Testes Integrados VID São Paulo e Curitiba | 5d | 2015-05-04 | 2015-05-08 | 164 | 48d |
| 186 |  | Testes Integrados VE | 5d | 2015-05-04 | 2015-05-08 | 164 | 0d |
| 187 | 1.4.3.1.5 | **Ajustes Testes Integrados** | 5d | 2015-05-11 | 2015-05-15 |  | 0d |
| 188 |  | VS | 5d | 2015-05-11 | 2015-05-15 | 183 | 48d |
| 189 |  | VM | 5d | 2015-05-11 | 2015-05-15 | 184 | 48d |
| 190 |  | VID São Paulo e Curitiba | 5d | 2015-05-11 | 2015-05-15 | 185 | 48d |
| 191 |  | VE | 5d | 2015-05-11 | 2015-05-15 | 186 | 0d |
| 192 | 1.4.3.1.6 | **Termo de Aceite Fase 4** | 0d | 2015-05-15 | 2015-05-15 |  | 48d |
| 193 |  | Onda 1 - Assinatura Fase 4 - Preparação Final | 0d | 2015-05-15 | 2015-05-15 | 191 | 48d |
| 194 | 1.4.3.2 | **Gestão de Metas** | 10d | 2015-06-29 | 2015-07-10 |  | 0d |
| 195 |  | Testes Integrados VS | 5d | 2015-06-29 | 2015-07-03 | 179 | 10d |
| 196 |  | Testes Integrados VM | 5d | 2015-06-29 | 2015-07-03 | 179 | 10d |
| 197 |  | Testes Integrados VID São Paulo e Curitiba | 5d | 2015-06-29 | 2015-07-03 | 179 | 10d |
| 198 |  | Testes Integrados VE | 5d | 2015-06-29 | 2015-07-03 | 179 | 0d |
| 199 | 1.4.3.2.5 | **Ajustes Testes Integrados** | 5d | 2015-07-06 | 2015-07-10 |  | 0d |
| 200 |  | VS | 5d | 2015-07-06 | 2015-07-10 | 195 | 10d |
| 201 |  | VM | 5d | 2015-07-06 | 2015-07-10 | 196 | 10d |
| 202 |  | VID São Paulo e Curitiba | 5d | 2015-07-06 | 2015-07-10 | 197 | 10d |
| 203 |  | VE | 5d | 2015-07-06 | 2015-07-10 | 198 | 0d |
| 204 | 1.4.3.2.6 | **Termo de Aceite Fase 4** | 0d | 2015-07-10 | 2015-07-10 |  | 10d |
| 205 |  | Onda 2 - Assinatura Fase 4 - Preparação Final - VS | 0d | 2015-07-10 | 2015-07-10 | 203 | 10d |
| 206 | 1.5 | **Fase 5 - Go Live e Operação Assistida** | 48d | 2015-05-18 | 2015-07-24 |  | 0d |
| 207 | 1.5.1 | **Go Live - Onda 1 - Gestão de Competência** | 13d | 2015-05-18 | 2015-06-03 |  | 35d |
| 208 |  | Treinamento | 5d | 2015-05-18 | 2015-05-22 | 191 | 35d |
| 209 |  | Cutover | 5d | 2015-05-25 | 2015-05-29 | 208 | 35d |
| 210 |  | Onda 1 - Go Live | 0d | 2015-05-29 | 2015-05-29 | 209 | 38d |

| ID | WBS | Task | Duration | Start | Finish | Predecessors | Total float | Constraint |
| --- | --- | --- | --- | --- | --- | --- | --- | --- |
| 211 |  | Operação Assistida | 3d | 2015-06-01 | 2015-06-03 | 209 | 35d |  |
| 212 | 1.5.2 | **Go Live - Onda 2 - Gestão de Metas** | 10d | 2015-07-13 | 2015-07-24 |  | 0d |  |
| 213 |  | Treinamento | 5d | 2015-07-13 | 2015-07-17 | 203 | 5d |  |
| 214 |  | Cutover | 5d | 2015-07-13 | 2015-07-17 | 203 | 0d |  |
| 215 |  | Onda 2 - Go Live | 0d | 2015-07-17 | 2015-07-17 | 214 | 5d |  |
| 216 |  | Operação Assistida | 5d | 2015-07-20 | 2015-07-24 | 214 | 0d |  |
| 217 | 2 | **(1) Projeto Metas e Competência - VS** | 104d | 2015-02-09 | 2015-07-24 |  |  |  |
| 218 | 2.1 | **Fase 1 - Preparação do Projeto** | 10d | 2015-02-09 | 2015-02-20 |  | 84d |  |
| 219 |  | Confirmação e Mobilização de Equipe | 8d | 2015-02-09 | 2015-02-18 |  | 84d |  |
| 220 |  | Reunião Pré Kick-off | 1d | 2015-02-19 | 2015-02-19 | 219 | 94d |  |
| 221 |  | Kick-off | 1d | 2015-02-20 | 2015-02-20 | 220 | 94d |  |
| 222 |  | Identificação dos Usuários | 2d | 2015-02-19 | 2015-02-20 | 219 | 84d |  |
| 223 | 2.1.5 | **Termo de Aceite Fase 1** | 0d | 2015-02-20 | 2015-02-20 |  | 94d |  |
| 224 |  | Assiantura Fase 1 - Preparação do Projeto | 0d | 2015-02-20 | 2015-02-20 | 222 | 94d |  |
| 225 | 2.2 | **Fase 2 - Business Blueprint** | 10d | 2015-02-23 | 2015-03-06 |  | 84d |  |
| 226 | 2.2.1 | **Levantamento Gestão de Metas** | 5d | 2015-02-23 | 2015-02-27 |  | 84d |  |
| 227 |  | Mapeamento dos Processos | 3d | 2015-02-23 | 2015-02-25 | 222 | 84d |  |
| 228 |  | Elaboração dos BBPs | 1d | 2015-02-26 | 2015-02-26 | 227 | 89d |  |
| 229 |  | Ajustes / Aprovação dos BBPs | 1d | 2015-02-27 | 2015-02-27 | 228 | 89d |  |
| 230 | 2.2.2 | **Levantamento Gestão de Competência** | 7d | 2015-02-26 | 2015-03-06 |  | 84d |  |
| 231 |  | Mapeamento dos Processos | 4d | 2015-02-26 | 2015-03-03 | 227 | 84d |  |
| 232 | 2.2.2.2 | **Elaboração dos BBPs** | 1d | 2015-03-04 | 2015-03-04 |  | 84d |  |
| 233 |  | EP | 0.5d | 2015-03-04 | 2015-03-04 | 231 | 86d |  |
| 234 |  | PDI | 0.5d | 2015-03-04 | 2015-03-04 | 233 | 86d |  |
| 235 |  | Competência | 0.5d | 2015-03-04 | 2015-03-04 | 231 | 84d |  |
| 236 |  | Sucessão | 0.5d | 2015-03-04 | 2015-03-04 | 235 | 84d |  |
| 237 | 2.2.2.3 | **Ajustes / Aprovação dos BBPs** | 2d | 2015-03-05 | 2015-03-06 |  | 84d |  |
| 238 |  | EP | 1d | 2015-03-05 | 2015-03-05 | 236 | 84d |  |
| 239 |  | PDI | 1d | 2015-03-06 | 2015-03-06 | 238 | 84d |  |
| 240 |  | Competência | 1d | 2015-03-05 | 2015-03-05 | 236 | 84d |  |
| 241 |  | Sucessão | 1d | 2015-03-06 | 2015-03-06 | 240 | 84d |  |
| 242 | 2.2.2.4 | **Termo de Aceite Fase 2** | 0d | 2015-03-06 | 2015-03-06 |  | 84d |  |
| 243 |  | Assinatura Fase 2 - Business Blueprint | 0d | 2015-03-06 | 2015-03-06 | 241 | 84d |  |
| 244 | 2.3 | **Fase 3 - Realização** | 42d | 2015-03-23 | 2015-05-25 |  | 42d |  |
| 245 | 2.3.1 | **Gestão de Competência VS** | 14d | 2015-03-23 | 2015-04-10 |  | 67d |  |
| 246 |  | Configurar EP (Employee Profile) - VS | 5d | 2015-03-23 | 2015-03-27 |  | 67d | start no earlier than 2015-03-23 |
| 247 |  | Configurar PDI (Palno de Desenvolvimento Individual) - VS | 5d | 2015-03-23 | 2015-03-27 |  | 67d | start no earlier than 2015-03-23 |
| 248 |  | Configurar Sucessão - VS | 5d | 2015-03-30 | 2015-04-06 | 246, 247 | 74d |  |
| 249 |  | Configurar PM - VS | 7d | 2015-03-30 | 2015-04-08 | 246, 247 | 67d |  |
| 250 | 2.3.1.5 | **Configurar Relatórios** | 2d | 2015-04-09 | 2015-04-10 |  | 67d |  |
| 251 |  | Cópia dos Relatórios da VC - VS | 0.5d | 2015-04-09 | 2015-04-09 | 249 | 67d |  |
| 252 |  | Escala - Descrição e Pontuação - VS | 0.5d | 2015-04-09 | 2015-04-09 | 251 | 67d |  |
| 253 |  | Comparativo entre Desempenho na Função e Crenças - VS | 1d | 2015-04-10 | 2015-04-10 | 252 | 67d |  |
| 254 |  | Desenvolvimento Abap - Ajustes Integração | 9d | 2015-03-30 | 2015-04-10 | 246, 247 | 70d |  |
| 255 | 2.3.1.7 | **Termo de Aceite Fase 3 - Realização** | 0d | 2015-04-10 | 2015-04-10 |  | 70d |  |
| 256 |  | Onda 1 - Assinatura Fase 3 - Realização - VS | 0d | 2015-04-10 | 2015-04-10 | 254 | 70d |  |
| 257 | 2.3.2 | **Gestão de Metas VS** | 11d | 2015-05-11 | 2015-05-25 |  | 42d |  |
| 258 |  | Alteração de label na instância | 1d | 2015-05-11 | 2015-05-11 | 292 | 42d |  |
| 259 |  | Configurar o mapa de rota | 1d | 2015-05-12 | 2015-05-12 | 258 | 42d |  |
| 260 |  | Configurar Formulários | 1d | 2015-05-13 | 2015-05-13 | 259 | 42d |  |
| 261 |  | Configurar permissões | 1d | 2015-05-14 | 2015-05-14 | 260 | 42d |  |
| 262 |  | Definir layout para importar a Biblioteca de Metas | 1d | 2015-05-15 | 2015-05-15 | 261 | 42d |  |
| 263 |  | Definir layout para carga de empregados | 1d | 2015-05-18 | 2015-05-18 | 262 | 42d |  |
| 264 |  | Passar para Votorantim informações para carga de fotos | 1d | 2015-05-19 | 2015-05-19 | 263 | 42d |  |
| 265 |  | Fazer a carga de metas | 1d | 2015-05-20 | 2015-05-20 | 264 | 42d |  |
| 266 |  | Fazer a carga de empregados | 1d | 2015-05-21 | 2015-05-21 | 265 | 42d |  |
| 267 |  | Agendar job para carga de fotos | 1d | 2015-05-22 | 2015-05-22 | 266 | 42d |  |
| 268 |  | Configurar Relatórios | 1d | 2015-05-25 | 2015-05-25 | 267 | 42d |  |
| 269 | 2.3.2.12 | **Onda 2 - Termo de Aceite - Realização** | 0d | 2015-05-25 | 2015-05-25 |  | 42d |  |
| 270 |  | Onda 2 - Entrega Fase 3 - Realização - VS | 0d | 2015-05-25 | 2015-05-25 | 268 | 42d |  |
| 271 | 2.4 | **Fase 4 - Preparação Final** | 60d | 2015-04-13 | 2015-07-10 |  | 5d |  |
| 272 | 2.4.1 | **Testes Funcionais** | 38d | 2015-04-13 | 2015-06-10 |  | 32d |  |
| 273 | 2.4.1.1 | **Gestão de Competência VS** | 3d | 2015-04-13 | 2015-04-15 |  | 67d |  |
| 274 |  | Realizar Testes Funcionais - VS | 1d | 2015-04-13 | 2015-04-13 | 253 | 67d |  |
| 275 |  | Ajustes Testes Funcionais - VS | 2d | 2015-04-14 | 2015-04-15 | 274 | 67d |  |
| 276 |  | Onda 1 - Entrega Testes Funcionais - VS | 0d | 2015-04-15 | 2015-04-15 | 275 | 67d |  |
| 277 | 2.4.1.2 | **Gestão de Metas VS** | 3d | 2015-06-08 | 2015-06-10 |  | 32d |  |
| 278 |  | Realizar Testes Funcionais | 1d | 2015-06-08 | 2015-06-08 |  | 32d | start no earlier than 2015-06-08 |
| 279 |  | Ajustes Testes Funcionais | 2d | 2015-06-09 | 2015-06-10 | 278 | 32d |  |
| 280 |  | Onda 2 - Entrega Testes Funcionais - VS | 0d | 2015-06-10 | 2015-06-10 | 279 | 32d |  |

| ID | WBS | Task | Duration | Start | Finish | Predecessors | Total float | Constraint |
| --- | --- | --- | --- | --- | --- | --- | --- | --- |
| 281 | 2.4.2 | **Testes Unitários** | 40d | 2015-04-22 | 2015-06-19 |  | 0d |  |
| 282 | 2.4.2.1 | **Gestão de Competência VS** | 5d | 2015-04-22 | 2015-04-28 |  | 0d |  |
| 283 |  | Realizar Testes Unitários - VS | 2d | 2015-04-22 | 2015-04-23 |  |  | start no earlier than 2015-04-22 |
| 284 |  | Ajustes Testes Unitários - VS | 3d | 2015-04-24 | 2015-04-28 | 283 | 60d |  |
| 285 |  | Onda 1 - Entrega Testes Unitários - VS | 0d | 2015-04-28 | 2015-04-28 | 284 | 60d |  |
| 286 | 2.4.2.2 | **Gestão de Metas VS** | 5d | 2015-06-15 | 2015-06-19 |  | 25d |  |
| 287 |  | Realizar Testes Unitários - VS | 2d | 2015-06-15 | 2015-06-16 |  | 25d | start no earlier than 2015-06-15 |
| 288 |  | Ajustes de Testes Unitários - VS | 3d | 2015-06-17 | 2015-06-19 | 287 | 25d |  |
| 289 |  | Onda 2 - Entrega Testes Unitários - VS | 0d | 2015-06-19 | 2015-06-19 | 288 | 25d |  |
| 290 | 2.4.3 | **Testes Integrados** | 48d | 2015-05-04 | 2015-07-10 |  | 10d |  |
| 291 | 2.4.3.1 | **Gestão de Competência VS** | 10d | 2015-05-04 | 2015-05-15 |  | 35d |  |
| 292 |  | Testes Integrados VS | 5d | 2015-05-04 | 2015-05-08 |  | 35d | start no earlier than 2015-05-04 |
| 293 |  | Ajustes Testes Integrados VS | 5d | 2015-05-11 | 2015-05-15 | 292 | 35d |  |
| 294 | 2.4.3.1.3 | **Onda 1 - Termo de Aceite Fase 4** | 0d | 2015-05-15 | 2015-05-15 |  | 48d |  |
| 295 |  | Onda 1 - Assinatura Fase 4 - Preparação Final - VS | 0d | 2015-05-15 | 2015-05-15 | 293 | 48d |  |
| 296 | 2.4.3.2 | **Gestão de Metas VS** | 10d | 2015-06-29 | 2015-07-10 |  | 0d |  |
| 297 |  | Testes Integrados VS | 5d | 2015-06-29 | 2015-07-03 |  | 0d | start no earlier than 2015-06-29 |
| 298 |  | Ajustes Testes Integrados VS | 5d | 2015-07-06 | 2015-07-10 | 297 | 0d |  |
| 299 | 2.4.3.2.3 | **Onda 2 - Termo de Aceite Fase 4** | 0d | 2015-07-10 | 2015-07-10 |  | 10d |  |
| 300 |  | Onda 2 - Assinatura Fase 4 - Preparação Final - VS | 0d | 2015-07-10 | 2015-07-10 | 298 | 10d |  |
| 301 | 2.5 | **Fase 5 - Go Live e Operacao Assistida** | 48d | 2015-05-18 | 2015-07-24 |  | 0d |  |
| 302 | 2.5.1 | **Go Live - Onda 1 - Gestão de Competência** | 13d | 2015-05-18 | 2015-06-03 |  | 35d |  |
| 303 |  | Treinamento | 5d | 2015-05-18 | 2015-05-22 | 293 | 35d |  |
| 304 |  | Cutover | 5d | 2015-05-25 | 2015-05-29 | 303 | 35d |  |
| 305 |  | Onda 1 - Go Live | 0d | 2015-05-29 | 2015-05-29 | 304 | 38d |  |
| 306 |  | Operação Assistida | 3d | 2015-06-01 | 2015-06-03 | 304 | 35d |  |
| 307 | 2.5.2 | **Go Live - Onda 2 - Gestão de Metas** | 10d | 2015-07-13 | 2015-07-24 |  | 0d |  |
| 308 |  | Treinamento | 5d | 2015-07-13 | 2015-07-17 | 298 | 5d |  |
| 309 |  | Cutover | 5d | 2015-07-13 | 2015-07-17 | 298 | 0d |  |
| 310 |  | Onda 2 - Go Live | 0d | 2015-07-17 | 2015-07-17 | 309 | 5d |  |
| 311 |  | Operação Assistida | 5d | 2015-07-20 | 2015-07-24 | 309 | 0d |  |
| 312 | 3 | **(2) Projeto Metas e Competência - VM** | 104d | 2015-02-09 | 2015-07-24 |  |  |  |
| 313 | 3.1 | **Fase 1 - Preparação do Projeto** | 10d | 2015-02-09 | 2015-02-20 |  | 84d |  |
| 314 |  | Confirmação e Mobilização de Equipe | 8d | 2015-02-09 | 2015-02-18 |  | 84d |  |
| 315 |  | Reunião Pré Kick-off | 1d | 2015-02-19 | 2015-02-19 | 314 | 94d |  |
| 316 |  | Kick-Off | 1d | 2015-02-20 | 2015-02-20 | 315 | 94d |  |
| 317 |  | Identificação dos Usuários | 2d | 2015-02-19 | 2015-02-20 | 314 | 84d |  |
| 318 | 3.1.5 | **Termo de Aceite Fase 1** | 0d | 2015-02-20 | 2015-02-20 |  | 94d |  |
| 319 |  | Assinatura Fase 1 - Preparação do Projeto | 0d | 2015-02-20 | 2015-02-20 | 317 | 94d |  |
| 320 | 3.2 | **Fase 2 - Business Blueprint** | 10d | 2015-02-23 | 2015-03-06 |  | 84d |  |
| 321 | 3.2.1 | **Levantamento Gestão de Metas** | 5d | 2015-02-23 | 2015-02-27 |  | 84d |  |
| 322 |  | Mapeamento dos Processos | 3d | 2015-02-23 | 2015-02-25 | 317 | 84d |  |
| 323 |  | Elaboração dos BBPs | 1d | 2015-02-26 | 2015-02-26 | 322 | 89d |  |
| 324 |  | Ajustes / Aprovação dos BBPs | 1d | 2015-02-27 | 2015-02-27 | 323 | 89d |  |
| 325 | 3.2.2 | **Levantamento Gestão de Competência** | 7d | 2015-02-26 | 2015-03-06 |  | 84d |  |
| 326 |  | Mapeamento dos Processos | 4d | 2015-02-26 | 2015-03-03 | 322 | 84d |  |
| 327 | 3.2.2.2 | **Elaboração dos BBPs** | 1d | 2015-03-04 | 2015-03-04 |  | 84d |  |
| 328 |  | EP | 0.5d | 2015-03-04 | 2015-03-04 | 326 | 86d |  |
| 329 |  | PDI | 0.5d | 2015-03-04 | 2015-03-04 | 328 | 86d |  |
| 330 |  | Competência | 0.5d | 2015-03-04 | 2015-03-04 | 326 | 84d |  |
| 331 |  | Sucessão | 0.5d | 2015-03-04 | 2015-03-04 | 330 | 84d |  |
| 332 | 3.2.2.3 | **Ajustes / Aprovação dos BBPs** | 2d | 2015-03-05 | 2015-03-06 |  | 84d |  |
| 333 |  | EP | 1d | 2015-03-05 | 2015-03-05 | 331 | 84d |  |
| 334 |  | PDI | 1d | 2015-03-06 | 2015-03-06 | 333 | 84d |  |
| 335 |  | Competência | 1d | 2015-03-05 | 2015-03-05 | 331 | 84d |  |
| 336 |  | Sucessão | 1d | 2015-03-06 | 2015-03-06 | 335 | 84d |  |
| 337 | 3.2.2.4 | **Termo de Aceite Fase 2** | 0d | 2015-03-06 | 2015-03-06 |  | 84d |  |
| 338 |  | Assinatura Fase 2 - Business Blueprint | 0d | 2015-03-06 | 2015-03-06 | 336 | 84d |  |
| 339 | 3.3 | **Fase 3 - Realização** | 42d | 2015-03-23 | 2015-05-25 |  |  |  |
| 340 | 3.3.1 | **Gestão de Competência VM** | 14d | 2015-03-23 | 2015-04-10 |  | 28d |  |
| 341 |  | Configurar EP (Employee Profile) - VM | 5d | 2015-03-23 | 2015-03-27 |  | 28d | start no earlier than 2015-03-23 |
| 342 |  | Configurar PDI (Palno de Desenvolvimento Individual) - VM | 5d | 2015-03-23 | 2015-03-27 |  | 28d | start no earlier than 2015-03-23 |
| 343 |  | Configurar Sucessão - VM | 5d | 2015-03-30 | 2015-04-06 | 341, 342 | 32d |  |
| 344 |  | Configurar PM - VM | 7d | 2015-03-30 | 2015-04-08 | 341, 342 | 28d |  |
| 345 | 3.3.1.5 | **Configurar Relatórios** | 2d | 2015-04-09 | 2015-04-10 |  | 28d |  |
| 346 |  | Cópia dos Relatórios da VC - VM | 0.5d | 2015-04-09 | 2015-04-09 | 344 | 28d |  |
| 347 |  | Escala - Descrição e Pontuação - VM | 0.5d | 2015-04-09 | 2015-04-09 | 346 | 28d |  |
| 348 |  | Comparativo entre Desempenho na Função e Crenças - VM | 1d | 2015-04-10 | 2015-04-10 | 347 | 28d |  |
| 349 |  | Desenvolvimento Abap - Ajustes Integração | 9d | 2015-03-30 | 2015-04-10 | 341, 342 | 28d |  |
| 350 | 3.3.1.7 | **Onda 1 - Termo de Aceite Fase 3 - Realização** | 0d | 2015-04-10 | 2015-04-10 |  | 28d |  |

| ID | WBS | Task | Duration | Start | Finish | Predecessors | Total float | Constraint |
| --- | --- | --- | --- | --- | --- | --- | --- | --- |
| 351 |  | Onda 1 - Assinatura Fase 3 - Realização - VM | 0d | 2015-04-10 | 2015-04-10 | 349 | 28d |  |
| 352 | 3.3.2 | **Gestão de Metas VM** | 11d | 2015-05-11 | 2015-05-25 |  | 0d |  |
| 353 |  | Alteração de label na instância | 1d | 2015-05-11 | 2015-05-11 | 387 | 0d |  |
| 354 |  | Configurar o mapa de rota | 1d | 2015-05-12 | 2015-05-12 | 353 | 0d |  |
| 355 |  | Configurar Formulários | 1d | 2015-05-13 | 2015-05-13 | 354 | 0d |  |
| 356 |  | Configurar permissões | 1d | 2015-05-14 | 2015-05-14 | 355 | 0d |  |
| 357 |  | Definir layout para importar a Biblioteca de Metas | 1d | 2015-05-15 | 2015-05-15 | 356 | 0d |  |
| 358 |  | Definir layout para carga de empregados | 1d | 2015-05-18 | 2015-05-18 | 357 | 0d |  |
| 359 |  | Passar para Votorantim informações para carga de fotos | 1d | 2015-05-19 | 2015-05-19 | 358 | 0d |  |
| 360 |  | Fazer a carga de metas | 1d | 2015-05-20 | 2015-05-20 | 359 | 0d |  |
| 361 |  | Fazer a carga de empregados | 1d | 2015-05-21 | 2015-05-21 | 360 | 0d |  |
| 362 |  | Agendar job para carga de fotos | 1d | 2015-05-22 | 2015-05-22 | 361 | 0d |  |
| 363 |  | Configurar Relatórios | 1d | 2015-05-25 | 2015-05-25 | 362 | 0d |  |
| 364 | 3.3.2.12 | **Onda 2 - Termo de Aceite - Realização** | 0d | 2015-05-25 | 2015-05-25 |  | 0d |  |
| 365 |  | Onda 2 - Assinatura Fase 3 - Realização - VM | 0d | 2015-05-25 | 2015-05-25 | 363 | 0d |  |
| 366 | 3.4 | **Fase 4 - Preparação Final** | 60d | 2015-04-13 | 2015-07-10 |  | 10d |  |
| 367 | 3.4.1 | **Testes Funcionais** | 38d | 2015-04-13 | 2015-06-10 |  | 32d |  |
| 368 | 3.4.1.1 | **Gestão de Competência VM** | 3d | 2015-04-13 | 2015-04-15 |  | 67d |  |
| 369 |  | Realizar Testes Funcionais - VM | 1d | 2015-04-13 | 2015-04-13 | 348 | 67d |  |
| 370 |  | Ajustes Testes Funcionais - VM | 2d | 2015-04-14 | 2015-04-15 | 369 | 67d |  |
| 371 |  | Onda 1 - Entrega Testes Funcionais - VM | 0d | 2015-04-15 | 2015-04-15 | 370 | 67d |  |
| 372 | 3.4.1.2 | **Gestão de Metas VM** | 3d | 2015-06-08 | 2015-06-10 |  | 32d |  |
| 373 |  | Realizar Testes Funcionais | 1d | 2015-06-08 | 2015-06-08 |  | 32d | start no earlier than 2015-06-08 |
| 374 |  | Ajustes Testes Funcionais | 2d | 2015-06-09 | 2015-06-10 | 373 | 32d |  |
| 375 |  | Onda 2 - Entrega Testes Funcionais - VM | 0d | 2015-06-10 | 2015-06-10 | 374 | 32d |  |
| 376 | 3.4.2 | **Testes Unitários** | 39d | 2015-04-24 | 2015-06-22 |  | 24d |  |
| 377 | 3.4.2.1 | **Gestão de Competência VM** | 3d | 2015-04-24 | 2015-04-28 |  | 60d |  |
| 378 |  | Realizar Testes Unitários - VM | 1d | 2015-04-24 | 2015-04-24 |  | 60d | start no earlier than 2015-04-24 |
| 379 |  | Ajustes Testes Unitários - VM | 2d | 2015-04-27 | 2015-04-28 | 378 | 60d |  |
| 380 |  | Onda 1 - Entrega Testes Unitários - VM | 0d | 2015-04-28 | 2015-04-28 | 379 | 60d |  |
| 381 | 3.4.2.2 | **Gestão de Metas VM** | 4d | 2015-06-17 | 2015-06-22 |  | 24d |  |
| 382 |  | Realizar Testes Unitários - VM | 2d | 2015-06-17 | 2015-06-18 |  | 24d | start no earlier than 2015-06-17 |
| 383 |  | Ajustes de Testes Unitários - VM | 2d | 2015-06-19 | 2015-06-22 | 382 | 24d |  |
| 384 |  | Onda 2 - Entrega Testes Unitários - VM | 0d | 2015-06-22 | 2015-06-22 | 383 | 24d |  |
| 385 | 3.4.3 | **Testes Integrados** | 48d | 2015-05-04 | 2015-07-10 |  | 0d |  |
| 386 | 3.4.3.1 | **Gestão de Competência VM** | 10d | 2015-05-04 | 2015-05-15 |  | 0d |  |
| 387 |  | Testes Integrados VM | 5d | 2015-05-04 | 2015-05-08 |  | 0d | start no earlier than 2015-05-04 |
| 388 |  | Ajustes Testes Integrados VM | 5d | 2015-05-11 | 2015-05-15 | 387 | 35d |  |
| 389 | 3.4.3.1.3 | **Onda 1 - Termo de Aceite Fase 4** | 0d | 2015-05-15 | 2015-05-15 |  | 48d |  |
| 390 |  | Onda 1 - Assinatura Fase 4 - Preparação Final - VM | 0d | 2015-05-15 | 2015-05-15 | 388 | 48d |  |
| 391 | 3.4.3.2 | **Gestão de Metas VM** | 10d | 2015-06-29 | 2015-07-10 |  | 0d |  |
| 392 |  | Testes Integrados VM | 5d | 2015-06-29 | 2015-07-03 |  | 0d | start no earlier than 2015-06-29 |
| 393 |  | Ajustes Testes Integrados VM | 5d | 2015-07-06 | 2015-07-10 | 392 | 0d |  |
| 394 | 3.4.3.2.3 | **Termo de Aceite Fase 4** | 0d | 2015-07-10 | 2015-07-10 |  | 10d |  |
| 395 |  | Onda 2 - Assinatura Fase 4 - Preparação Final - VM | 0d | 2015-07-10 | 2015-07-10 | 393 | 10d |  |
| 396 | 3.5 | **Fase 5 - Go Live e Operacao Assistida** | 48d | 2015-05-18 | 2015-07-24 |  | 0d |  |
| 397 | 3.5.1 | **Go Live - Onda 1 - Gestão de Competência** | 13d | 2015-05-18 | 2015-06-03 |  | 35d |  |
| 398 |  | Treinamento | 5d | 2015-05-18 | 2015-05-22 | 388 | 35d |  |
| 399 |  | Cutover | 5d | 2015-05-25 | 2015-05-29 | 398 | 35d |  |
| 400 |  | Onda 1 - Go Live | 0d | 2015-05-29 | 2015-05-29 | 399 | 38d |  |
| 401 |  | Operação Assistida | 3d | 2015-06-01 | 2015-06-03 | 399 | 35d |  |
| 402 | 3.5.2 | **Go Live - Onda 2 - Gestão de Metas** | 10d | 2015-07-13 | 2015-07-24 |  | 0d |  |
| 403 |  | Treinamento | 5d | 2015-07-13 | 2015-07-17 | 393 | 5d |  |
| 404 |  | Cutover | 5d | 2015-07-13 | 2015-07-17 | 393 | -103d |  |
| 405 |  | Onda 2 - Go Live | 0d | 2015-07-17 | 2015-07-17 | 404 | 5d |  |
| 406 |  | Operação Assistida | 5d | 2015-07-20 | 2015-07-24 | 404 | -103d |  |
| 407 | 4 | **(3) Projeto Metas e Competência - VID São Paulo e Curitiba** | 104d | 2015-02-09 | 2015-07-24 |  |  |  |
| 408 | 4.1 | **Fase 1 - Preparação do Projeto** | 10d | 2015-02-09 | 2015-02-20 |  | 84d |  |
| 409 |  | Confirmação e Mobilização de Equipe | 8d | 2015-02-09 | 2015-02-18 |  | 84d |  |
| 410 |  | Reunião Pré Kick-off | 1d | 2015-02-19 | 2015-02-19 | 409 | 94d |  |
| 411 |  | Kick-Off | 1d | 2015-02-20 | 2015-02-20 | 410 | 94d |  |
| 412 |  | Identificação dos Usuários | 2d | 2015-02-19 | 2015-02-20 | 409 | 84d |  |
| 413 | 4.1.5 | **Termo de Aceite Fase 1** | 0d | 2015-02-20 | 2015-02-20 |  | 94d |  |
| 414 |  | Assinatura Fase 1 - Preparação do Projeto | 0d | 2015-02-20 | 2015-02-20 | 412 | 94d |  |
| 415 | 4.2 | **Fase 2 - Business Blueprint** | 10d | 2015-02-23 | 2015-03-06 |  | 84d |  |
| 416 | 4.2.1 | **Levantamento Gestão de Metas** | 5d | 2015-02-23 | 2015-02-27 |  | 84d |  |
| 417 |  | Mapeamento dos Processos | 3d | 2015-02-23 | 2015-02-25 | 412 | 84d |  |
| 418 |  | Elaboração dos BBPs | 1d | 2015-02-26 | 2015-02-26 | 417 | 89d |  |
| 419 |  | Ajustes / Aprovação dos BBPs | 1d | 2015-02-27 | 2015-02-27 | 418 | 89d |  |
| 420 | 4.2.2 | **Levantamento Gestão de Competência** | 7d | 2015-02-26 | 2015-03-06 |  | 84d |  |

| ID | WBS | Task | Duration | Start | Finish | Predecessors | Total float | Constraint |
| --- | --- | --- | --- | --- | --- | --- | --- | --- |
| 421 |  | Mapeamento dos Processos | 4d | 2015-02-26 | 2015-03-03 | 417 | 84d |  |
| 422 | 4.2.2.2 | **Elaboração dos BBPs** | 1d | 2015-03-04 | 2015-03-04 |  | 84d |  |
| 423 |  | EP | 0.5d | 2015-03-04 | 2015-03-04 | 421 | 86d |  |
| 424 |  | PDI | 0.5d | 2015-03-04 | 2015-03-04 | 423 | 86d |  |
| 425 |  | Competência | 0.5d | 2015-03-04 | 2015-03-04 | 421 | 84d |  |
| 426 |  | Sucessão | 0.5d | 2015-03-04 | 2015-03-04 | 425 | 84d |  |
| 427 | 4.2.2.3 | **Ajustes / Aprovação dos BBPs** | 2d | 2015-03-05 | 2015-03-06 |  | 84d |  |
| 428 |  | EP | 1d | 2015-03-05 | 2015-03-05 | 426 | 84d |  |
| 429 |  | PDI | 1d | 2015-03-06 | 2015-03-06 | 428 | 84d |  |
| 430 |  | Competência | 1d | 2015-03-05 | 2015-03-05 | 426 | 84d |  |
| 431 |  | Sucessão | 1d | 2015-03-06 | 2015-03-06 | 430 | 84d |  |
| 432 | 4.2.2.4 | **Termo de Aceite Fase 2** | 0d | 2015-03-06 | 2015-03-06 |  | 84d |  |
| 433 |  | Assinatura Fase 2 - Business Blueprint | 0d | 2015-03-06 | 2015-03-06 | 431 | 84d |  |
| 434 | 4.3 | **Fase 3 - Realização** | 49d | 2015-03-23 | 2015-06-03 |  |  |  |
| 435 | 4.3.1 | **Gestão de Competência VID** | 14d | 2015-03-23 | 2015-04-10 |  | 35d |  |
| 436 |  | Configurar EP (Employee Profile) - VID | 5d | 2015-03-23 | 2015-03-27 |  | 35d | start no earlier than 2015-03-23 |
| 437 |  | Configurar PDI (Palno de Desenvolvimento Individual) - VID | 5d | 2015-03-23 | 2015-03-27 |  | 35d | start no earlier than 2015-03-23 |
| 438 |  | Configurar Sucessão - VID | 5d | 2015-03-30 | 2015-04-06 | 436, 437 | 39d |  |
| 439 |  | Configurar PM - VID | 7d | 2015-03-30 | 2015-04-08 | 436, 437 | 35d |  |
| 440 | 4.3.1.5 | **Configurar Relatórios** | 2d | 2015-04-09 | 2015-04-10 |  | 35d |  |
| 441 |  | Cópia dos Relatórios da VC - VID | 0.5d | 2015-04-09 | 2015-04-09 | 439 | 35d |  |
| 442 |  | Escala - Descrição e Pontuação - VID | 0.5d | 2015-04-09 | 2015-04-09 | 441 | 35d |  |
| 443 |  | Comparativo entre Desempenho na Função e Crenças - VID | 1d | 2015-04-10 | 2015-04-10 | 442 | 35d |  |
| 444 |  | Desenvolvimento Abap - Ajustes Integração | 9d | 2015-03-30 | 2015-04-10 | 436, 437 | 35d |  |
| 445 | 4.3.1.7 | **Termo de Aceite Fase 3 - Realização** | 0d | 2015-04-10 | 2015-04-10 |  | 35d |  |
| 446 |  | Onda 1 - Assinatura Fase 3 - Realização - VID | 0d | 2015-04-10 | 2015-04-10 | 444 | 35d |  |
| 447 | 4.3.2 | **Gestão de Metas VID** | 13d | 2015-05-18 | 2015-06-03 |  | 0d |  |
| 448 |  | Alteração de label na instância | 1d | 2015-05-18 | 2015-05-18 | 483 | 0d |  |
| 449 |  | Configurar o mapa de rota | 1d | 2015-05-19 | 2015-05-19 | 448 | 0d |  |
| 450 |  | Configurar Formulários | 1d | 2015-05-20 | 2015-05-20 | 449 | 0d |  |
| 451 |  | Configurar permissões | 1d | 2015-05-21 | 2015-05-21 | 450 | 0d |  |
| 452 |  | Definir layout para importar a Biblioteca de Metas | 1d | 2015-05-22 | 2015-05-22 | 451 | 0d |  |
| 453 |  | Definir layout para carga de empregados | 1d | 2015-05-25 | 2015-05-25 | 452 | 0d |  |
| 454 |  | Passar para Votorantim informações para carga de fotos | 1d | 2015-05-26 | 2015-05-26 | 453 | 0d |  |
| 455 |  | Fazer a carga de metas | 1d | 2015-05-27 | 2015-05-27 | 454 | 0d |  |
| 456 |  | Fazer a carga de empregados | 1d | 2015-05-28 | 2015-05-28 | 455 | 0d |  |
| 457 |  | Agendar job para carga de fotos | 2d | 2015-05-29 | 2015-06-01 | 456 | 0d |  |
| 458 |  | Configurar Relatórios | 2d | 2015-06-02 | 2015-06-03 | 457 | 0d |  |
| 459 | 4.3.2.12 | **Onda 2 - Termo de Aceite - Realização** | 0d | 2015-06-03 | 2015-06-03 |  | 0d |  |
| 460 |  | Onda 2 - Assinatura Fase 3 - Realização - VID | 0d | 2015-06-03 | 2015-06-03 | 458 | 0d |  |
| 461 | 4.4 | **Fase 4 - Preparação Final** | 60d | 2015-04-13 | 2015-07-10 |  | 8d |  |
| 462 | 4.4.1 | **Testes Funcionais** | 38d | 2015-04-13 | 2015-06-10 |  | 32d |  |
| 463 | 4.4.1.1 | **Gestão de Competência VID** | 3d | 2015-04-13 | 2015-04-15 |  | 67d |  |
| 464 |  | Realizar Testes Funcionais - VID | 1d | 2015-04-13 | 2015-04-13 | 444 | 67d |  |
| 465 |  | Ajustes Testes Funcionais - VID | 2d | 2015-04-14 | 2015-04-15 | 464 | 67d |  |
| 466 |  | Onda 1 - Entrega Testes Funcionais - VID | 0d | 2015-04-15 | 2015-04-15 | 465 | 67d |  |
| 467 | 4.4.1.2 | **Gestão de Metas VID** | 3d | 2015-06-08 | 2015-06-10 |  | 32d |  |
| 468 |  | Realizar Testes Funcionais - VID | 1d | 2015-06-08 | 2015-06-08 | 458 | 32d |  |
| 469 |  | Ajustes Testes Funcionais - VID | 2d | 2015-06-09 | 2015-06-10 | 468 | 32d |  |
| 470 |  | Onda 2 - Entrega Testes Funcionais - VID | 0d | 2015-06-10 | 2015-06-10 | 469 | 32d |  |
| 471 | 4.4.2 | **Testes Unitários** | 40d | 2015-04-27 | 2015-06-24 |  |  |  |
| 472 | 4.4.2.1 | **Gestão de Competência VID** | 3d | 2015-04-27 | 2015-04-29 |  | 37d |  |
| 473 |  | Realizar Testes Unitários - VID | 1d | 2015-04-27 | 2015-04-27 |  | 37d | start no earlier than 2015-04-27 |
| 474 |  | Ajustes Testes Unitários - VID | 2d | 2015-04-28 | 2015-04-29 | 473 | 37d |  |
| 475 |  | Onda 1 - Entrega Testes Unitários - VID | 0d | 2015-04-29 | 2015-04-29 | 474 | 37d |  |
| 476 | 4.4.2.2 | **Gestão de Metas VID** | 40d? | 2015-04-27 | 2015-06-24 |  | 0d |  |
| 477 |  | Realizar Testes Unitários - VID | 2d | 2015-06-19 | 2015-06-22 |  | 0d | start no earlier than 2015-06-19 |
| 478 |  | Ajustes de Testes Unitários - VID | 2d | 2015-06-23 | 2015-06-24 | 477 | 0d |  |
| 479 |  | Onda 2 - Entrega Testes Unitários - VID | 1d? | 2015-04-27 | 2015-04-27 |  | 39d |  |
| 480 | 4.4.3 | **Testes Integrados** | 48d | 2015-05-04 | 2015-07-10 |  | 0d |  |
| 481 | 4.4.3.1 | **Gestão de Competência VID** | 10d | 2015-05-04 | 2015-05-15 |  | 0d |  |
| 482 |  | Testes Integrados VID | 5d | 2015-05-04 | 2015-05-08 |  | -71d | start no earlier than 2015-05-04 |
| 483 |  | Ajustes Testes Integrados VID | 5d | 2015-05-11 | 2015-05-15 | 482 | -71d |  |
| 484 | 4.4.3.1.3 | **Onda 1 - Termo de Aceite Fase 4** | 0d | 2015-05-15 | 2015-05-15 |  | 48d |  |
| 485 |  | Onda 1 - Assinatura Fase 4 - Preparação Final - VID | 0d | 2015-05-15 | 2015-05-15 | 483 | 48d |  |
| 486 | 4.4.3.2 | **Gestão de Metas VID** | 10d | 2015-06-29 | 2015-07-10 |  | 0d |  |
| 487 |  | Testes Integrados VID | 5d | 2015-06-29 | 2015-07-03 |  | 0d | start no earlier than 2015-06-29 |
| 488 |  | Ajustes Testes Integrados VID | 5d | 2015-07-06 | 2015-07-10 | 487 | 0d |  |
| 489 | 4.4.3.2.3 | **Termo de Aceite Fase 4** | 0d | 2015-07-10 | 2015-07-10 |  | 10d |  |
| 490 |  | Onda 2 - Assinatura Fase 4 - Preparação Final - VID | 0d | 2015-07-10 | 2015-07-10 | 488 | 10d |  |

| ID | WBS | Task | Duration | Start | Finish | Predecessors | Total float | Constraint |
| --- | --- | --- | --- | --- | --- | --- | --- | --- |
| 491 | 4.5 | **Fase 5 - Go Live e Operacao Assistida** | 48d | 2015-05-18 | 2015-07-24 |  | 0d |  |
| 492 | 4.5.1 | **Go Live - Onda 1 - Gestão de Competência** | 48d | 2015-05-18 | 2015-07-24 |  |  |  |
| 493 |  | Treinamento | 5d | 2015-05-18 | 2015-05-22 | 483 | 35d |  |
| 494 |  | Cutover | 5d | 2015-05-25 | 2015-05-29 | 493 | 35d |  |
| 495 |  | Onda 1 - Go Live | 0d | 2015-05-29 | 2015-05-29 | 494 | 38d |  |
| 496 |  | Operação Assistida | 3d | 2015-06-01 | 2015-06-03 | 494 | 35d |  |
| 497 | 4.5.1.5 | **Go Live - Onda 2 - Gestão de Metas** | 10d | 2015-07-13 | 2015-07-24 |  | 0d |  |
| 498 |  | Treinamento | 5d | 2015-07-13 | 2015-07-17 | 488 | 5d |  |
| 499 |  | Cutover | 5d | 2015-07-13 | 2015-07-17 | 488 | 0d |  |
| 500 |  | Onda 2 - Go Live | 0d | 2015-07-17 | 2015-07-17 | 499 | 5d |  |
| 501 |  | Operação Assistida | 5d | 2015-07-20 | 2015-07-24 | 499 | 0d |  |
| 502 | 5 | **(4) Projeto Metas e Competência - VE** | 104d | 2015-02-09 | 2015-07-24 |  |  |  |
| 503 | 5.1 | **Fase 1 - Preparação do Projeto** | 10d | 2015-02-09 | 2015-02-20 |  |  |  |
| 504 |  | Confirmação e Mobilização de Equipe | 8d | 2015-02-09 | 2015-02-18 |  | 0d | start no earlier than 2015-02-09 |
| 505 |  | Reunião Pré Kick-off | 1d | 2015-02-19 | 2015-02-19 | 504 | 0d |  |
| 506 |  | Kick-Off | 1d | 2015-02-20 | 2015-02-20 | 505 | 0d |  |
| 507 |  | Identificação dos Usuários | 2d | 2015-02-19 | 2015-02-20 | 504 | 0d |  |
| 508 | 5.1.5 | **Termo de Aceite Fase 1** | 0d | 2015-02-20 | 2015-02-20 |  | 0d |  |
| 509 |  | Assinatura Fase 1 - Preparação do Projeto | 0d | 2015-02-20 | 2015-02-20 | 507 | 0d |  |
| 510 | 5.2 | **Fase 2 - Business Blueprint** | 10d | 2015-02-23 | 2015-03-06 |  |  |  |
| 511 | 5.2.1 | **Levantamento Gestão de Metas** | 5d | 2015-02-23 | 2015-02-27 |  | 0d |  |
| 512 |  | Mapeamento dos Processos | 3d | 2015-02-23 | 2015-02-25 | 507 | 0d |  |
| 513 |  | Elaboração dos BBPs | 1d | 2015-02-26 | 2015-02-26 | 512 | 5d |  |
| 514 |  | Ajustes / Aprovação dos BBPs | 1d | 2015-02-27 | 2015-02-27 | 513 | 5d |  |
| 515 | 5.2.2 | **Levantamento Gestão de Competência** | 7d | 2015-02-26 | 2015-03-06 |  | 0d |  |
| 516 |  | Mapeamento dos Processos | 4d | 2015-02-26 | 2015-03-03 | 512 | 0d |  |
| 517 | 5.2.2.2 | **Elaboração dos BBPs** | 1d | 2015-03-04 | 2015-03-04 |  | 0d |  |
| 518 |  | EP | 0.5d | 2015-03-04 | 2015-03-04 | 516 | 2d |  |
| 519 |  | PDI | 0.5d | 2015-03-04 | 2015-03-04 | 518 | 2d |  |
| 520 |  | Competência | 0.5d | 2015-03-04 | 2015-03-04 | 516 | 0d |  |
| 521 |  | Sucessão | 0.5d | 2015-03-04 | 2015-03-04 | 520 | 0d |  |
| 522 | 5.2.2.3 | **Ajustes / Aprovação dos BBPs** | 2d | 2015-03-05 | 2015-03-06 |  | 0d |  |
| 523 |  | EP | 1d | 2015-03-05 | 2015-03-05 | 521 | 0d |  |
| 524 |  | PDI | 1d | 2015-03-06 | 2015-03-06 | 523 | 0d |  |
| 525 |  | Competência | 1d | 2015-03-05 | 2015-03-05 | 521 | 0d |  |
| 526 |  | Sucessão | 1d | 2015-03-06 | 2015-03-06 | 525 | 0d |  |
| 527 | 5.2.2.4 | **Termo de Aceite Fase 2** | 0d | 2015-03-06 | 2015-03-06 |  | 0d |  |
| 528 |  | Assinatura Fase 2 - Business Blueprint | 0d | 2015-03-06 | 2015-03-06 | 526 | 0d |  |
| 529 | 5.3 | **Faze 3 - Realização** | 48.5d | 2015-03-23 | 2015-06-03 |  | 35.5d |  |
| 530 | 5.3.1 | **Gestão de Competência VE** | 14d | 2015-03-23 | 2015-04-10 |  | 70d |  |
| 531 |  | Configurar EP (Employee Profile) - VE | 5d | 2015-03-23 | 2015-03-27 |  | 70d | start no earlier than 2015-03-23 |
| 532 |  | Configurar PDI (Palno de Desenvolvimento Individual) - VE | 5d | 2015-03-23 | 2015-03-27 |  | 70d | start no earlier than 2015-03-23 |
| 533 |  | Configurar Sucessão - VE | 5d | 2015-03-30 | 2015-04-06 | 531, 532 | 74d |  |
| 534 |  | Configurar PM - VE | 7d | 2015-03-30 | 2015-04-08 | 531, 532 | 70d |  |
| 535 | 5.3.1.5 | **Configurar Relatórios** | 2d | 2015-04-09 | 2015-04-10 |  | 70d |  |
| 536 |  | Cópia dos Relatórios da VC - VE | 0.5d | 2015-04-09 | 2015-04-09 | 534 | 70d |  |
| 537 |  | Escala - Descrição e Pontuação - VE | 0.5d | 2015-04-09 | 2015-04-09 | 536 | 70d |  |
| 538 |  | Comparativo entre Desempenho na Função e Crenças - VE | 1d | 2015-04-10 | 2015-04-10 | 537 | 70d |  |
| 539 | 5.3.1.6 | **Termo de Aceite Fase 3 - Realização** | 0d | 2015-04-10 | 2015-04-10 |  | 70d |  |
| 540 |  | Onda 1 - Assinatura Fase 3 - Realização - VE | 0d | 2015-04-10 | 2015-04-10 | 538 | 70d |  |
| 541 | 5.3.2 | **Gestão de Metas VE** | 6.5d | 2015-05-26 | 2015-06-03 |  | 35.5d |  |
| 542 |  | Alteração de label na instância | 0.5d | 2015-05-26 | 2015-05-26 | 576 | 35.5d | start no earlier than 2015-05-26 |
| 543 |  | Configurar o mapa de rota | 0.5d | 2015-05-26 | 2015-05-26 | 542 | 35.5d |  |
| 544 |  | Configurar Formulários | 1d | 2015-05-27 | 2015-05-27 | 543 | 35.5d |  |
| 545 |  | Configurar permissões | 0.5d | 2015-05-28 | 2015-05-28 | 544 | 35.5d |  |
| 546 |  | Definir layout para importar a Biblioteca de Metas | 0.5d | 2015-05-28 | 2015-05-28 | 545 | 35.5d |  |
| 547 |  | Definir layout para carga de empregados | 0.5d | 2015-05-29 | 2015-05-29 | 546 | 35.5d |  |
| 548 |  | Passar para Votorantim informações para carga de fotos | 0.5d | 2015-05-29 | 2015-05-29 | 547 | 35.5d |  |
| 549 |  | Fazer a carga de metas | 0.5d | 2015-06-01 | 2015-06-01 | 548 | 35.5d |  |
| 550 |  | Fazer a carga de empregados | 0.5d | 2015-06-01 | 2015-06-01 | 549 | 35.5d |  |
| 551 |  | Agendar job para carga de fotos | 0.5d | 2015-06-02 | 2015-06-02 | 550 | 35.5d |  |
| 552 |  | Configurar Relatórios | 1d | 2015-06-02 | 2015-06-03 | 551 | 35.5d |  |
| 553 | 5.3.2.12 | **Onda 2 - Termo de Aceite - Realização** | 0d | 2015-06-03 | 2015-06-03 |  | 35.5d |  |
| 554 |  | Onda 2 - Assinatura Fase 3 - Realização - VE | 0d | 2015-06-03 | 2015-06-03 | 552 | 35.5d |  |
| 555 | 5.4 | **Fase 4 - Preparação Final** | 57d | 2015-04-16 | 2015-07-10 |  | 10d |  |
| 556 | 5.4.1 | **Testes Funcionais** | 37d | 2015-04-16 | 2015-06-12 |  | 30d |  |
| 557 | 5.4.1.1 | **Gestão de Competência VE** | 2d | 2015-04-16 | 2015-04-17 |  | 65d |  |
| 558 |  | Realizar Testes Funcionais - VE | 1d | 2015-04-16 | 2015-04-16 |  | 65d | start no earlier than 2015-04-16 |
| 559 |  | Ajustes Testes Funcionais - VE | 1d | 2015-04-17 | 2015-04-17 | 558 | 65d |  |
| 560 |  | Onda 1 - Entrega Testes Funcionais - VE | 0d | 2015-04-17 | 2015-04-17 | 559 | 65d |  |

| ID | WBS | Task | Duration | Start | Finish | Predecessors | Total float | Constraint |
| --- | --- | --- | --- | --- | --- | --- | --- | --- |
| 561 | 5.4.1.2 | **Gestão de Metas VE** | 2d | 2015-06-11 | 2015-06-12 |  | 30d |  |
| 562 |  | Realizar Testes Funcionais - VE | 1d | 2015-06-11 | 2015-06-11 |  | 30d | start no earlier than 2015-06-11 |
| 563 |  | Ajustes Testes Funcionais - VE | 1d | 2015-06-12 | 2015-06-12 | 562 | 30d |  |
| 564 |  | Onda 2 - Entrega Testes Funcionais - VE | 0d | 2015-06-12 | 2015-06-12 | 563 | 30d |  |
| 565 | 5.4.2 | **Testes Unitários** | 41d | 2015-04-28 | 2015-06-26 |  | 20d |  |
| 566 | 5.4.2.1 | **Gestão de Competência VE** | 3d | 2015-04-28 | 2015-04-30 |  | 35d |  |
| 567 |  | Realizar Testes Unitários - VE | 1d | 2015-04-28 | 2015-04-28 |  | 35d | start no earlier than 2015-04-28 |
| 568 |  | Ajustes Testes Unitários - VE | 2d | 2015-04-29 | 2015-04-30 | 567 | 35d |  |
| 569 |  | Onda 1 - Entrega Testes Unitários - VE | 0d | 2015-04-30 | 2015-04-30 | 568 | 58d |  |
| 570 | 5.4.2.2 | **Gestão de Metas VE** | 4d | 2015-06-23 | 2015-06-26 |  | 0d |  |
| 571 |  | Realizar Testes Unitários - VE | 2d | 2015-06-23 | 2015-06-24 |  | 0d | start no earlier than 2015-06-23 |
| 572 |  | Ajustes de Testes Unitários - VE | 2d | 2015-06-25 | 2015-06-26 | 571 | 0d |  |
| 573 |  | Onda 2 - Entrega Testes Unitários - VE | 0d | 2015-06-26 | 2015-06-26 | 572 | 20d |  |
| 574 | 5.4.3 | **Testes Integrados** | 48d | 2015-05-04 | 2015-07-10 |  | 10d |  |
| 575 | 5.4.3.1 | **Gestão de Competência VE** | 10d | 2015-05-04 | 2015-05-15 |  | 35d |  |
| 576 |  | Testes Integrados VE | 5d | 2015-05-04 | 2015-05-08 | 568 | 35d |  |
| 577 |  | Ajustes Testes Integrados VE | 5d | 2015-05-11 | 2015-05-15 | 576 | 35d |  |
| 578 | 5.4.3.1.3 | **Onda 1 - Termo de Aceite Fase 4** | 0d | 2015-05-15 | 2015-05-15 |  | 48d |  |
| 579 |  | Onda 1 - Assinatura Fase 4 - Preparação Final - VE | 0d | 2015-05-15 | 2015-05-15 | 577 | 48d |  |
| 580 | 5.4.3.2 | **Gestão de Metas VE** | 10d | 2015-06-29 | 2015-07-10 |  | 0d |  |
| 581 |  | Testes Integrados VE | 5d | 2015-06-29 | 2015-07-03 | 572 | 0d |  |
| 582 |  | Ajustes Testes Integrados VE | 5d | 2015-07-06 | 2015-07-10 | 581 | 0d |  |
| 583 | 5.4.3.2.3 | **Termo de Aceite Fase 4** | 0d | 2015-07-10 | 2015-07-10 |  | 10d |  |
| 584 |  | Onda 2 - Assinatura Fase 4 - Preparação Final - VE | 0d | 2015-07-10 | 2015-07-10 | 582 | 10d |  |
| 585 | 5.5 | **Fase 5 - Go Live e Operacao Assistida** | 48d | 2015-05-18 | 2015-07-24 |  | 0d |  |
| 586 | 5.5.1 | **Go Live - Onda 1 - Gestão de Competência** | 13d | 2015-05-18 | 2015-06-03 |  | 35d |  |
| 587 |  | Treinamento | 5d | 2015-05-18 | 2015-05-22 | 577 | 35d |  |
| 588 |  | Cutover | 5d | 2015-05-25 | 2015-05-29 | 587 | 35d |  |
| 589 |  | Onda 1 - Go Live | 0d | 2015-05-29 | 2015-05-29 | 588 | 38d |  |
| 590 |  | Operação Assistida | 3d | 2015-06-01 | 2015-06-03 | 588 | 35d |  |
| 591 | 5.5.2 | **Go Live - Onda 2 - Gestão de Metas** | 10d | 2015-07-13 | 2015-07-24 |  | 0d |  |
| 592 |  | Treinamento | 5d | 2015-07-13 | 2015-07-17 | 582 | 5d |  |
| 593 |  | Cutover | 5d | 2015-07-13 | 2015-07-17 | 582 | 0d |  |
| 594 |  | Onda 2 - Go Live | 0d | 2015-07-17 | 2015-07-17 | 593 | 5d |  |
| 595 |  | Operação Assistida | 5d | 2015-07-20 | 2015-07-24 | 593 | 0d |  |

## Version 2 (data date 2015-03-30, saved 2015-03-30, file 1_Projeto Votorantim_Gestão de Metas e Competências_v2.mpp)

Note of the change: Inicial

Last finish stays 2015-07-24. Complete tasks 17 → 67.

Added:

| ID | Task | Duration | Start | Finish | Predecessors |
| --- | --- | --- | --- | --- | --- |
| 208 | **Treinamento** | 27d | 2015-04-13 | 2015-05-22 |  |
| 209 | Elaborar Material de Treinamento | 12d | 2015-04-13 | 2015-04-30 | 60 |
| 210 | Validação/Ajustes Material de Treinamento | 10d | 2015-05-04 | 2015-05-15 | 209 |
| 211 | Treinamento - Realização | 5d | 2015-05-18 | 2015-05-22 | 191 |
| 216 | **Treinamento** | 30.5d | 2015-06-03 | 2015-07-17 |  |
| 217 | Elaborar Material de Treinamento | 15d | 2015-06-03 | 2015-06-26 | 114 |
| 218 | Validação/Ajustes Material de Treinamento | 10d | 2015-06-26 | 2015-07-10 | 217 |
| 219 | Treinamento - Realização | 5d | 2015-07-13 | 2015-07-17 | 203 |
| 302 | Gestão de Metas VS | 1d? | 2015-02-09 | 2015-02-09 |  |

Removed: 296 Gestão de Metas VS; 297 Testes Integrados VS; 298 Ajustes Testes Integrados VS; 299 Onda 2 - Termo de Aceite Fase 4; 300 Onda 2 - Assinatura Fase 4 - Preparação Final - VS; 587 Treinamento; 592 Treinamento

Changed:

| ID | Task | Start | Finish | Duration | Complete | Total float | Predecessors | Other |
| --- | --- | --- | --- | --- | --- | --- | --- | --- |
| 1 | **Projeto Metas e Competência SuccessFactors** |  |  | 104d → 114d | 14% → 12% |  |  |  |
| 2 | **Fase 1 - Preparação do Projeto** |  |  |  |  |  |  | baseline start 2012-09-18 → none; baseline finish 2012-10-03 → none |
| 9 | **Fase 2 - Business Blueprint** |  |  |  | 92% → 93% | none → 94d |  |  |
| 10 | **Levantamento Gestão de Metas** |  | 2015-02-27 A |  | 95% → 100% | 5d → none |  |  |
| 11 | Mapeamento dos Processos |  |  |  |  |  |  | resources HRST 1; HRST 2; Rodney → none |
| 13 | Ajustes / Aprovação dos BBPs |  | 2015-02-27 A |  | 75% → 100% | 5d → none |  |  |
| 14 | **Levantamento Gestão de Competência** |  | 2015-03-23 → 2015-03-06 (-17d) | 8d → 7d |  | 0d → 94d |  |  |
| 15 | Mapeamento dos Processos |  |  |  |  |  |  | resources HRST 1; HRST 2; Rodney → none |
| 19 | Competência |  |  |  |  |  |  | constraint start no earlier than 2015-03-05 → none |
| 21 | **Ajustes / Aprovação dos BBPs** | 2015-03-06 → 2015-03-05 A (-1d) | 2015-03-23 → 2015-03-06 (-17d) |  |  | none → 94d |  |  |
| 24 | Competência |  |  |  |  | none → 0.75d |  | constraint start no earlier than 2015-03-05 → none |
| 26 | **Termo de Aceite Fase 2** | 2015-03-06 A |  |  |  | 0d → 94d |  |  |
| 27 | Assinatura Fase 2 - Business Blueprint | 2015-03-06 A |  |  | 0% → 50% | 0d → 94d |  |  |
| 28 | **Fase 3 - Realização** |  |  |  | 14% → 13% |  |  | baseline start 2012-11-06 → none; baseline finish 2013-08-26 → none |
| 29 | **Gestão de Competência** |  |  |  | 28% → 26% |  |  |  |
| 35 | Onda 1 - Entrega Fase 3 - Realização - EP | 2015-03-27 A |  |  | 0% → 75% |  |  |  |
| 37 | Configurar PDI (Palno de Desenvolvimento Individual) - VS |  |  |  |  |  |  | constraint start no earlier than 2015-02-23 → start no earlier than 2015-03-23 |
| 38 | Configurar PDI (Palno de Desenvolvimento Individual) - VE |  |  |  |  |  | 31 → 37 |  |
| 39 | Configurar PDI (Palno de Desenvolvimento Individual) - VM |  |  |  |  |  | 32 → 38 |  |
| 40 | Configurar PDI (Palno de Desenvolvimento Individual) - VID São Paulo e Curitiba |  |  |  |  |  | 33 → 39 |  |
| 43 | Configurar Sucessão - VS |  |  |  |  | none → 0.25d |  | constraint start no earlier than 2015-03-30 → none |
| 48 | **PM** |  |  |  | 14% → 7% |  |  |  |
| 49 | Configurar PM - VS |  |  |  | 25% → 13% | none → 70d |  | constraint start no earlier than 2015-03-30 → none |
| 50 | Configurar PM - VM |  |  |  | 25% → 13% |  |  |  |
| 89 | Onda 2 - Entrega Fase 3 - Realização - VM |  |  |  |  |  |  | resources none → HRST 3 |
| 118 | **Fase 4 - Preparação Final** |  |  |  |  |  |  | baseline start 2013-07-30 → none; baseline finish 2013-08-23 → none |
| 153 | Realizar Testes Unitários |  |  |  |  |  |  | resources HRST 1; Juraci Silva → none |
| 154 | Ajustes Testes Unitários |  |  |  |  |  |  | resources HRST 1 → none |
| 156 | Realizar Testes Unitários |  |  |  |  |  |  | resources HRST 2; Juraci Silva → none |
| 157 | Ajustes Testes Unitários |  |  |  |  |  |  | resources HRST 2 → none |
| 160 | Realizar Testes Unitários |  |  |  |  |  |  | resources HRST 3; Juraci Silva → none |
| 161 | Ajustes Testes Unitários |  |  |  |  |  |  | resources HRST 3 → none |
| 163 | Realizar Testes Unitários |  |  |  |  |  |  | resources HRST 2; Juraci Silva → none |
| 164 | Ajustes Testes Unitários |  |  |  |  |  |  | resources HRST 2 → none |
| 168 | Realizar Testes Unitários |  |  |  |  |  |  | resources Juraci Silva → none |
| 171 | Realizar Testes Unitários |  |  |  |  |  |  | resources Juraci Silva → none |
| 175 | Realizar Testes Unitários |  |  |  |  |  |  | resources Juraci Silva → none |
| 178 | Realizar Testes Unitários |  |  |  |  |  |  | resources Juraci Silva → none |
| 183 | Testes Integrados VS |  |  |  |  |  |  | resources VS; Rodney → none |
| 184 | Testes Integrados VM |  |  |  |  |  |  | resources VM; Rodney → none |
| 185 | Testes Integrados VID São Paulo e Curitiba |  |  |  |  |  |  | resources Rodney; VID Curitiba; VID São Paulo → none |
| 186 | Testes Integrados VE |  |  |  |  |  |  | resources Rodney; VE → none |
| 188 | VS |  |  |  |  |  |  | resources HRST 1 → none |
| 189 | VM |  |  |  |  |  |  | resources HRST 1 → none |
| 190 | VID São Paulo e Curitiba |  |  |  |  |  |  | resources HRST 1 → none |
| 191 | VE |  |  |  |  |  |  | resources HRST 1 → none |
| 206 | **Fase 5 - Go Live e Operação Assistida** | 2015-05-18 → 2015-04-13 (-35d) |  | 48d → 70d |  |  |  | baseline start 2013-08-26 → none; baseline finish 2013-09-26 → none |
| 207 | **Go Live - Onda 1 - Gestão de Competência** | 2015-05-18 → 2015-04-13 (-35d) |  | 13d → 35d |  |  |  |  |
| 212 | Cutover |  |  |  |  |  | 305 → 211 |  |
| 215 | **Go Live - Onda 2 - Gestão de Metas** | 2015-07-13 → 2015-06-03 (-40d) |  | 10d → 35.5d |  |  |  |  |
| 223 | **(1) Projeto Metas e Competência - VS** | 2015-02-09 A | 2015-07-24 → 2015-03-06 (-140d) | 104d → 20d? | 0% → 37% | none → 94d |  | baseline start 2012-09-18 → none; baseline finish 2013-10-30 → none |
| 224 | **Fase 1 - Preparação do Projeto** | 2015-02-09 A | 2015-02-20 A | 10d → 10d? | 0% → 100% | 84d → none |  | baseline start 2012-09-18 → none; baseline finish 2012-10-15 → none |
| 225 | Confirmação e Mobilização de Equipe | 2015-02-09 A | 2015-02-18 A |  | 0% → 100% | 84d → none |  |  |
| 226 | Reunião Pré Kick-off | 2015-02-19 A | 2015-02-19 A |  | 0% → 100% | 94d → none |  |  |
| 227 | Kick-off | 2015-02-20 A | 2015-02-20 A |  | 0% → 100% | 94d → none |  |  |
| 228 | Identificação dos Usuários | 2015-02-19 A | 2015-02-20 A |  | 0% → 100% | 84d → none |  |  |
| 229 | **Termo de Aceite Fase 1** | 2015-02-20 → 2015-02-09 A (-11d) | 2015-02-20 → 2015-02-09 A (-11d) | 0d → 1d? | 0% → 100% | 94d → none |  |  |
| 230 | Assiantura Fase 1 - Preparação do Projeto | 2015-02-20 → 2015-02-09 A (-11d) | 2015-02-20 → 2015-02-09 A (-11d) | 0d → 1d? | 0% → 100% | 94d → none | 228 → none |  |
| 231 | **Fase 2 - Business Blueprint** | 2015-02-23 A |  |  | 0% → 92% | 84d → 94d |  | baseline start 2012-09-28 → none; baseline finish 2013-05-03 → none |
| 232 | **Levantamento Gestão de Metas** | 2015-02-23 A |  |  | 0% → 95% | 84d → 99d |  |  |
| 233 | Mapeamento dos Processos | 2015-02-23 A | 2015-02-25 A |  | 0% → 100% | 84d → none |  |  |
| 234 | Elaboração dos BBPs | 2015-02-26 A | 2015-02-26 A |  | 0% → 100% | 89d → none |  |  |
| 235 | Ajustes / Aprovação dos BBPs | 2015-02-27 A |  |  | 0% → 75% | 89d → 99d |  |  |
| 236 | **Levantamento Gestão de Competência** | 2015-02-26 A |  |  | 0% → 90% | 84d → 94d |  |  |
| 237 | Mapeamento dos Processos | 2015-02-26 A | 2015-03-03 A |  | 0% → 100% | 84d → none |  |  |
| 238 | **Elaboração dos BBPs** | 2015-03-04 A | 2015-03-04 A |  | 0% → 100% | 84d → none |  |  |
| 239 | EP | 2015-03-04 A | 2015-03-04 A |  | 0% → 100% | 86d → none |  | resources HRST 1 → none |
| 240 | PDI | 2015-03-04 A | 2015-03-04 A |  | 0% → 100% | 86d → none |  | resources HRST 1 → none |
| 241 | Competência | 2015-03-04 A | 2015-03-04 A |  | 0% → 100% | 84d → none |  | resources HRST 2 → none |
| 242 | Sucessão | 2015-03-04 A | 2015-03-04 A |  | 0% → 100% | 84d → none |  | resources HRST 2 → none |

| ID | Task | Start | Finish | Duration | Complete | Total float | Predecessors | Other |
| --- | --- | --- | --- | --- | --- | --- | --- | --- |
| 243 | **Ajustes / Aprovação dos BBPs** | 2015-03-05 A |  |  | 0% → 75% | 84d → 94d |  |  |
| 244 | EP | 2015-03-05 A |  |  | 0% → 75% | 84d → 0.75d |  | resources HRST 1 → none |
| 245 | PDI | 2015-03-06 A |  |  | 0% → 75% | 84d → 94d |  | resources HRST 1 → none |
| 246 | Competência | 2015-03-05 A |  |  | 0% → 75% | 84d → 0.75d |  | resources HRST 2 → none |
| 247 | Sucessão | 2015-03-06 A |  |  | 0% → 75% | 84d → 94d |  | resources HRST 2 → none |
| 250 | **Fase 3 - Realização** | 2015-03-23 → 2015-02-09 (-42d) | 2015-05-25 → 2015-02-09 (-105d) | 42d → 1d? |  | 42d → 113d |  | baseline start 2013-06-21 → none; baseline finish 2013-10-01 → none |
| 251 | **Gestão de Competência VS** | 2015-03-23 → 2015-02-09 (-42d) | 2015-04-10 → 2015-02-09 (-60d) | 14d → 1d? |  | 67d → 113d |  |  |
| 252 | Configurar EP (Employee Profile) - VS | 2015-03-23 → 2015-02-09 (-42d) | 2015-03-27 → 2015-02-09 (-46d) | 5d → 1d? |  | 67d → 113d |  | constraint start no earlier than 2015-03-23 → none |
| 253 | Configurar PDI (Palno de Desenvolvimento Individual) - VS | 2015-03-23 → 2015-02-09 (-42d) | 2015-03-27 → 2015-02-09 (-46d) | 5d → 1d? |  | 67d → 113d |  | constraint start no earlier than 2015-03-23 → none |
| 254 | Configurar Sucessão - VS | 2015-03-30 → 2015-02-09 (-49d) | 2015-04-06 → 2015-02-09 (-56d) | 5d → 1d? |  | 74d → 113d | 252, 253 → none |  |
| 255 | Configurar PM - VS | 2015-03-30 → 2015-02-09 (-49d) | 2015-04-08 → 2015-02-09 (-58d) | 7d → 1d? |  | 67d → 113d | 252, 253 → none |  |
| 256 | **Configurar Relatórios** | 2015-04-09 → 2015-02-09 (-59d) | 2015-04-10 → 2015-02-09 (-60d) | 2d → 1d? |  | 67d → 113d |  |  |
| 257 | Cópia dos Relatórios da VC - VS | 2015-04-09 → 2015-02-09 (-59d) | 2015-04-09 → 2015-02-09 (-59d) | 0.5d → 1d? |  | 67d → 113d | 255 → none |  |
| 258 | Escala - Descrição e Pontuação - VS | 2015-04-09 → 2015-02-09 (-59d) | 2015-04-09 → 2015-02-09 (-59d) | 0.5d → 1d? |  | 67d → 113d | 257 → none |  |
| 259 | Comparativo entre Desempenho na Função e Crenças - VS | 2015-04-10 → 2015-02-09 (-60d) | 2015-04-10 → 2015-02-09 (-60d) | 1d → 1d? |  | 67d → 113d | 258 → none |  |
| 260 | Desenvolvimento Abap - Ajustes Integração | 2015-03-30 → 2015-02-09 (-49d) | 2015-04-10 → 2015-02-09 (-60d) | 9d → 1d? |  | 70d → 113d | 252, 253 → none |  |
| 261 | **Termo de Aceite Fase 3 - Realização** | 2015-04-10 → 2015-02-09 (-60d) | 2015-04-10 → 2015-02-09 (-60d) | 0d → 1d? |  | 70d → 113d |  |  |
| 262 | Onda 1 - Assinatura Fase 3 - Realização - VS | 2015-04-10 → 2015-02-09 (-60d) | 2015-04-10 → 2015-02-09 (-60d) | 0d → 1d? |  | 70d → 113d | 260 → none |  |
| 263 | **Gestão de Metas VS** | 2015-05-11 → 2015-02-09 (-91d) | 2015-05-25 → 2015-02-09 (-105d) | 11d → 1d? |  | 42d → 113d |  |  |
| 264 | Alteração de label na instância | 2015-05-11 → 2015-02-09 (-91d) | 2015-05-11 → 2015-02-09 (-91d) | 1d → 1d? |  | 42d → 113d | 298 → none | resources HRST 2 → none |
| 265 | Configurar o mapa de rota | 2015-05-12 → 2015-02-09 (-92d) | 2015-05-12 → 2015-02-09 (-92d) | 1d → 1d? |  | 42d → 113d | 264 → none | resources HRST 2 → none |
| 266 | Configurar Formulários | 2015-05-13 → 2015-02-09 (-93d) | 2015-05-13 → 2015-02-09 (-93d) | 1d → 1d? |  | 42d → 113d | 265 → none | resources HRST 2 → none |
| 267 | Configurar permissões | 2015-05-14 → 2015-02-09 (-94d) | 2015-05-14 → 2015-02-09 (-94d) | 1d → 1d? |  | 42d → 113d | 266 → none | resources HRST 2 → none |
| 268 | Definir layout para importar a Biblioteca de Metas | 2015-05-15 → 2015-02-09 (-95d) | 2015-05-15 → 2015-02-09 (-95d) | 1d → 1d? |  | 42d → 113d | 267 → none | resources HRST 2 → none |
| 269 | Definir layout para carga de empregados | 2015-05-18 → 2015-02-09 (-98d) | 2015-05-18 → 2015-02-09 (-98d) | 1d → 1d? |  | 42d → 113d | 268 → none | resources HRST 2 → none |
| 270 | Passar para Votorantim informações para carga de fotos | 2015-05-19 → 2015-02-09 (-99d) | 2015-05-19 → 2015-02-09 (-99d) | 1d → 1d? |  | 42d → 113d | 269 → none | resources HRST 2 → none |
| 271 | Fazer a carga de metas | 2015-05-20 → 2015-02-09 (-100d) | 2015-05-20 → 2015-02-09 (-100d) | 1d → 1d? |  | 42d → 113d | 270 → none | resources HRST 2 → none |
| 272 | Fazer a carga de empregados | 2015-05-21 → 2015-02-09 (-101d) | 2015-05-21 → 2015-02-09 (-101d) | 1d → 1d? |  | 42d → 113d | 271 → none | resources HRST 2 → none |
| 273 | Agendar job para carga de fotos | 2015-05-22 → 2015-02-09 (-102d) | 2015-05-22 → 2015-02-09 (-102d) | 1d → 1d? |  | 42d → 113d | 272 → none | resources HRST 2 → none |
| 274 | Configurar Relatórios | 2015-05-25 → 2015-02-09 (-105d) | 2015-05-25 → 2015-02-09 (-105d) | 1d → 1d? |  | 42d → 113d | 273 → none | resources HRST 2 → none |
| 275 | **Onda 2 - Termo de Aceite - Realização** | 2015-05-25 → 2015-02-09 (-105d) | 2015-05-25 → 2015-02-09 (-105d) | 0d → 1d? |  | 42d → 113d |  |  |
| 276 | Onda 2 - Entrega Fase 3 - Realização - VS | 2015-05-25 → 2015-02-09 (-105d) | 2015-05-25 → 2015-02-09 (-105d) | 0d → 1d? |  | 42d → 113d | 274 → none |  |
| 277 | **Fase 4 - Preparação Final** | 2015-04-13 → 2015-02-09 (-63d) | 2015-07-10 → 2015-02-09 (-151d) | 60d → 1d? |  | 5d → 113d |  | baseline start 2013-09-12 → none; baseline finish 2013-09-30 → none |
| 278 | **Testes Funcionais** | 2015-04-13 → 2015-02-09 (-63d) | 2015-06-10 → 2015-02-09 (-121d) | 38d → 1d? |  | 32d → 113d |  |  |
| 279 | **Gestão de Competência VS** | 2015-04-13 → 2015-02-09 (-63d) | 2015-04-15 → 2015-02-09 (-65d) | 3d → 1d? |  | 67d → 113d |  |  |
| 280 | Realizar Testes Funcionais - VS | 2015-04-13 → 2015-02-09 (-63d) | 2015-04-13 → 2015-02-09 (-63d) | 1d → 1d? |  | 67d → 113d | 259 → none |  |
| 281 | Ajustes Testes Funcionais - VS | 2015-04-14 → 2015-02-09 (-64d) | 2015-04-15 → 2015-02-09 (-65d) | 2d → 1d? |  | 67d → 113d | 280 → none |  |
| 282 | Onda 1 - Entrega Testes Funcionais - VS | 2015-04-15 → 2015-02-09 (-65d) | 2015-04-15 → 2015-02-09 (-65d) | 0d → 1d? |  | 67d → 113d | 281 → none |  |
| 283 | **Gestão de Metas VS** | 2015-06-08 → 2015-02-09 (-119d) | 2015-06-10 → 2015-02-09 (-121d) | 3d → 1d? |  | 32d → 113d |  |  |
| 284 | Realizar Testes Funcionais | 2015-06-08 → 2015-02-09 (-119d) | 2015-06-08 → 2015-02-09 (-119d) | 1d → 1d? |  | 32d → 113d |  | constraint start no earlier than 2015-06-08 → none |
| 285 | Ajustes Testes Funcionais | 2015-06-09 → 2015-02-09 (-120d) | 2015-06-10 → 2015-02-09 (-121d) | 2d → 1d? |  | 32d → 113d | 284 → none |  |
| 286 | Onda 2 - Entrega Testes Funcionais - VS | 2015-06-10 → 2015-02-09 (-121d) | 2015-06-10 → 2015-02-09 (-121d) | 0d → 1d? |  | 32d → 113d | 285 → none |  |
| 287 | **Testes Unitários** | 2015-04-22 → 2015-02-09 (-72d) | 2015-06-19 → 2015-02-09 (-130d) | 40d → 1d? |  | 0d → 113d |  |  |
| 288 | **Gestão de Competência VS** | 2015-04-22 → 2015-02-09 (-72d) | 2015-04-28 → 2015-02-09 (-78d) | 5d → 1d? |  | 0d → 113d |  |  |
| 289 | Realizar Testes Unitários - VS | 2015-04-22 → 2015-02-09 (-72d) | 2015-04-23 → 2015-02-09 (-73d) | 2d → 1d? |  | none → 113d |  | constraint start no earlier than 2015-04-22 → none |
| 290 | Ajustes Testes Unitários - VS | 2015-04-24 → 2015-02-09 (-74d) | 2015-04-28 → 2015-02-09 (-78d) | 3d → 1d? |  | 60d → 113d | 289 → none |  |
| 291 | Onda 1 - Entrega Testes Unitários - VS | 2015-04-28 → 2015-02-09 (-78d) | 2015-04-28 → 2015-02-09 (-78d) | 0d → 1d? |  | 60d → 113d | 290 → none |  |
| 292 | **Gestão de Metas VS** | 2015-06-15 → 2015-02-09 (-126d) | 2015-06-19 → 2015-02-09 (-130d) | 5d → 1d? |  | 25d → 113d |  |  |
| 293 | Realizar Testes Unitários - VS | 2015-06-15 → 2015-02-09 (-126d) | 2015-06-16 → 2015-02-09 (-127d) | 2d → 1d? |  | 25d → 113d |  | constraint start no earlier than 2015-06-15 → none |
| 294 | Ajustes de Testes Unitários - VS | 2015-06-17 → 2015-02-09 (-128d) | 2015-06-19 → 2015-02-09 (-130d) | 3d → 1d? |  | 25d → 113d | 293 → none |  |
| 295 | Onda 2 - Entrega Testes Unitários - VS | 2015-06-19 → 2015-02-09 (-130d) | 2015-06-19 → 2015-02-09 (-130d) | 0d → 1d? |  | 25d → 113d | 294 → none |  |
| 296 | **Testes Integrados** | 2015-05-04 → 2015-02-09 (-84d) | 2015-07-10 → 2015-02-09 (-151d) | 48d → 1d? |  | 10d → 113d |  |  |
| 297 | **Gestão de Competência VS** | 2015-05-04 → 2015-02-09 (-84d) | 2015-05-15 → 2015-02-09 (-95d) | 10d → 1d? |  | 35d → 113d |  |  |
| 298 | Testes Integrados VS | 2015-05-04 → 2015-02-09 (-84d) | 2015-05-08 → 2015-02-09 (-88d) | 5d → 1d? |  | 35d → 113d |  | constraint start no earlier than 2015-05-04 → none |
| 299 | Ajustes Testes Integrados VS | 2015-05-11 → 2015-02-09 (-91d) | 2015-05-15 → 2015-02-09 (-95d) | 5d → 1d? |  | 35d → 113d | 298 → none |  |
| 300 | **Onda 1 - Termo de Aceite Fase 4** | 2015-05-15 → 2015-02-09 (-95d) | 2015-05-15 → 2015-02-09 (-95d) | 0d → 1d? |  | 48d → 113d |  |  |
| 301 | Onda 1 - Assinatura Fase 4 - Preparação Final - VS | 2015-05-15 → 2015-02-09 (-95d) | 2015-05-15 → 2015-02-09 (-95d) | 0d → 1d? |  | 48d → 113d | 299 → none |  |
| 303 | **Fase 5 - Go Live e Operacao Assistida** | 2015-05-18 → 2015-02-09 (-98d) | 2015-07-24 → 2015-02-09 (-165d) | 48d → 1d? |  | 0d → 113d |  | baseline start 2013-10-01 → none; baseline finish 2013-10-30 → none |
| 304 | **Go Live - Onda 1 - Gestão de Competência** | 2015-05-18 → 2015-02-09 (-98d) | 2015-06-03 → 2015-02-09 (-114d) | 13d → 1d? |  | 35d → 113d |  |  |
| 305 | Treinamento | 2015-05-18 → 2015-02-09 (-98d) | 2015-05-22 → 2015-02-09 (-102d) | 5d → 1d? |  | 35d → 113d | 191 → none | resources HRST 1 → none |
| 306 | Cutover | 2015-05-25 → 2015-02-09 (-105d) | 2015-05-29 → 2015-02-09 (-109d) | 5d → 1d? |  | 35d → 113d | 400 → none |  |
| 307 | Onda 1 - Go Live | 2015-05-29 → 2015-02-09 (-109d) | 2015-05-29 → 2015-02-09 (-109d) | 0d → 1d? |  | 38d → 113d | 306 → none |  |
| 308 | Operação Assistida | 2015-06-01 → 2015-02-09 (-112d) | 2015-06-03 → 2015-02-09 (-114d) | 3d → 1d? |  | 35d → 113d | 306 → none |  |
| 309 | **Go Live - Onda 2 - Gestão de Metas** | 2015-07-13 → 2015-02-09 (-154d) | 2015-07-24 → 2015-02-09 (-165d) | 10d → 1d? |  | 0d → 113d |  |  |
| 310 | Treinamento | 2015-07-13 → 2015-02-09 (-154d) | 2015-07-17 → 2015-02-09 (-158d) | 5d → 1d? |  | 5d → 113d | 203 → none |  |
| 311 | Cutover | 2015-07-13 → 2015-02-09 (-154d) | 2015-07-17 → 2015-02-09 (-158d) | 5d → 1d? |  | 0d → 113d | Ajustes Testes Integrados VS → none |  |
| 312 | Onda 2 - Go Live | 2015-07-17 → 2015-02-09 (-158d) | 2015-07-17 → 2015-02-09 (-158d) | 0d → 1d? |  | 5d → 113d | 311 → none |  |
| 313 | Operação Assistida | 2015-07-20 → 2015-02-09 (-161d) | 2015-07-24 → 2015-02-09 (-165d) | 5d → 1d? |  | 0d → 113d | 311 → none |  |
| 314 | **(2) Projeto Metas e Competência - VM** | 2015-02-09 A | 2015-07-24 → 2015-03-06 (-140d) | 104d → 20d? | 0% → 35% | none → 94d |  | baseline start 2013-07-08 → none; baseline finish 2013-12-02 → none |
| 315 | **Fase 1 - Preparação do Projeto** | 2015-02-09 A | 2015-02-20 A |  | 0% → 100% | 84d → none |  | baseline start 2013-07-08 → none; baseline finish 2013-07-22 → none |

| ID | Task | Start | Finish | Duration | Complete | Total float | Predecessors | Other |
| --- | --- | --- | --- | --- | --- | --- | --- | --- |
| 316 | Confirmação e Mobilização de Equipe | 2015-02-09 A | 2015-02-18 A |  | 0% → 100% | 84d → none |  |  |
| 317 | Reunião Pré Kick-off | 2015-02-19 A | 2015-02-19 A |  | 0% → 100% | 94d → none |  |  |
| 318 | Kick-Off | 2015-02-20 A | 2015-02-20 A |  | 0% → 100% | 94d → none |  |  |
| 319 | Identificação dos Usuários | 2015-02-19 A | 2015-02-20 A |  | 0% → 100% | 84d → none |  |  |
| 320 | **Termo de Aceite Fase 1** | 2015-02-20 A | 2015-02-20 A |  | 0% → 100% | 94d → none |  |  |
| 321 | Assinatura Fase 1 - Preparação do Projeto | 2015-02-20 A | 2015-02-20 A |  | 0% → 100% | 94d → none |  |  |
| 322 | **Fase 2 - Business Blueprint** | 2015-02-23 → 2015-02-09 A (-14d) |  | 10d → 20d? | 0% → 88% | 84d → 94d |  | baseline start 2013-07-23 → none; baseline finish 2013-08-20 → none |
| 323 | **Levantamento Gestão de Metas** | 2015-02-23 A | 2015-02-27 A |  | 0% → 100% | 84d → none |  |  |
| 324 | Mapeamento dos Processos | 2015-02-23 A | 2015-02-25 A |  | 0% → 100% | 84d → none |  |  |
| 325 | Elaboração dos BBPs | 2015-02-26 A | 2015-02-26 A |  | 0% → 100% | 89d → none |  |  |
| 326 | Ajustes / Aprovação dos BBPs | 2015-02-27 A | 2015-02-27 A |  | 0% → 100% | 89d → none |  |  |
| 327 | **Levantamento Gestão de Competência** | 2015-02-26 → 2015-02-09 A (-17d) |  | 7d → 20d? | 0% → 82% | 84d → 94d |  |  |
| 328 | Mapeamento dos Processos | 2015-02-26 A | 2015-03-03 A |  | 0% → 100% | 84d → none |  |  |
| 329 | **Elaboração dos BBPs** | 2015-03-04 A | 2015-03-04 A |  | 0% → 100% | 84d → none |  |  |
| 330 | EP | 2015-03-04 A | 2015-03-04 A |  | 0% → 100% | 86d → none |  |  |
| 331 | PDI | 2015-03-04 A | 2015-03-04 A |  | 0% → 100% | 86d → none |  |  |
| 332 | Competência | 2015-03-04 A | 2015-03-04 A |  | 0% → 100% | 84d → none |  |  |
| 333 | Sucessão | 2015-03-04 A | 2015-03-04 A |  | 0% → 100% | 84d → none |  |  |
| 334 | **Ajustes / Aprovação dos BBPs** | 2015-03-05 A |  |  | 0% → 75% | 84d → 94d |  |  |
| 335 | EP | 2015-03-05 A |  |  | 0% → 75% | 84d → 0.75d |  |  |
| 336 | PDI | 2015-03-06 A |  |  | 0% → 75% | 84d → 94d |  |  |
| 337 | Competência | 2015-03-05 A |  |  | 0% → 75% | 84d → 0.75d |  |  |
| 338 | Sucessão | 2015-03-06 A |  |  | 0% → 75% | 84d → 94d |  |  |
| 339 | **Termo de Aceite Fase 2** | 2015-03-06 → 2015-02-09 (-25d) | 2015-03-06 → 2015-02-09 (-25d) | 0d → 1d? |  | 84d → 113d |  |  |
| 340 | Assinatura Fase 2 - Business Blueprint | 2015-03-06 → 2015-02-09 (-25d) | 2015-03-06 → 2015-02-09 (-25d) | 0d → 1d? |  | 84d → 113d | 338 → none |  |
| 341 | **Fase 3 - Realização** | 2015-03-23 → 2015-02-09 (-42d) | 2015-05-25 → 2015-02-09 (-105d) | 42d → 1d? |  | none → 113d |  | baseline start 2013-07-29 → none; baseline finish 2013-10-17 → none |
| 342 | **Gestão de Competência VM** | 2015-03-23 → 2015-02-09 (-42d) | 2015-04-10 → 2015-02-09 (-60d) | 14d → 1d? |  | 28d → 113d |  |  |
| 343 | Configurar EP (Employee Profile) - VM | 2015-03-23 → 2015-02-09 (-42d) | 2015-03-27 → 2015-02-09 (-46d) | 5d → 1d? |  | 28d → 113d |  | constraint start no earlier than 2015-03-23 → none |
| 344 | Configurar PDI (Palno de Desenvolvimento Individual) - VM | 2015-03-23 → 2015-02-09 (-42d) | 2015-03-27 → 2015-02-09 (-46d) | 5d → 1d? |  | 28d → 113d |  | constraint start no earlier than 2015-03-23 → none |
| 345 | Configurar Sucessão - VM | 2015-03-30 → 2015-02-09 (-49d) | 2015-04-06 → 2015-02-09 (-56d) | 5d → 1d? |  | 32d → 113d | 343, 344 → none |  |
| 346 | Configurar PM - VM | 2015-03-30 → 2015-02-09 (-49d) | 2015-04-08 → 2015-02-09 (-58d) | 7d → 1d? |  | 28d → 113d | 343, 344 → none |  |
| 347 | **Configurar Relatórios** | 2015-04-09 → 2015-02-09 (-59d) | 2015-04-10 → 2015-02-09 (-60d) | 2d → 1d? |  | 28d → 113d |  |  |
| 348 | Cópia dos Relatórios da VC - VM | 2015-04-09 → 2015-02-09 (-59d) | 2015-04-09 → 2015-02-09 (-59d) | 0.5d → 1d? |  | 28d → 113d | 346 → none |  |
| 349 | Escala - Descrição e Pontuação - VM | 2015-04-09 → 2015-02-09 (-59d) | 2015-04-09 → 2015-02-09 (-59d) | 0.5d → 1d? |  | 28d → 113d | 348 → none |  |
| 350 | Comparativo entre Desempenho na Função e Crenças - VM | 2015-04-10 → 2015-02-09 (-60d) | 2015-04-10 → 2015-02-09 (-60d) | 1d → 1d? |  | 28d → 113d | 349 → none |  |
| 351 | Desenvolvimento Abap - Ajustes Integração | 2015-03-30 → 2015-02-09 (-49d) | 2015-04-10 → 2015-02-09 (-60d) | 9d → 1d? |  | 28d → 113d | 343, 344 → none |  |
| 352 | **Onda 1 - Termo de Aceite Fase 3 - Realização** | 2015-04-10 → 2015-02-09 (-60d) | 2015-04-10 → 2015-02-09 (-60d) | 0d → 1d? |  | 28d → 113d |  |  |
| 353 | Onda 1 - Assinatura Fase 3 - Realização - VM | 2015-04-10 → 2015-02-09 (-60d) | 2015-04-10 → 2015-02-09 (-60d) | 0d → 1d? |  | 28d → 113d | 351 → none |  |
| 354 | **Gestão de Metas VM** | 2015-05-11 → 2015-02-09 (-91d) | 2015-05-25 → 2015-02-09 (-105d) | 11d → 1d? |  | 0d → 113d |  |  |
| 355 | Alteração de label na instância | 2015-05-11 → 2015-02-09 (-91d) | 2015-05-11 → 2015-02-09 (-91d) | 1d → 1d? |  | 0d → 113d | 389 → none |  |
| 356 | Configurar o mapa de rota | 2015-05-12 → 2015-02-09 (-92d) | 2015-05-12 → 2015-02-09 (-92d) | 1d → 1d? |  | 0d → 113d | 355 → none |  |
| 357 | Configurar Formulários | 2015-05-13 → 2015-02-09 (-93d) | 2015-05-13 → 2015-02-09 (-93d) | 1d → 1d? |  | 0d → 113d | 356 → none |  |
| 358 | Configurar permissões | 2015-05-14 → 2015-02-09 (-94d) | 2015-05-14 → 2015-02-09 (-94d) | 1d → 1d? |  | 0d → 113d | 357 → none |  |
| 359 | Definir layout para importar a Biblioteca de Metas | 2015-05-15 → 2015-02-09 (-95d) | 2015-05-15 → 2015-02-09 (-95d) | 1d → 1d? |  | 0d → 113d | 358 → none |  |
| 360 | Definir layout para carga de empregados | 2015-05-18 → 2015-02-09 (-98d) | 2015-05-18 → 2015-02-09 (-98d) | 1d → 1d? |  | 0d → 113d | 359 → none |  |
| 361 | Passar para Votorantim informações para carga de fotos | 2015-05-19 → 2015-02-09 (-99d) | 2015-05-19 → 2015-02-09 (-99d) | 1d → 1d? |  | 0d → 113d | 360 → none |  |
| 362 | Fazer a carga de metas | 2015-05-20 → 2015-02-09 (-100d) | 2015-05-20 → 2015-02-09 (-100d) | 1d → 1d? |  | 0d → 113d | 361 → none |  |
| 363 | Fazer a carga de empregados | 2015-05-21 → 2015-02-09 (-101d) | 2015-05-21 → 2015-02-09 (-101d) | 1d → 1d? |  | 0d → 113d | 362 → none |  |
| 364 | Agendar job para carga de fotos | 2015-05-22 → 2015-02-09 (-102d) | 2015-05-22 → 2015-02-09 (-102d) | 1d → 1d? |  | 0d → 113d | 363 → none |  |
| 365 | Configurar Relatórios | 2015-05-25 → 2015-02-09 (-105d) | 2015-05-25 → 2015-02-09 (-105d) | 1d → 1d? |  | 0d → 113d | 364 → none |  |
| 366 | **Onda 2 - Termo de Aceite - Realização** | 2015-05-25 → 2015-02-09 (-105d) | 2015-05-25 → 2015-02-09 (-105d) | 0d → 1d? |  | 0d → 113d |  |  |
| 367 | Onda 2 - Assinatura Fase 3 - Realização - VM | 2015-05-25 → 2015-02-09 (-105d) | 2015-05-25 → 2015-02-09 (-105d) | 0d → 1d? |  | 0d → 113d | 365 → none |  |
| 368 | **Fase 4 - Preparação Final** | 2015-04-13 → 2015-02-09 (-63d) | 2015-07-10 → 2015-02-09 (-151d) | 60d → 1d? |  | 10d → 113d |  | baseline start 2013-10-16 → none; baseline finish 2013-10-30 → none |
| 369 | **Testes Funcionais** | 2015-04-13 → 2015-02-09 (-63d) | 2015-06-10 → 2015-02-09 (-121d) | 38d → 1d? |  | 32d → 113d |  |  |
| 370 | **Gestão de Competência VM** | 2015-04-13 → 2015-02-09 (-63d) | 2015-04-15 → 2015-02-09 (-65d) | 3d → 1d? |  | 67d → 113d |  |  |
| 371 | Realizar Testes Funcionais - VM | 2015-04-13 → 2015-02-09 (-63d) | 2015-04-13 → 2015-02-09 (-63d) | 1d → 1d? |  | 67d → 113d | 350 → none |  |
| 372 | Ajustes Testes Funcionais - VM | 2015-04-14 → 2015-02-09 (-64d) | 2015-04-15 → 2015-02-09 (-65d) | 2d → 1d? |  | 67d → 113d | 371 → none |  |
| 373 | Onda 1 - Entrega Testes Funcionais - VM | 2015-04-15 → 2015-02-09 (-65d) | 2015-04-15 → 2015-02-09 (-65d) | 0d → 1d? |  | 67d → 113d | 372 → none |  |
| 374 | **Gestão de Metas VM** | 2015-06-08 → 2015-02-09 (-119d) | 2015-06-10 → 2015-02-09 (-121d) | 3d → 1d? |  | 32d → 113d |  |  |
| 375 | Realizar Testes Funcionais | 2015-06-08 → 2015-02-09 (-119d) | 2015-06-08 → 2015-02-09 (-119d) | 1d → 1d? |  | 32d → 113d |  | constraint start no earlier than 2015-06-08 → none |
| 376 | Ajustes Testes Funcionais | 2015-06-09 → 2015-02-09 (-120d) | 2015-06-10 → 2015-02-09 (-121d) | 2d → 1d? |  | 32d → 113d | 375 → none |  |
| 377 | Onda 2 - Entrega Testes Funcionais - VM | 2015-06-10 → 2015-02-09 (-121d) | 2015-06-10 → 2015-02-09 (-121d) | 0d → 1d? |  | 32d → 113d | 376 → none |  |
| 378 | **Testes Unitários** | 2015-04-24 → 2015-02-09 (-74d) | 2015-06-22 → 2015-02-09 (-133d) | 39d → 1d? |  | 24d → 113d |  |  |
| 379 | **Gestão de Competência VM** | 2015-04-24 → 2015-02-09 (-74d) | 2015-04-28 → 2015-02-09 (-78d) | 3d → 1d? |  | 60d → 113d |  |  |
| 380 | Realizar Testes Unitários - VM | 2015-04-24 → 2015-02-09 (-74d) | 2015-04-24 → 2015-02-09 (-74d) | 1d → 1d? |  | 60d → 113d |  | constraint start no earlier than 2015-04-24 → none |
| 381 | Ajustes Testes Unitários - VM | 2015-04-27 → 2015-02-09 (-77d) | 2015-04-28 → 2015-02-09 (-78d) | 2d → 1d? |  | 60d → 113d | 380 → none |  |
| 382 | Onda 1 - Entrega Testes Unitários - VM | 2015-04-28 → 2015-02-09 (-78d) | 2015-04-28 → 2015-02-09 (-78d) | 0d → 1d? |  | 60d → 113d | 381 → none |  |
| 383 | **Gestão de Metas VM** | 2015-06-17 → 2015-02-09 (-128d) | 2015-06-22 → 2015-02-09 (-133d) | 4d → 1d? |  | 24d → 113d |  |  |
| 384 | Realizar Testes Unitários - VM | 2015-06-17 → 2015-02-09 (-128d) | 2015-06-18 → 2015-02-09 (-129d) | 2d → 1d? |  | 24d → 113d |  | constraint start no earlier than 2015-06-17 → none |
| 385 | Ajustes de Testes Unitários - VM | 2015-06-19 → 2015-02-09 (-130d) | 2015-06-22 → 2015-02-09 (-133d) | 2d → 1d? |  | 24d → 113d | 384 → none |  |

| ID | Task | Start | Finish | Duration | Complete | Total float | Predecessors | Other |
| --- | --- | --- | --- | --- | --- | --- | --- | --- |
| 386 | Onda 2 - Entrega Testes Unitários - VM | 2015-06-22 → 2015-02-09 (-133d) | 2015-06-22 → 2015-02-09 (-133d) | 0d → 1d? |  | 24d → 113d | 385 → none |  |
| 387 | **Testes Integrados** | 2015-05-04 → 2015-02-09 (-84d) | 2015-07-10 → 2015-02-09 (-151d) | 48d → 1d? |  | 0d → 113d |  |  |
| 388 | **Gestão de Competência VM** | 2015-05-04 → 2015-02-09 (-84d) | 2015-05-15 → 2015-02-09 (-95d) | 10d → 1d? |  | 0d → 113d |  |  |
| 389 | Testes Integrados VM | 2015-05-04 → 2015-02-09 (-84d) | 2015-05-08 → 2015-02-09 (-88d) | 5d → 1d? |  | 0d → 113d |  | constraint start no earlier than 2015-05-04 → none |
| 390 | Ajustes Testes Integrados VM | 2015-05-11 → 2015-02-09 (-91d) | 2015-05-15 → 2015-02-09 (-95d) | 5d → 1d? |  | 35d → 113d | 389 → none |  |
| 391 | **Onda 1 - Termo de Aceite Fase 4** | 2015-05-15 → 2015-02-09 (-95d) | 2015-05-15 → 2015-02-09 (-95d) | 0d → 1d? |  | 48d → 113d |  |  |
| 392 | Onda 1 - Assinatura Fase 4 - Preparação Final - VM | 2015-05-15 → 2015-02-09 (-95d) | 2015-05-15 → 2015-02-09 (-95d) | 0d → 1d? |  | 48d → 113d | 390 → none |  |
| 393 | **Gestão de Metas VM** | 2015-06-29 → 2015-02-09 (-140d) | 2015-07-10 → 2015-02-09 (-151d) | 10d → 1d? |  | 0d → 113d |  |  |
| 394 | Testes Integrados VM | 2015-06-29 → 2015-02-09 (-140d) | 2015-07-03 → 2015-02-09 (-144d) | 5d → 1d? |  | 0d → 113d |  | constraint start no earlier than 2015-06-29 → none |
| 395 | Ajustes Testes Integrados VM | 2015-07-06 → 2015-02-09 (-147d) | 2015-07-10 → 2015-02-09 (-151d) | 5d → 1d? |  | 0d → 113d | 394 → none |  |
| 396 | **Termo de Aceite Fase 4** | 2015-07-10 → 2015-02-09 (-151d) | 2015-07-10 → 2015-02-09 (-151d) | 0d → 1d? |  | 10d → 113d |  |  |
| 397 | Onda 2 - Assinatura Fase 4 - Preparação Final - VM | 2015-07-10 → 2015-02-09 (-151d) | 2015-07-10 → 2015-02-09 (-151d) | 0d → 1d? |  | 10d → 113d | 395 → none |  |
| 398 | **Fase 5 - Go Live e Operacao Assistida** | 2015-05-18 → 2015-02-09 (-98d) | 2015-07-24 → 2015-02-09 (-165d) | 48d → 1d? |  | 0d → 113d |  | baseline start 2013-11-01 → none; baseline finish 2013-12-02 → none |
| 399 | **Go Live - Onda 1 - Gestão de Competência** | 2015-05-18 → 2015-02-09 (-98d) | 2015-06-03 → 2015-02-09 (-114d) | 13d → 1d? |  | 35d → 113d |  |  |
| 400 | Treinamento | 2015-05-18 → 2015-02-09 (-98d) | 2015-05-22 → 2015-02-09 (-102d) | 5d → 1d? |  | 35d → 113d | 299 → none |  |
| 401 | Cutover | 2015-05-25 → 2015-02-09 (-105d) | 2015-05-29 → 2015-02-09 (-109d) | 5d → 1d? |  | 35d → 113d | 495 → none |  |
| 402 | Onda 1 - Go Live | 2015-05-29 → 2015-02-09 (-109d) | 2015-05-29 → 2015-02-09 (-109d) | 0d → 1d? |  | 38d → 113d | 401 → none |  |
| 403 | Operação Assistida | 2015-06-01 → 2015-02-09 (-112d) | 2015-06-03 → 2015-02-09 (-114d) | 3d → 1d? |  | 35d → 113d | 401 → none |  |
| 404 | **Go Live - Onda 2 - Gestão de Metas** | 2015-07-13 → 2015-02-09 (-154d) | 2015-07-24 → 2015-02-09 (-165d) | 10d → 1d? |  | 0d → 113d |  |  |
| 405 | Treinamento | 2015-07-13 → 2015-02-09 (-154d) | 2015-07-17 → 2015-02-09 (-158d) | 5d → 1d? |  | 5d → 113d | Ajustes Testes Integrados VS → none |  |
| 406 | Cutover | 2015-07-13 → 2015-02-09 (-154d) | 2015-07-17 → 2015-02-09 (-158d) | 5d → 1d? |  | -103d → 113d | 395 → none |  |
| 407 | Onda 2 - Go Live | 2015-07-17 → 2015-02-09 (-158d) | 2015-07-17 → 2015-02-09 (-158d) | 0d → 1d? |  | 5d → 113d | 406 → none |  |
| 408 | Operação Assistida | 2015-07-20 → 2015-02-09 (-161d) | 2015-07-24 → 2015-02-09 (-165d) | 5d → 1d? |  | -103d → 113d | 406 → none |  |
| 409 | **(3) Projeto Metas e Competência - VID São Paulo e Curitiba** | 2015-02-09 A | 2015-07-24 → 2015-03-06 (-140d) | 104d → 20d? | 0% → 34% | none → 94d |  | baseline start 2012-10-01 → none; baseline finish 2013-12-25 → none |
| 410 | **Fase 1 - Preparação do Projeto** | 2015-02-09 A | 2015-02-20 A |  | 0% → 100% | 84d → none |  | baseline start 2012-11-05 → none; baseline finish 2013-01-16 → none |
| 411 | Confirmação e Mobilização de Equipe | 2015-02-09 A | 2015-02-18 A |  | 0% → 100% | 84d → none |  |  |
| 412 | Reunião Pré Kick-off | 2015-02-19 A | 2015-02-19 A |  | 0% → 100% | 94d → none |  |  |
| 413 | Kick-Off | 2015-02-20 A | 2015-02-20 A |  | 0% → 100% | 94d → none |  |  |
| 414 | Identificação dos Usuários | 2015-02-19 A | 2015-02-20 A |  | 0% → 100% | 84d → none |  |  |
| 415 | **Termo de Aceite Fase 1** | 2015-02-20 A | 2015-02-20 A |  | 0% → 100% | 94d → none |  |  |
| 416 | Assinatura Fase 1 - Preparação do Projeto | 2015-02-20 A | 2015-02-20 A |  | 0% → 100% | 94d → none |  |  |
| 417 | **Fase 2 - Business Blueprint** | 2015-02-23 → 2015-02-09 A (-14d) |  | 10d → 20d? | 0% → 86% | 84d → 94d |  | baseline start 2013-03-07 → none; baseline finish 2013-08-15 → none |
| 418 | **Levantamento Gestão de Metas** | 2015-02-23 A |  |  | 0% → 95% | 84d → 99d |  |  |
| 419 | Mapeamento dos Processos | 2015-02-23 A | 2015-02-25 A |  | 0% → 100% | 84d → none |  |  |
| 420 | Elaboração dos BBPs | 2015-02-26 A | 2015-02-26 A |  | 0% → 100% | 89d → none |  |  |
| 421 | Ajustes / Aprovação dos BBPs | 2015-02-27 A |  |  | 0% → 75% | 89d → 99d |  |  |
| 422 | **Levantamento Gestão de Competência** | 2015-02-26 → 2015-02-09 A (-17d) |  | 7d → 20d? | 0% → 82% | 84d → 94d |  |  |
| 423 | Mapeamento dos Processos | 2015-02-26 A | 2015-03-03 A |  | 0% → 100% | 84d → none |  |  |
| 424 | **Elaboração dos BBPs** | 2015-03-04 A | 2015-03-04 A |  | 0% → 100% | 84d → none |  |  |
| 425 | EP | 2015-03-04 A | 2015-03-04 A |  | 0% → 100% | 86d → none |  | resources HRST 1 → none |
| 426 | PDI | 2015-03-04 A | 2015-03-04 A |  | 0% → 100% | 86d → none |  | resources HRST 1 → none |
| 427 | Competência | 2015-03-04 A | 2015-03-04 A |  | 0% → 100% | 84d → none |  | resources HRST 2 → none |
| 428 | Sucessão | 2015-03-04 A | 2015-03-04 A |  | 0% → 100% | 84d → none |  | resources HRST 2 → none |
| 429 | **Ajustes / Aprovação dos BBPs** | 2015-03-05 A |  |  | 0% → 75% | 84d → 94d |  |  |
| 430 | EP | 2015-03-05 A |  |  | 0% → 75% | 84d → 0.75d |  | resources HRST 1 → none |
| 431 | PDI | 2015-03-06 A |  |  | 0% → 75% | 84d → 94d |  | resources HRST 1 → none |
| 432 | Competência | 2015-03-05 A |  |  | 0% → 75% | 84d → 0.75d |  | resources HRST 2 → none |
| 433 | Sucessão | 2015-03-06 A |  |  | 0% → 75% | 84d → 94d |  | resources HRST 2 → none |
| 434 | **Termo de Aceite Fase 2** | 2015-03-06 → 2015-02-09 (-25d) | 2015-03-06 → 2015-02-09 (-25d) | 0d → 1d? |  | 84d → 113d |  |  |
| 435 | Assinatura Fase 2 - Business Blueprint | 2015-03-06 → 2015-02-09 (-25d) | 2015-03-06 → 2015-02-09 (-25d) | 0d → 1d? |  | 84d → 113d | 433 → none |  |
| 436 | **Fase 3 - Realização** | 2015-03-23 → 2015-02-09 (-42d) | 2015-06-03 → 2015-02-09 (-114d) | 49d → 1d? |  | none → 113d |  | baseline start 2012-10-01 → none; baseline finish 2013-11-15 → none |
| 437 | **Gestão de Competência VID** | 2015-03-23 → 2015-02-09 (-42d) | 2015-04-10 → 2015-02-09 (-60d) | 14d → 1d? |  | 35d → 113d |  |  |
| 438 | Configurar EP (Employee Profile) - VID | 2015-03-23 → 2015-02-09 (-42d) | 2015-03-27 → 2015-02-09 (-46d) | 5d → 1d? |  | 35d → 113d |  | constraint start no earlier than 2015-03-23 → none |
| 439 | Configurar PDI (Palno de Desenvolvimento Individual) - VID | 2015-03-23 → 2015-02-09 (-42d) | 2015-03-27 → 2015-02-09 (-46d) | 5d → 1d? |  | 35d → 113d |  | constraint start no earlier than 2015-03-23 → none |
| 440 | Configurar Sucessão - VID | 2015-03-30 → 2015-02-09 (-49d) | 2015-04-06 → 2015-02-09 (-56d) | 5d → 1d? |  | 39d → 113d | 438, 439 → none |  |
| 441 | Configurar PM - VID | 2015-03-30 → 2015-02-09 (-49d) | 2015-04-08 → 2015-02-09 (-58d) | 7d → 1d? |  | 35d → 113d | 438, 439 → none |  |
| 442 | **Configurar Relatórios** | 2015-04-09 → 2015-02-09 (-59d) | 2015-04-10 → 2015-02-09 (-60d) | 2d → 1d? |  | 35d → 113d |  |  |
| 443 | Cópia dos Relatórios da VC - VID | 2015-04-09 → 2015-02-09 (-59d) | 2015-04-09 → 2015-02-09 (-59d) | 0.5d → 1d? |  | 35d → 113d | 441 → none |  |
| 444 | Escala - Descrição e Pontuação - VID | 2015-04-09 → 2015-02-09 (-59d) | 2015-04-09 → 2015-02-09 (-59d) | 0.5d → 1d? |  | 35d → 113d | 443 → none |  |
| 445 | Comparativo entre Desempenho na Função e Crenças - VID | 2015-04-10 → 2015-02-09 (-60d) | 2015-04-10 → 2015-02-09 (-60d) | 1d → 1d? |  | 35d → 113d | 444 → none |  |
| 446 | Desenvolvimento Abap - Ajustes Integração | 2015-03-30 → 2015-02-09 (-49d) | 2015-04-10 → 2015-02-09 (-60d) | 9d → 1d? |  | 35d → 113d | 438, 439 → none |  |
| 447 | **Termo de Aceite Fase 3 - Realização** | 2015-04-10 → 2015-02-09 (-60d) | 2015-04-10 → 2015-02-09 (-60d) | 0d → 1d? |  | 35d → 113d |  |  |
| 448 | Onda 1 - Assinatura Fase 3 - Realização - VID | 2015-04-10 → 2015-02-09 (-60d) | 2015-04-10 → 2015-02-09 (-60d) | 0d → 1d? |  | 35d → 113d | 446 → none |  |
| 449 | **Gestão de Metas VID** | 2015-05-18 → 2015-02-09 (-98d) | 2015-06-03 → 2015-02-09 (-114d) | 13d → 1d? |  | 0d → 113d |  |  |
| 450 | Alteração de label na instância | 2015-05-18 → 2015-02-09 (-98d) | 2015-05-18 → 2015-02-09 (-98d) | 1d → 1d? |  | 0d → 113d | 485 → none |  |
| 451 | Configurar o mapa de rota | 2015-05-19 → 2015-02-09 (-99d) | 2015-05-19 → 2015-02-09 (-99d) | 1d → 1d? |  | 0d → 113d | 450 → none |  |
| 452 | Configurar Formulários | 2015-05-20 → 2015-02-09 (-100d) | 2015-05-20 → 2015-02-09 (-100d) | 1d → 1d? |  | 0d → 113d | 451 → none |  |
| 453 | Configurar permissões | 2015-05-21 → 2015-02-09 (-101d) | 2015-05-21 → 2015-02-09 (-101d) | 1d → 1d? |  | 0d → 113d | 452 → none |  |
| 454 | Definir layout para importar a Biblioteca de Metas | 2015-05-22 → 2015-02-09 (-102d) | 2015-05-22 → 2015-02-09 (-102d) | 1d → 1d? |  | 0d → 113d | 453 → none |  |
| 455 | Definir layout para carga de empregados | 2015-05-25 → 2015-02-09 (-105d) | 2015-05-25 → 2015-02-09 (-105d) | 1d → 1d? |  | 0d → 113d | 454 → none |  |

| ID | Task | Start | Finish | Duration | Complete | Total float | Predecessors | Other |
| --- | --- | --- | --- | --- | --- | --- | --- | --- |
| 456 | Passar para Votorantim informações para carga de fotos | 2015-05-26 → 2015-02-09 (-106d) | 2015-05-26 → 2015-02-09 (-106d) | 1d → 1d? |  | 0d → 113d | 455 → none |  |
| 457 | Fazer a carga de metas | 2015-05-27 → 2015-02-09 (-107d) | 2015-05-27 → 2015-02-09 (-107d) | 1d → 1d? |  | 0d → 113d | 456 → none |  |
| 458 | Fazer a carga de empregados | 2015-05-28 → 2015-02-09 (-108d) | 2015-05-28 → 2015-02-09 (-108d) | 1d → 1d? |  | 0d → 113d | 457 → none |  |
| 459 | Agendar job para carga de fotos | 2015-05-29 → 2015-02-09 (-109d) | 2015-06-01 → 2015-02-09 (-112d) | 2d → 1d? |  | 0d → 113d | 458 → none |  |
| 460 | Configurar Relatórios | 2015-06-02 → 2015-02-09 (-113d) | 2015-06-03 → 2015-02-09 (-114d) | 2d → 1d? |  | 0d → 113d | 459 → none |  |
| 461 | **Onda 2 - Termo de Aceite - Realização** | 2015-06-03 → 2015-02-09 (-114d) | 2015-06-03 → 2015-02-09 (-114d) | 0d → 1d? |  | 0d → 113d |  |  |
| 462 | Onda 2 - Assinatura Fase 3 - Realização - VID | 2015-06-03 → 2015-02-09 (-114d) | 2015-06-03 → 2015-02-09 (-114d) | 0d → 1d? |  | 0d → 113d | 460 → none |  |
| 463 | **Fase 4 - Preparação Final** | 2015-04-13 → 2015-02-09 (-63d) | 2015-07-10 → 2015-02-09 (-151d) | 60d → 1d? |  | 8d → 113d |  | baseline start 2013-11-13 → none; baseline finish 2013-11-22 → none |
| 464 | **Testes Funcionais** | 2015-04-13 → 2015-02-09 (-63d) | 2015-06-10 → 2015-02-09 (-121d) | 38d → 1d? |  | 32d → 113d |  |  |
| 465 | **Gestão de Competência VID** | 2015-04-13 → 2015-02-09 (-63d) | 2015-04-15 → 2015-02-09 (-65d) | 3d → 1d? |  | 67d → 113d |  |  |
| 466 | Realizar Testes Funcionais - VID | 2015-04-13 → 2015-02-09 (-63d) | 2015-04-13 → 2015-02-09 (-63d) | 1d → 1d? |  | 67d → 113d | 446 → none |  |
| 467 | Ajustes Testes Funcionais - VID | 2015-04-14 → 2015-02-09 (-64d) | 2015-04-15 → 2015-02-09 (-65d) | 2d → 1d? |  | 67d → 113d | 466 → none |  |
| 468 | Onda 1 - Entrega Testes Funcionais - VID | 2015-04-15 → 2015-02-09 (-65d) | 2015-04-15 → 2015-02-09 (-65d) | 0d → 1d? |  | 67d → 113d | 467 → none |  |
| 469 | **Gestão de Metas VID** | 2015-06-08 → 2015-02-09 (-119d) | 2015-06-10 → 2015-02-09 (-121d) | 3d → 1d? |  | 32d → 113d |  |  |
| 470 | Realizar Testes Funcionais - VID | 2015-06-08 → 2015-02-09 (-119d) | 2015-06-08 → 2015-02-09 (-119d) | 1d → 1d? |  | 32d → 113d | 460 → none |  |
| 471 | Ajustes Testes Funcionais - VID | 2015-06-09 → 2015-02-09 (-120d) | 2015-06-10 → 2015-02-09 (-121d) | 2d → 1d? |  | 32d → 113d | 470 → none |  |
| 472 | Onda 2 - Entrega Testes Funcionais - VID | 2015-06-10 → 2015-02-09 (-121d) | 2015-06-10 → 2015-02-09 (-121d) | 0d → 1d? |  | 32d → 113d | 471 → none |  |
| 473 | **Testes Unitários** | 2015-04-27 → 2015-02-09 (-77d) | 2015-06-24 → 2015-02-09 (-135d) | 40d → 1d? |  | none → 113d |  |  |
| 474 | **Gestão de Competência VID** | 2015-04-27 → 2015-02-09 (-77d) | 2015-04-29 → 2015-02-09 (-79d) | 3d → 1d? |  | 37d → 113d |  |  |
| 475 | Realizar Testes Unitários - VID | 2015-04-27 → 2015-02-09 (-77d) | 2015-04-27 → 2015-02-09 (-77d) | 1d → 1d? |  | 37d → 113d |  | constraint start no earlier than 2015-04-27 → none |
| 476 | Ajustes Testes Unitários - VID | 2015-04-28 → 2015-02-09 (-78d) | 2015-04-29 → 2015-02-09 (-79d) | 2d → 1d? |  | 37d → 113d | 475 → none |  |
| 477 | Onda 1 - Entrega Testes Unitários - VID | 2015-04-29 → 2015-02-09 (-79d) | 2015-04-29 → 2015-02-09 (-79d) | 0d → 1d? |  | 37d → 113d | 476 → none |  |
| 478 | **Gestão de Metas VID** | 2015-04-27 → 2015-02-09 (-77d) | 2015-06-24 → 2015-02-09 (-135d) | 40d? → 1d? |  | 0d → 113d |  |  |
| 479 | Realizar Testes Unitários - VID | 2015-06-19 → 2015-02-09 (-130d) | 2015-06-22 → 2015-02-09 (-133d) | 2d → 1d? |  | 0d → 113d |  | constraint start no earlier than 2015-06-19 → none |
| 480 | Ajustes de Testes Unitários - VID | 2015-06-23 → 2015-02-09 (-134d) | 2015-06-24 → 2015-02-09 (-135d) | 2d → 1d? |  | 0d → 113d | 479 → none |  |
| 481 | Onda 2 - Entrega Testes Unitários - VID | 2015-04-27 → 2015-02-09 (-77d) | 2015-04-27 → 2015-02-09 (-77d) |  |  | 39d → 113d |  |  |
| 482 | **Testes Integrados** | 2015-05-04 → 2015-02-09 (-84d) | 2015-07-10 → 2015-02-09 (-151d) | 48d → 1d? |  | 0d → 113d |  |  |
| 483 | **Gestão de Competência VID** | 2015-05-04 → 2015-02-09 (-84d) | 2015-05-15 → 2015-02-09 (-95d) | 10d → 1d? |  | 0d → 113d |  |  |
| 484 | Testes Integrados VID | 2015-05-04 → 2015-02-09 (-84d) | 2015-05-08 → 2015-02-09 (-88d) | 5d → 1d? |  | -71d → 113d |  | constraint start no earlier than 2015-05-04 → none |
| 485 | Ajustes Testes Integrados VID | 2015-05-11 → 2015-02-09 (-91d) | 2015-05-15 → 2015-02-09 (-95d) | 5d → 1d? |  | -71d → 113d | 484 → none |  |
| 486 | **Onda 1 - Termo de Aceite Fase 4** | 2015-05-15 → 2015-02-09 (-95d) | 2015-05-15 → 2015-02-09 (-95d) | 0d → 1d? |  | 48d → 113d |  |  |
| 487 | Onda 1 - Assinatura Fase 4 - Preparação Final - VID | 2015-05-15 → 2015-02-09 (-95d) | 2015-05-15 → 2015-02-09 (-95d) | 0d → 1d? |  | 48d → 113d | 485 → none |  |
| 488 | **Gestão de Metas VID** | 2015-06-29 → 2015-02-09 (-140d) | 2015-07-10 → 2015-02-09 (-151d) | 10d → 1d? |  | 0d → 113d |  |  |
| 489 | Testes Integrados VID | 2015-06-29 → 2015-02-09 (-140d) | 2015-07-03 → 2015-02-09 (-144d) | 5d → 1d? |  | 0d → 113d |  | constraint start no earlier than 2015-06-29 → none |
| 490 | Ajustes Testes Integrados VID | 2015-07-06 → 2015-02-09 (-147d) | 2015-07-10 → 2015-02-09 (-151d) | 5d → 1d? |  | 0d → 113d | 489 → none |  |
| 491 | **Termo de Aceite Fase 4** | 2015-07-10 → 2015-02-09 (-151d) | 2015-07-10 → 2015-02-09 (-151d) | 0d → 1d? |  | 10d → 113d |  |  |
| 492 | Onda 2 - Assinatura Fase 4 - Preparação Final - VID | 2015-07-10 → 2015-02-09 (-151d) | 2015-07-10 → 2015-02-09 (-151d) | 0d → 1d? |  | 10d → 113d | 490 → none |  |
| 493 | **Fase 5 - Go Live e Operacao Assistida** | 2015-05-18 → 2015-02-09 (-98d) | 2015-07-24 → 2015-02-09 (-165d) | 48d → 1d? |  | 0d → 113d |  | baseline start 2013-11-25 → none; baseline finish 2013-12-25 → none |
| 494 | **Go Live - Onda 1 - Gestão de Competência** | 2015-05-18 → 2015-02-09 (-98d) | 2015-07-24 → 2015-02-09 (-165d) | 48d → 1d? |  | none → 113d |  |  |
| 495 | Treinamento | 2015-05-18 → 2015-02-09 (-98d) | 2015-05-22 → 2015-02-09 (-102d) | 5d → 1d? |  | 35d → 113d | 390 → none |  |
| 496 | Cutover | 2015-05-25 → 2015-02-09 (-105d) | 2015-05-29 → 2015-02-09 (-109d) | 5d → 1d? |  | 35d → 113d | 589 → none |  |
| 497 | Onda 1 - Go Live | 2015-05-29 → 2015-02-09 (-109d) | 2015-05-29 → 2015-02-09 (-109d) | 0d → 1d? |  | 38d → 113d | 496 → none |  |
| 498 | Operação Assistida | 2015-06-01 → 2015-02-09 (-112d) | 2015-06-03 → 2015-02-09 (-114d) | 3d → 1d? |  | 35d → 113d | 496 → none |  |
| 499 | **Go Live - Onda 2 - Gestão de Metas** | 2015-07-13 → 2015-02-09 (-154d) | 2015-07-24 → 2015-02-09 (-165d) | 10d → 1d? |  | 0d → 113d |  |  |
| 500 | Treinamento | 2015-07-13 → 2015-02-09 (-154d) | 2015-07-17 → 2015-02-09 (-158d) | 5d → 1d? |  | 5d → 113d | 395 → none |  |
| 501 | Cutover | 2015-07-13 → 2015-02-09 (-154d) | 2015-07-17 → 2015-02-09 (-158d) | 5d → 1d? |  | 0d → 113d | 490 → none |  |
| 502 | Onda 2 - Go Live | 2015-07-17 → 2015-02-09 (-158d) | 2015-07-17 → 2015-02-09 (-158d) | 0d → 1d? |  | 5d → 113d | 501 → none |  |
| 503 | Operação Assistida | 2015-07-20 → 2015-02-09 (-161d) | 2015-07-24 → 2015-02-09 (-165d) | 5d → 1d? |  | 0d → 113d | 501 → none |  |
| 504 | **(4) Projeto Metas e Competência - VE** | 2015-02-09 A | 2015-07-24 → 2015-03-06 (-140d) | 104d → 20d? | 0% → 35% | none → 94d |  | baseline start 2012-11-05 → none; baseline finish 2013-12-24 → none |
| 505 | **Fase 1 - Preparação do Projeto** | 2015-02-09 A | 2015-02-20 → 2015-02-23 A (+3d) |  | 0% → 100% |  |  | baseline start 2012-11-05 → none; baseline finish 2013-01-16 → none |
| 506 | Confirmação e Mobilização de Equipe | 2015-02-09 A | 2015-02-18 A |  | 0% → 100% | 0d → none |  | constraint start no earlier than 2015-02-09 → none |
| 507 | Reunião Pré Kick-off | 2015-02-19 A | 2015-02-19 A |  | 0% → 100% | 0d → none |  |  |
| 508 | Kick-Off | 2015-02-20 A | 2015-02-20 A |  | 0% → 100% | 0d → none |  |  |
| 509 | Identificação dos Usuários | 2015-02-19 A | 2015-02-20 A |  | 0% → 100% | 0d → none |  |  |
| 510 | **Termo de Aceite Fase 1** | 2015-02-20 → 2015-02-23 A (+3d) | 2015-02-20 → 2015-02-23 A (+3d) |  | 0% → 100% | 0d → none |  |  |
| 511 | Assinatura Fase 1 - Preparação do Projeto | 2015-02-20 → 2015-02-23 A (+3d) | 2015-02-20 → 2015-02-23 A (+3d) |  | 0% → 100% | 0d → none |  |  |
| 512 | **Fase 2 - Business Blueprint** | 2015-02-23 A |  |  | 0% → 92% | none → 94d |  | baseline start 2013-01-10 → none; baseline finish 2013-08-30 → none |
| 513 | **Levantamento Gestão de Metas** | 2015-02-23 A |  |  | 0% → 95% | 0d → 99d |  |  |
| 514 | Mapeamento dos Processos | 2015-02-23 A | 2015-02-25 A |  | 0% → 100% | 0d → none |  |  |
| 515 | Elaboração dos BBPs | 2015-02-26 A | 2015-02-26 A |  | 0% → 100% | 5d → none |  |  |
| 516 | Ajustes / Aprovação dos BBPs | 2015-02-27 A |  |  | 0% → 75% | 5d → 99d |  |  |
| 517 | **Levantamento Gestão de Competência** | 2015-02-26 A |  |  | 0% → 90% | 0d → 94d |  |  |
| 518 | Mapeamento dos Processos | 2015-02-26 A | 2015-03-03 A |  | 0% → 100% | 0d → none |  |  |
| 519 | **Elaboração dos BBPs** | 2015-03-04 A | 2015-03-04 A |  | 0% → 100% | 0d → none |  |  |
| 520 | EP | 2015-03-04 A | 2015-03-04 A |  | 0% → 100% | 2d → none |  |  |
| 521 | PDI | 2015-03-04 A | 2015-03-04 A |  | 0% → 100% | 2d → none |  |  |
| 522 | Competência | 2015-03-04 A | 2015-03-04 A |  | 0% → 100% | 0d → none |  |  |
| 523 | Sucessão | 2015-03-04 A | 2015-03-04 A |  | 0% → 100% | 0d → none |  |  |
| 524 | **Ajustes / Aprovação dos BBPs** | 2015-03-05 A |  |  | 0% → 75% | 0d → 94d |  |  |
| 525 | EP | 2015-03-05 A |  |  | 0% → 75% | 0d → 0.75d |  |  |

| ID | Task | Start | Finish | Duration | Complete | Total float | Predecessors | Other |
| --- | --- | --- | --- | --- | --- | --- | --- | --- |
| 526 | PDI | 2015-03-06 A |  |  | 0% → 75% | 0d → 94d |  |  |
| 527 | Competência | 2015-03-05 A |  |  | 0% → 75% | 0d → 0.75d |  |  |
| 528 | Sucessão | 2015-03-06 A |  |  | 0% → 75% | 0d → 94d |  |  |
| 531 | **Faze 3 - Realização** | 2015-03-23 → 2015-02-09 (-42d) | 2015-06-03 → 2015-02-09 (-114d) | 48.5d → 1d? |  | 35.5d → 113d |  | baseline start 2013-08-26 → none; baseline finish 2013-11-15 → none |
| 532 | **Gestão de Competência VE** | 2015-03-23 → 2015-02-09 (-42d) | 2015-04-10 → 2015-02-09 (-60d) | 14d → 1d? |  | 70d → 113d |  |  |
| 533 | Configurar EP (Employee Profile) - VE | 2015-03-23 → 2015-02-09 (-42d) | 2015-03-27 → 2015-02-09 (-46d) | 5d → 1d? |  | 70d → 113d |  | constraint start no earlier than 2015-03-23 → none |
| 534 | Configurar PDI (Palno de Desenvolvimento Individual) - VE | 2015-03-23 → 2015-02-09 (-42d) | 2015-03-27 → 2015-02-09 (-46d) | 5d → 1d? |  | 70d → 113d |  | constraint start no earlier than 2015-03-23 → none |
| 535 | Configurar Sucessão - VE | 2015-03-30 → 2015-02-09 (-49d) | 2015-04-06 → 2015-02-09 (-56d) | 5d → 1d? |  | 74d → 113d | 533, 534 → none |  |
| 536 | Configurar PM - VE | 2015-03-30 → 2015-02-09 (-49d) | 2015-04-08 → 2015-02-09 (-58d) | 7d → 1d? |  | 70d → 113d | 533, 534 → none |  |
| 537 | **Configurar Relatórios** | 2015-04-09 → 2015-02-09 (-59d) | 2015-04-10 → 2015-02-09 (-60d) | 2d → 1d? |  | 70d → 113d |  |  |
| 538 | Cópia dos Relatórios da VC - VE | 2015-04-09 → 2015-02-09 (-59d) | 2015-04-09 → 2015-02-09 (-59d) | 0.5d → 1d? |  | 70d → 113d | 536 → none |  |
| 539 | Escala - Descrição e Pontuação - VE | 2015-04-09 → 2015-02-09 (-59d) | 2015-04-09 → 2015-02-09 (-59d) | 0.5d → 1d? |  | 70d → 113d | 538 → none |  |
| 540 | Comparativo entre Desempenho na Função e Crenças - VE | 2015-04-10 → 2015-02-09 (-60d) | 2015-04-10 → 2015-02-09 (-60d) | 1d → 1d? |  | 70d → 113d | 539 → none |  |
| 541 | **Termo de Aceite Fase 3 - Realização** | 2015-04-10 → 2015-02-09 (-60d) | 2015-04-10 → 2015-02-09 (-60d) | 0d → 1d? |  | 70d → 113d |  |  |
| 542 | Onda 1 - Assinatura Fase 3 - Realização - VE | 2015-04-10 → 2015-02-09 (-60d) | 2015-04-10 → 2015-02-09 (-60d) | 0d → 1d? |  | 70d → 113d | 540 → none |  |
| 543 | **Gestão de Metas VE** | 2015-05-26 → 2015-02-09 (-106d) | 2015-06-03 → 2015-02-09 (-114d) | 6.5d → 1d? |  | 35.5d → 113d |  |  |
| 544 | Alteração de label na instância | 2015-05-26 → 2015-02-09 (-106d) | 2015-05-26 → 2015-02-09 (-106d) | 0.5d → 1d? |  | 35.5d → 113d | 578 → none | constraint start no earlier than 2015-05-26 → none |
| 545 | Configurar o mapa de rota | 2015-05-26 → 2015-02-09 (-106d) | 2015-05-26 → 2015-02-09 (-106d) | 0.5d → 1d? |  | 35.5d → 113d | 544 → none |  |
| 546 | Configurar Formulários | 2015-05-27 → 2015-02-09 (-107d) | 2015-05-27 → 2015-02-09 (-107d) | 1d → 1d? |  | 35.5d → 113d | 545 → none |  |
| 547 | Configurar permissões | 2015-05-28 → 2015-02-09 (-108d) | 2015-05-28 → 2015-02-09 (-108d) | 0.5d → 1d? |  | 35.5d → 113d | 546 → none |  |
| 548 | Definir layout para importar a Biblioteca de Metas | 2015-05-28 → 2015-02-09 (-108d) | 2015-05-28 → 2015-02-09 (-108d) | 0.5d → 1d? |  | 35.5d → 113d | 547 → none |  |
| 549 | Definir layout para carga de empregados | 2015-05-29 → 2015-02-09 (-109d) | 2015-05-29 → 2015-02-09 (-109d) | 0.5d → 1d? |  | 35.5d → 113d | 548 → none |  |
| 550 | Passar para Votorantim informações para carga de fotos | 2015-05-29 → 2015-02-09 (-109d) | 2015-05-29 → 2015-02-09 (-109d) | 0.5d → 1d? |  | 35.5d → 113d | 549 → none |  |
| 551 | Fazer a carga de metas | 2015-06-01 → 2015-02-09 (-112d) | 2015-06-01 → 2015-02-09 (-112d) | 0.5d → 1d? |  | 35.5d → 113d | 550 → none |  |
| 552 | Fazer a carga de empregados | 2015-06-01 → 2015-02-09 (-112d) | 2015-06-01 → 2015-02-09 (-112d) | 0.5d → 1d? |  | 35.5d → 113d | 551 → none |  |
| 553 | Agendar job para carga de fotos | 2015-06-02 → 2015-02-09 (-113d) | 2015-06-02 → 2015-02-09 (-113d) | 0.5d → 1d? |  | 35.5d → 113d | 552 → none |  |
| 554 | Configurar Relatórios | 2015-06-02 → 2015-02-09 (-113d) | 2015-06-03 → 2015-02-09 (-114d) | 1d → 1d? |  | 35.5d → 113d | 553 → none |  |
| 555 | **Onda 2 - Termo de Aceite - Realização** | 2015-06-03 → 2015-02-09 (-114d) | 2015-06-03 → 2015-02-09 (-114d) | 0d → 1d? |  | 35.5d → 113d |  |  |
| 556 | Onda 2 - Assinatura Fase 3 - Realização - VE | 2015-06-03 → 2015-02-09 (-114d) | 2015-06-03 → 2015-02-09 (-114d) | 0d → 1d? |  | 35.5d → 113d | 554 → none |  |
| 557 | **Fase 4 - Preparação Final** | 2015-04-16 → 2015-02-09 (-66d) | 2015-07-10 → 2015-02-09 (-151d) | 57d → 1d? |  | 10d → 113d |  | baseline start 2013-11-04 → none; baseline finish 2013-11-21 → none |
| 558 | **Testes Funcionais** | 2015-04-16 → 2015-02-09 (-66d) | 2015-06-12 → 2015-02-09 (-123d) | 37d → 1d? |  | 30d → 113d |  |  |
| 559 | **Gestão de Competência VE** | 2015-04-16 → 2015-02-09 (-66d) | 2015-04-17 → 2015-02-09 (-67d) | 2d → 1d? |  | 65d → 113d |  |  |
| 560 | Realizar Testes Funcionais - VE | 2015-04-16 → 2015-02-09 (-66d) | 2015-04-16 → 2015-02-09 (-66d) | 1d → 1d? |  | 65d → 113d |  | constraint start no earlier than 2015-04-16 → none |
| 561 | Ajustes Testes Funcionais - VE | 2015-04-17 → 2015-02-09 (-67d) | 2015-04-17 → 2015-02-09 (-67d) | 1d → 1d? |  | 65d → 113d | 560 → none |  |
| 562 | Onda 1 - Entrega Testes Funcionais - VE | 2015-04-17 → 2015-02-09 (-67d) | 2015-04-17 → 2015-02-09 (-67d) | 0d → 1d? |  | 65d → 113d | 561 → none |  |
| 563 | **Gestão de Metas VE** | 2015-06-11 → 2015-02-09 (-122d) | 2015-06-12 → 2015-02-09 (-123d) | 2d → 1d? |  | 30d → 113d |  |  |
| 564 | Realizar Testes Funcionais - VE | 2015-06-11 → 2015-02-09 (-122d) | 2015-06-11 → 2015-02-09 (-122d) | 1d → 1d? |  | 30d → 113d |  | constraint start no earlier than 2015-06-11 → none |
| 565 | Ajustes Testes Funcionais - VE | 2015-06-12 → 2015-02-09 (-123d) | 2015-06-12 → 2015-02-09 (-123d) | 1d → 1d? |  | 30d → 113d | 564 → none |  |
| 566 | Onda 2 - Entrega Testes Funcionais - VE | 2015-06-12 → 2015-02-09 (-123d) | 2015-06-12 → 2015-02-09 (-123d) | 0d → 1d? |  | 30d → 113d | 565 → none |  |
| 567 | **Testes Unitários** | 2015-04-28 → 2015-02-09 (-78d) | 2015-06-26 → 2015-02-09 (-137d) | 41d → 1d? |  | 20d → 113d |  |  |
| 568 | **Gestão de Competência VE** | 2015-04-28 → 2015-02-09 (-78d) | 2015-04-30 → 2015-02-09 (-80d) | 3d → 1d? |  | 35d → 113d |  |  |
| 569 | Realizar Testes Unitários - VE | 2015-04-28 → 2015-02-09 (-78d) | 2015-04-28 → 2015-02-09 (-78d) | 1d → 1d? |  | 35d → 113d |  | constraint start no earlier than 2015-04-28 → none |
| 570 | Ajustes Testes Unitários - VE | 2015-04-29 → 2015-02-09 (-79d) | 2015-04-30 → 2015-02-09 (-80d) | 2d → 1d? |  | 35d → 113d | 569 → none |  |
| 571 | Onda 1 - Entrega Testes Unitários - VE | 2015-04-30 → 2015-02-09 (-80d) | 2015-04-30 → 2015-02-09 (-80d) | 0d → 1d? |  | 58d → 113d | 570 → none |  |
| 572 | **Gestão de Metas VE** | 2015-06-23 → 2015-02-09 (-134d) | 2015-06-26 → 2015-02-09 (-137d) | 4d → 1d? |  | 0d → 113d |  |  |
| 573 | Realizar Testes Unitários - VE | 2015-06-23 → 2015-02-09 (-134d) | 2015-06-24 → 2015-02-09 (-135d) | 2d → 1d? |  | 0d → 113d |  | constraint start no earlier than 2015-06-23 → none |
| 574 | Ajustes de Testes Unitários - VE | 2015-06-25 → 2015-02-09 (-136d) | 2015-06-26 → 2015-02-09 (-137d) | 2d → 1d? |  | 0d → 113d | 573 → none |  |
| 575 | Onda 2 - Entrega Testes Unitários - VE | 2015-06-26 → 2015-02-09 (-137d) | 2015-06-26 → 2015-02-09 (-137d) | 0d → 1d? |  | 20d → 113d | 574 → none |  |
| 576 | **Testes Integrados** | 2015-05-04 → 2015-02-09 (-84d) | 2015-07-10 → 2015-02-09 (-151d) | 48d → 1d? |  | 10d → 113d |  |  |
| 577 | **Gestão de Competência VE** | 2015-05-04 → 2015-02-09 (-84d) | 2015-05-15 → 2015-02-09 (-95d) | 10d → 1d? |  | 35d → 113d |  |  |
| 578 | Testes Integrados VE | 2015-05-04 → 2015-02-09 (-84d) | 2015-05-08 → 2015-02-09 (-88d) | 5d → 1d? |  | 35d → 113d | 570 → none |  |
| 579 | Ajustes Testes Integrados VE | 2015-05-11 → 2015-02-09 (-91d) | 2015-05-15 → 2015-02-09 (-95d) | 5d → 1d? |  | 35d → 113d | 578 → none |  |
| 580 | **Onda 1 - Termo de Aceite Fase 4** | 2015-05-15 → 2015-02-09 (-95d) | 2015-05-15 → 2015-02-09 (-95d) | 0d → 1d? |  | 48d → 113d |  |  |
| 581 | Onda 1 - Assinatura Fase 4 - Preparação Final - VE | 2015-05-15 → 2015-02-09 (-95d) | 2015-05-15 → 2015-02-09 (-95d) | 0d → 1d? |  | 48d → 113d | 579 → none |  |
| 582 | **Gestão de Metas VE** | 2015-06-29 → 2015-02-09 (-140d) | 2015-07-10 → 2015-02-09 (-151d) | 10d → 1d? |  | 0d → 113d |  |  |
| 583 | Testes Integrados VE | 2015-06-29 → 2015-02-09 (-140d) | 2015-07-03 → 2015-02-09 (-144d) | 5d → 1d? |  | 0d → 113d | 574 → none |  |
| 584 | Ajustes Testes Integrados VE | 2015-07-06 → 2015-02-09 (-147d) | 2015-07-10 → 2015-02-09 (-151d) | 5d → 1d? |  | 0d → 113d | 583 → none |  |
| 585 | **Termo de Aceite Fase 4** | 2015-07-10 → 2015-02-09 (-151d) | 2015-07-10 → 2015-02-09 (-151d) | 0d → 1d? |  | 10d → 113d |  |  |
| 586 | Onda 2 - Assinatura Fase 4 - Preparação Final - VE | 2015-07-10 → 2015-02-09 (-151d) | 2015-07-10 → 2015-02-09 (-151d) | 0d → 1d? |  | 10d → 113d | 584 → none |  |
| 587 | **Fase 5 - Go Live e Operacao Assistida** | 2015-05-18 → 2015-02-09 (-98d) | 2015-07-24 → 2015-02-09 (-165d) | 48d → 1d? |  | 0d → 113d |  | baseline start 2013-11-22 → none; baseline finish 2013-12-24 → none |
| 588 | **Go Live - Onda 1 - Gestão de Competência** | 2015-05-18 → 2015-02-09 (-98d) | 2015-06-03 → 2015-02-09 (-114d) | 13d → 1d? |  | 35d → 113d |  |  |
| 589 | Treinamento | 2015-05-18 → 2015-02-09 (-98d) | 2015-05-22 → 2015-02-09 (-102d) | 5d → 1d? |  | 35d → 113d | 485 → none |  |
| 590 | Cutover | 2015-05-25 → 2015-02-09 (-105d) | 2015-05-29 → 2015-02-09 (-109d) | 5d → 1d? |  | 35d → 113d | Treinamento → none |  |
| 591 | Onda 1 - Go Live | 2015-05-29 → 2015-02-09 (-109d) | 2015-05-29 → 2015-02-09 (-109d) | 0d → 1d? |  | 38d → 113d | 590 → none |  |
| 592 | Operação Assistida | 2015-06-01 → 2015-02-09 (-112d) | 2015-06-03 → 2015-02-09 (-114d) | 3d → 1d? |  | 35d → 113d | 590 → none |  |
| 593 | **Go Live - Onda 2 - Gestão de Metas** | 2015-07-13 → 2015-02-09 (-154d) | 2015-07-24 → 2015-02-09 (-165d) | 10d → 1d? |  | 0d → 113d |  |  |
| 594 | Treinamento | 2015-07-13 → 2015-02-09 (-154d) | 2015-07-17 → 2015-02-09 (-158d) | 5d → 1d? |  | 5d → 113d | 490 → none |  |
| 595 | Cutover | 2015-07-13 → 2015-02-09 (-154d) | 2015-07-17 → 2015-02-09 (-158d) | 5d → 1d? |  | 0d → 113d | 584 → none |  |
| 596 | Onda 2 - Go Live | 2015-07-17 → 2015-02-09 (-158d) | 2015-07-17 → 2015-02-09 (-158d) | 0d → 1d? |  | 5d → 113d | 595 → none |  |
| 597 | Operação Assistida | 2015-07-20 → 2015-02-09 (-161d) | 2015-07-24 → 2015-02-09 (-165d) | 5d → 1d? |  | 0d → 113d | 595 → none |  |

## Version 3 (data date 2015-04-02, saved 2015-04-02, file 2_Onda 1_Projeto Gestão de Competências_v2.mpp)

Note of the change: Inicial

Last finish 2015-07-24 → 2015-06-03 (-51d). Complete tasks 67 → 90.

Added:

| ID | Task | Duration | Start | Finish | Predecessors | Resources |
| --- | --- | --- | --- | --- | --- | --- |
| 49 | **Configurar PM - VS** | 4d | 2015-03-30 A | 2015-04-02 |  |  |
| 50 | Learning Agility | 1d | 2015-03-30 A | 2015-03-30 A | 34 | HRST 1 |
| 51 | Desempenho na Função e Crenças | 1d | 2015-03-31 A | 2015-03-31 | 50 | HRST 1 |
| 52 | Metas, Desempenho na Função e Crenças | 1d | 2015-04-01 | 2015-04-01 | 51 | HRST 1 |
| 53 | Pré Comitê | 1d | 2015-04-02 | 2015-04-02 | 52 | HRST 1 |
| 54 | **Configurar PM - VID São Paulo e CTB** | 4d | 2015-03-30 A | 2015-04-02 |  |  |
| 55 | Metas, Desempenho na Função e Crenças | 1d | 2015-03-30 A | 2015-03-30 | 40 | HRST 2 |
| 56 | Desempenho na Função e Crenças | 1d | 2015-03-31 | 2015-03-31 | 55 | HRST 2 |
| 57 | Pré Comitê | 1d | 2015-04-01 | 2015-04-01 | 56 | HRST 2 |
| 58 | Learning Agility | 1d | 2015-04-02 | 2015-04-02 | 57 | HRST 2 |
| 59 | **Configurar PM - VM** | 3d | 2015-04-06 | 2015-04-08 |  |  |
| 60 | Metas, Desempenho na Função e Crenças | 1d | 2015-04-06 | 2015-04-06 | 58 | HRST 3 |
| 61 | Desempenho na Função e Crenças | 1d | 2015-04-07 | 2015-04-07 | 60 | HRST 3 |
| 62 | Pré Comitê | 0.5d | 2015-04-08 | 2015-04-08 | 61 | HRST 3 |
| 63 | Learning Agility | 0.5d | 2015-04-08 | 2015-04-08 | 62 | HRST 3 |
| 64 | **Configurar PM - VE** | 3d | 2015-04-07 | 2015-04-09 |  |  |
| 65 | Metas, Desempenho na Função e Crenças | 1d | 2015-04-07 | 2015-04-07 | 46 | HRST 2 |
| 66 | Desempenho na Função e Crenças | 1d | 2015-04-08 | 2015-04-08 | 65 | HRST 2 |
| 67 | Pré Comitê | 0.5d | 2015-04-09 | 2015-04-09 | 66 | HRST 2 |
| 68 | Learning Agility | 0.5d | 2015-04-09 | 2015-04-09 | 67 | HRST 2 |
| 131 | Conclusão Validação do Material de Treinamento | 0d | 2015-05-15 | 2015-05-15 | 130 |  |
| 133 | Onda 1 - Conclusão do Treinamento | 0d | 2015-05-22 | 2015-05-22 | 132 |  |
| 363 | Desenvolvimento Abap - Ajustes Integração | 9d | 2015-03-30 | 2015-04-10 | 355, 356 | ABAP 1; ABAP 2 |

Removed: 51 Configurar PM - VID São Paulo e Curitiba; 63 Gestão de Metas; 65 Alteração de label na instância; 66 Configurar o mapa de rota; 67 Configurar Formulários; 68 Configurar permissões; 69 Definir layout para importar a Biblioteca de Metas; 70 Definir layout para carga de empregados; 71 Passar para Votorantim informações para carga de fotos; 72 Fazer a carga de metas; 73 Fazer a carga de empregados; 74 Agendar job para carga de fotos; 75 Configurar Relatórios; 76 Onda 2 - Entrega Fase 3 - Realização - VS; 78 Alteração de label na instância; 79 Configurar o mapa de rota; 80 Configurar Formulários; 81 Configurar permissões; 82 Definir layout para importar a Biblioteca de Metas; 83 Definir layout para carga de empregados; 84 Passar para Votorantim informações para carga de fotos; 85 Fazer a carga de metas; 86 Fazer a carga de empregados; 87 Agendar job para carga de fotos; 88 Configurar Relatórios; 89 Onda 2 - Entrega Fase 3 - Realização - VM; 91 Alteração de label na instância; 92 Configurar o mapa de rota; 93 Configurar Formulários; 94 Configurar permissões; 95 Definir layout para importar a Biblioteca de Metas; 96 Definir layout para carga de empregados; 97 Passar para Votorantim informações para carga de fotos; 98 Fazer a carga de metas; 99 Fazer a carga de empregados; 100 Agendar job para carga de fotos; 101 Configurar Relatórios; 102 Onda 2 - Entrega Fase 3 - Realização - VID São Paulo e Curitiba; 104 Alteração de label na instância; 105 Configurar o mapa de rota; 106 Configurar Formulários; 107 Configurar permissões; 108 Definir layout para importar a Biblioteca de Metas; 109 Definir layout para carga de empregados; 110 Passar para Votorantim informações para carga de fotos; 111 Fazer a carga de metas; 112 Fazer a carga de empregados; 113 Agendar job para carga de fotos; 114 Configurar Relatórios; 115 Onda 2 - Entrega Fase 3 - Realização - VE; 116 Termo de Aceite Fase 3; 117 Onda 2 - Entrega Final Fase 3 - Realização; 135 Gestão de Metas; 136 VS; 137 Realizar Testes Funcionais; 138 Ajustes Testes Funcionais; 139 VM; 140 Realizar Testes Funcionais; 141 Ajustes Testes Funcionais; 142 Onda 2 - Entrega Testes Funcionais - VS e VM; 143 VID São Paulo e Curitiba; 144 Realizar Testes Funcionais; 145 Ajustes Testes Funcionais; 146 VE; 147 Realizar Testes Funcionais; 148 Ajustes Testes Funcionais; 149 Onda 2 - Entrega Testes Funcionais - VID SP - VID CTB - VE; 152 VS; 155 VM; 159 VID São Paulo e Curitiba; 162 VE; 166 Gestão de Metas; 167 VS; 168 Realizar Testes Unitários; 169 Ajustes de Testes Unitários; 170 VM; 171 Realizar Testes Unitários; 172 Ajustes de Testes Unitários; 173 Onda 1 - Entrega Testes Unitários - VS e VM; 174 VID São Paulo e Curitiba; 175 Realizar Testes Unitários; 176 Ajustes de Testes Unitários; 177 VE; 178 Realizar Testes Unitários; 179 Ajustes de Testes Unitários; 180 Onda 2 - Entrega Testes Unitários - VID SP - VID CTB - VE; 194 Gestão de Metas; 197 Testes Integrados VID São Paulo e Curitiba; 199 Ajustes Testes Integrados; 200 VS; 201 VM; 202 VID São Paulo e Curitiba; 203 VE; 204 Termo de Aceite Fase 4; 205 Onda 2 - Assinatura Fase 4 - Preparação Final - VS; 215 Go Live - Onda 2 - Gestão de Metas; 216 Treinamento; 217 Elaborar Material de Treinamento; 219 Treinamento - Realização; 221 Onda 2 - Go Live; 255 Configurar PM - VS; 263 Gestão de Metas VS; 264 Alteração de label na instância; 265 Configurar o mapa de rota; 266 Configurar Formulários; 267 Configurar permissões; 268 Definir layout para importar a Biblioteca de Metas; 269 Definir layout para carga de empregados; 270 Passar para Votorantim informações para carga de fotos; 271 Fazer a carga de metas; 272 Fazer a carga de empregados; 273 Agendar job para carga de fotos; 274 Configurar Relatórios; 275 Onda 2 - Termo de Aceite - Realização; 276 Onda 2 - Entrega Fase 3 - Realização - VS; 283 Gestão de Metas VS; 284 Realizar Testes Funcionais; 285 Ajustes Testes Funcionais; 286 Onda 2 - Entrega Testes Funcionais - VS; 292 Gestão de Metas VS; 293 Realizar Testes Unitários - VS; 294 Ajustes de Testes Unitários - VS; 295 Onda 2 - Entrega Testes Unitários - VS; 298 Testes Integrados VS; 302 Gestão de Metas VS; 309 Go Live - Onda 2 - Gestão de Metas; 312 Onda 2 - Go Live; 346 Configurar PM - VM; 354 Gestão de Metas VM; 355 Alteração de label na instância; 356 Configurar o mapa de rota; 357 Configurar Formulários; 358 Configurar permissões; 359 Definir layout para importar a Biblioteca de Metas; 360 Definir layout para carga de empregados; 361 Passar para Votorantim informações para carga de fotos; 362 Fazer a carga de metas; 363 Fazer a carga de empregados; 364 Agendar job para carga de fotos; 365 Configurar Relatórios; 366 Onda 2 - Termo de Aceite - Realização; 367 Onda 2 - Assinatura Fase 3 - Realização - VM; 374 Gestão de Metas VM; 375 Realizar Testes Funcionais; 376 Ajustes Testes Funcionais; 377 Onda 2 - Entrega Testes Funcionais - VM; 383 Gestão de Metas VM; 384 Realizar Testes Unitários - VM; 385 Ajustes de Testes Unitários - VM; 386 Onda 2 - Entrega Testes Unitários - VM; 389 Testes Integrados VM; 393 Gestão de Metas VM; 394 Testes Integrados VM; 395 Ajustes Testes Integrados VM; 396 Termo de Aceite Fase 4; 397 Onda 2 - Assinatura Fase 4 - Preparação Final - VM; 404 Go Live - Onda 2 - Gestão de Metas; 406 Cutover; 407 Onda 2 - Go Live; 408 Operação Assistida; 449 Gestão de Metas VID; 450 Alteração de label na instância; 451 Configurar o mapa de rota; 452 Configurar Formulários; 453 Configurar permissões; 454 Definir layout para importar a Biblioteca de Metas; 455 Definir layout para carga de empregados; 456 Passar para Votorantim informações para carga de fotos; 457 Fazer a carga de metas; 458 Fazer a carga de empregados; 459 Agendar job para carga de fotos; 460 Configurar Relatórios; 461 Onda 2 - Termo de Aceite - Realização; 462 Onda 2 - Assinatura Fase 3 - Realização - VID; 469 Gestão de Metas VID; 470 Realizar Testes Funcionais - VID; 471 Ajustes Testes Funcionais - VID; 472 Onda 2 - Entrega Testes Funcionais - VID; 478 Gestão de Metas VID; 479 Realizar Testes Unitários - VID; 480 Ajustes de Testes Unitários - VID; 481 Onda 2 - Entrega Testes Unitários - VID; 488 Gestão de Metas VID; 489 Testes Integrados VID; 490 Ajustes Testes Integrados VID; 491 Termo de Aceite Fase 4; 492 Onda 2 - Assinatura Fase 4 - Preparação Final - VID; 495 Treinamento; 496 Cutover; 498 Operação Assistida; 499 Go Live - Onda 2 - Gestão de Metas; 500 Treinamento; 501 Cutover; 502 Onda 2 - Go Live; 503 Operação Assistida; 536 Configurar PM - VE; 543 Gestão de Metas VE; 544 Alteração de label na instância; 545 Configurar o mapa de rota; 546 Configurar Formulários; 547 Configurar permissões; 548 Definir layout para importar a Biblioteca de Metas; 549 Definir layout para carga de empregados; 550 Passar para Votorantim informações para carga de fotos; 551 Fazer a carga de metas; 552 Fazer a carga de empregados; 553 Agendar job para carga de fotos; 554 Configurar Relatórios; 555 Onda 2 - Termo de Aceite - Realização; 556 Onda 2 - Assinatura Fase 3 - Realização - VE; 563 Gestão de Metas VE; 564 Realizar Testes Funcionais - VE; 565 Ajustes Testes Funcionais - VE; 566 Onda 2 - Entrega Testes Funcionais - VE; 572 Gestão de Metas VE; 573 Realizar Testes Unitários - VE; 574 Ajustes de Testes Unitários - VE; 575 Onda 2 - Entrega Testes Unitários - VE; 578 Testes Integrados VE; 582 Gestão de Metas VE; 583 Testes Integrados VE; 584 Ajustes Testes Integrados VE; 585 Termo de Aceite Fase 4; 586 Onda 2 - Assinatura Fase 4 - Preparação Final - VE; 589 Treinamento; 590 Cutover; 592 Operação Assistida; 593 Go Live - Onda 2 - Gestão de Metas; 594 Treinamento; 595 Cutover; 596 Onda 2 - Go Live; 597 Operação Assistida

Changed:

| ID | Task | Start | Finish | Duration | Complete | Total float | Predecessors | Other |
| --- | --- | --- | --- | --- | --- | --- | --- | --- |
| 1 | **Projeto Metas e Competência SuccessFactors** |  | 2015-07-24 → 2015-06-03 (-51d) | 114d → 69d | 12% → 24% |  |  | baseline start none → 2015-02-09; baseline finish none → 2015-06-03 |
| 2 | **Fase 1 - Preparação do Projeto** |  |  |  |  |  |  | baseline start none → 2015-02-09; baseline finish none → 2015-02-20 |
| 3 | Confirmação e Mobilização de Equipe |  |  |  |  |  |  | resources none → Rodney; baseline start none → 2015-02-09; baseline finish none → 2015-02-18 |
| 4 | Reunião Pré Kick-off |  |  |  |  |  |  | resources none → Leonardo; Rodney; baseline start none → 2015-02-19; baseline finish none → 2015-02-19 |
| 5 | Kick-Off |  |  |  |  |  |  | resources none → TI Votorantim; baseline start none → 2015-02-20; baseline finish none → 2015-02-20 |
| 6 | Identificação dos Usuários |  |  |  |  |  |  | resources none → Leonardo; Rodney; baseline start none → 2015-02-19; baseline finish none → 2015-02-20 |
| 7 | **Termo de Aceite Fase 1** |  |  |  |  |  |  | baseline start none → 2015-02-20; baseline finish none → 2015-02-20 |
| 8 | Assinatura Fase 1 - Preparação do Projeto |  |  |  |  |  |  | baseline start none → 2015-02-20; baseline finish none → 2015-02-20 |
| 9 | **Fase 2 - Business Blueprint** |  |  |  | 93% → 90% | 94d → 49d |  | baseline start none → 2015-02-23; baseline finish none → 2015-03-06 |
| 10 | **Levantamento Gestão de Metas** |  | 2015-02-27 A → 2015-02-27 |  | 100% → 90% | none → 54d |  | baseline start none → 2015-02-23; baseline finish none → 2015-02-27 |
| 11 | Mapeamento dos Processos |  |  |  |  |  |  | resources none → HRST 1; HRST 2; Rodney; baseline start none → 2015-02-23; baseline finish none → 2015-02-25 |
| 12 | Elaboração dos BBPs |  |  |  |  |  |  | resources none → HRST 1; HRST 2; baseline start none → 2015-02-26; baseline finish none → 2015-02-26 |
| 13 | Ajustes / Aprovação dos BBPs |  | 2015-02-27 A → 2015-02-27 |  | 100% → 50% | none → 54d |  | resources none → HRST 1; HRST 2; Rodney; baseline start none → 2015-02-27; baseline finish none → 2015-02-27 |
| 14 | **Levantamento Gestão de Competência** |  |  |  |  | 94d → 49d |  | baseline start none → 2015-02-26; baseline finish none → 2015-03-06 |
| 15 | Mapeamento dos Processos |  |  |  |  |  |  | resources none → HRST 1; HRST 2; Rodney; baseline start none → 2015-02-26; baseline finish none → 2015-03-03 |
| 16 | **Elaboração dos BBPs** |  |  |  |  |  |  | baseline start none → 2015-03-04; baseline finish none → 2015-03-04 |
| 17 | EP |  |  |  |  |  |  | baseline start none → 2015-03-04; baseline finish none → 2015-03-04 |
| 18 | PDI |  |  |  |  |  |  | baseline start none → 2015-03-04; baseline finish none → 2015-03-04 |
| 19 | Competência |  |  |  |  |  |  | constraint none → start no earlier than 2015-03-04; baseline start none → 2015-03-04; baseline finish none → 2015-03-04 |
| 20 | Sucessão |  |  |  |  |  |  | baseline start none → 2015-03-04; baseline finish none → 2015-03-04 |
| 21 | **Ajustes / Aprovação dos BBPs** |  |  |  |  | 94d → 49d |  | baseline start none → 2015-03-05; baseline finish none → 2015-03-06 |
| 22 | EP |  |  |  |  |  |  | constraint none → start no earlier than 2015-03-05; baseline start none → 2015-03-05; baseline finish none → 2015-03-05 |
| 23 | PDI |  |  |  |  | 94d → 49d |  | baseline start none → 2015-03-06; baseline finish none → 2015-03-06 |
| 24 | Competência |  |  |  |  |  |  | constraint none → start no earlier than 2015-03-05; baseline start none → 2015-03-05; baseline finish none → 2015-03-05 |
| 25 | Sucesão |  |  |  |  | 94d → 49d |  | baseline start none → 2015-03-06; baseline finish none → 2015-03-06 |
| 26 | **Termo de Aceite Fase 2** | 2015-03-06 A → 2015-03-06 |  |  |  | 94d → 49d |  | baseline start none → 2015-03-06; baseline finish none → 2015-03-06 |
| 27 | Assinatura Fase 2 - Business Blueprint | 2015-03-06 A → 2015-03-06 |  |  | 50% → 0% | 94d → 49d |  | baseline start none → 2015-03-06; baseline finish none → 2015-03-06 |
| 28 | **Fase 3 - Realização** |  | 2015-06-03 → 2015-04-10 (-54d) | 49d → 14d | 13% → 35% |  |  | baseline start none → 2015-03-23; baseline finish none → 2015-04-10 |
| 29 | **Gestão de Competência** |  |  |  | 26% → 35% | 70d → 35d |  | baseline start none → 2015-03-23; baseline finish none → 2015-04-10 |
| 30 | **EP** |  | 2015-03-27 A |  | 75% → 100% | 79d → none |  | baseline start none → 2015-03-23; baseline finish none → 2015-03-27 |
| 31 | Configurar EP (Employee Profile) - VE |  | 2015-03-24 A |  | 75% → 100% | 0.75d → none |  | baseline start none → 2015-03-23; baseline finish none → 2015-03-24 |
| 32 | Configurar EP (Employee Profile) - VS |  | 2015-03-25 A |  | 75% → 100% | 0.75d → none |  | baseline start none → 2015-03-25; baseline finish none → 2015-03-25 |
| 33 | Configurar EP (Employee Profile) - VM |  | 2015-03-26 A |  | 75% → 100% | 0.75d → none |  | baseline start none → 2015-03-26; baseline finish none → 2015-03-26 |
| 34 | Configurar EP (Employee Profile) - VID São Paulo e Curitiba |  | 2015-03-27 A |  | 75% → 100% | 0d → none |  | baseline start none → 2015-03-27; baseline finish none → 2015-03-27 |
| 35 | Onda 1 - Entrega Fase 3 - Realização - EP |  | 2015-03-27 A |  | 75% → 100% | 79d → none |  | baseline start none → 2015-03-27; baseline finish none → 2015-03-27 |
| 36 | **PDI** |  | 2015-03-27 A → 2015-03-27 |  | 100% → 98% | none → 0.75d |  | baseline start none → 2015-03-23; baseline finish none → 2015-03-27 |
| 37 | Configurar PDI (Palno de Desenvolvimento Individual) - VS |  |  |  |  |  |  | baseline start none → 2015-03-23; baseline finish none → 2015-03-24 |
| 38 | Configurar PDI (Palno de Desenvolvimento Individual) - VE |  |  |  |  |  | 37 → 31 | baseline start none → 2015-03-25; baseline finish none → 2015-03-25 |
| 39 | Configurar PDI (Palno de Desenvolvimento Individual) - VM |  |  |  |  |  | 38 → 32 | baseline start none → 2015-03-26; baseline finish none → 2015-03-26 |
| 40 | Configurar PDI (Palno de Desenvolvimento Individual) - VID São Paulo e Curitiba |  | 2015-03-27 A → 2015-03-27 |  | 100% → 90% | none → 0.75d | 39 → 33 | baseline start none → 2015-03-27; baseline finish none → 2015-03-27 |
| 41 | Onda 1 - Entrega Fase 3 - Realização - PDI |  |  |  |  |  |  | baseline start none → 2015-03-27; baseline finish none → 2015-03-27 |
| 42 | **Sucessão** |  |  |  | 25% → 55% | 74d → 39d |  | baseline start none → 2015-03-30; baseline finish none → 2015-04-06 |
| 43 | Configurar Sucessão - VS |  |  |  | 25% → 50% | 0.25d → 0.5d |  | constraint none → start no earlier than 2015-03-30; baseline start none → 2015-03-30; baseline finish none → 2015-03-31 |
| 44 | Configurar Sucessão - VM |  |  |  | 25% → 50% | 0.25d → 0.75d |  | baseline start none → 2015-04-01; baseline finish none → 2015-04-01 |
| 45 | Configurar Sucessão - VID São Paulo e Curitiba |  |  |  | 25% → 75% | 0.25d → 0.5d |  | baseline start none → 2015-04-02; baseline finish none → 2015-04-02 |
| 46 | Configurar Sucessão - VE |  |  |  | 25% → 50% | 71d → 36d |  | baseline start none → 2015-04-06; baseline finish none → 2015-04-06 |
| 47 | Onda 1 - Entrega Fase 3 - Realização - Sucessão |  |  |  |  | 74d → 39d |  | baseline start none → 2015-04-06; baseline finish none → 2015-04-06 |
| 48 | **PM** |  |  |  | 7% → 17% | 71d → 36d |  | baseline start none → 2015-03-30; baseline finish none → 2015-04-09 |
| 69 | Onda 1 - Entrega Fase 3 - Realização - PM | 2015-04-08 → 2015-04-09 (+1d) | 2015-04-08 → 2015-04-09 (+1d) |  |  | 72d → 36d | 358 → 68 | baseline start none → 2015-04-09; baseline finish none → 2015-04-09 |
| 70 | **Relatórios** |  |  |  |  | 70d → 35d |  | baseline start none → 2015-04-06; baseline finish none → 2015-04-10 |
| 71 | Configurar Relatórios - VS |  |  |  |  | 70d → 35d | 169 → 49 | baseline start none → 2015-04-06; baseline finish none → 2015-04-07 |
| 72 | Configurar Relatórios - VM |  |  |  |  | 70d → 35d |  | baseline start none → 2015-04-08; baseline finish none → 2015-04-08 |
| 73 | Configurar Relatórios - VID São Paulo e Curitiba |  |  |  |  | 70d → 35d |  | baseline start none → 2015-04-09; baseline finish none → 2015-04-09 |
| 74 | Configurar Relatórios - VE |  |  |  |  | 70d → 35d |  | baseline start none → 2015-04-10; baseline finish none → 2015-04-10 |
| 75 | Onda 1 - Entrega Fase 3 - Realização - Relatórios |  |  |  |  | 70d → 35d |  | baseline start none → 2015-04-10; baseline finish none → 2015-04-10 |
| 76 | Desenvolvimento Abap - Ajustes Integração |  |  |  |  |  |  | baseline start none → 2015-03-30; baseline finish none → 2015-04-10 |
| 77 | **Onda 1 - Termo de Aceite Fase 3 - Realização** |  |  |  |  | 70d → 35d |  | baseline start none → 2015-04-10; baseline finish none → 2015-04-10 |
| 78 | Onda 1 - Assinatura Fase 3 - Realização |  |  |  |  | 70d → 35d |  | baseline start none → 2015-04-10; baseline finish none → 2015-04-10 |
| 79 | **Fase 4 - Preparação Final** |  | 2015-07-10 → 2015-05-15 (-56d) | 60d → 22d |  |  |  | baseline start none → 2015-04-13; baseline finish none → 2015-05-15 |
| 80 | **Testes Funcionais** |  | 2015-06-12 → 2015-04-17 (-56d) | 40d → 5d |  |  |  | baseline start none → 2015-04-13; baseline finish none → 2015-04-17 |
| 81 | **Gestão de Competência** |  |  |  |  |  |  | baseline start none → 2015-04-13; baseline finish none → 2015-04-17 |
| 82 | **VS** | 2015-05-11 → 2015-04-13 (-28d) | 2015-05-25 → 2015-04-15 (-40d) | 11d → 3d |  | 10.5d → 0d |  | baseline start none → 2015-04-13; baseline finish none → 2015-04-15 |
| 83 | Realizar Testes Funcionais - VS |  |  |  |  |  |  | baseline start none → 2015-04-13; baseline finish none → 2015-04-13 |
| 84 | Ajustes Testes Funcionais - VS |  |  |  |  |  |  | baseline start none → 2015-04-14; baseline finish none → 2015-04-15 |
| 85 | **VM** | 2015-05-11 → 2015-04-13 (-28d) | 2015-05-25 → 2015-04-15 (-40d) | 11d → 3d |  | 42d → 32d |  | baseline start none → 2015-04-13; baseline finish none → 2015-04-15 |
| 86 | Realizar Testes Funcionais - VM |  |  |  |  | 67d → 32d |  | baseline start none → 2015-04-13; baseline finish none → 2015-04-13 |
| 87 | Ajustes Testes Funcionais - VM |  |  |  |  | 67d → 32d |  | baseline start none → 2015-04-14; baseline finish none → 2015-04-15 |
| 88 | Onda 1 - Entrega Testes Funcionais - VS e VM |  |  |  |  | 67d → 32d |  | baseline start none → 2015-04-15; baseline finish none → 2015-04-15 |
| 89 | **VID São Paulo e Curitiba** | 2015-05-18 → 2015-04-13 (-35d) | 2015-06-03 → 2015-04-15 (-49d) | 13d → 3d |  | 0d → 32d |  | baseline start none → 2015-04-13; baseline finish none → 2015-04-15 |
| 90 | Realizar Testes Funcionais - VID |  |  |  |  | 67d → 32d |  | baseline start none → 2015-04-13; baseline finish none → 2015-04-13 |

| ID | Task | Start | Finish | Duration | Complete | Total float | Predecessors | Other |
| --- | --- | --- | --- | --- | --- | --- | --- | --- |
| 91 | Ajustes Testes Funcionais - VID |  |  |  |  | 67d → 32d |  | baseline start none → 2015-04-14; baseline finish none → 2015-04-15 |
| 92 | **VE** | 2015-05-26 → 2015-04-16 (-40d) | 2015-06-03 → 2015-04-17 (-47d) | 6.5d → 2d |  | 10.5d → 0d |  | baseline start none → 2015-04-16; baseline finish none → 2015-04-17 |
| 93 | Realizar Testes Funcionais - VE |  |  |  |  |  |  | baseline start none → 2015-04-16; baseline finish none → 2015-04-16 |
| 94 | Ajustes Testes Funcionais - VE |  |  |  |  |  |  | baseline start none → 2015-04-17; baseline finish none → 2015-04-17 |
| 95 | Onda 1 - Entrega Testes Funcionais - VID SP - VID CTB - VE |  |  |  |  | 65d → 30d |  | baseline start none → 2015-04-17; baseline finish none → 2015-04-17 |
| 96 | **Testes Unitários** |  | 2015-06-26 → 2015-04-30 (-57d) | 45d → 7d |  |  |  | baseline start none → 2015-04-22; baseline finish none → 2015-04-30 |
| 97 | **Gestão de Competência** |  |  |  |  |  |  | baseline start none → 2015-04-22; baseline finish none → 2015-04-30 |
| 98 | **VS** | 2015-04-13 → 2015-04-22 (+9d) | 2015-04-15 → 2015-04-28 (+13d) | 3d → 5d |  |  |  | baseline start none → 2015-04-22; baseline finish none → 2015-04-28 |
| 99 | Realizar Testes Unitários |  |  |  |  |  |  | resources none → HRST 1; Juraci Silva; baseline start none → 2015-04-22; baseline finish none → 2015-04-23 |
| 100 | Ajustes Testes Unitários |  |  |  |  | 60d → 25d |  | resources none → HRST 1; baseline start none → 2015-04-24; baseline finish none → 2015-04-28 |
| 101 | **VM** | 2015-04-13 → 2015-04-24 (+11d) | 2015-04-15 → 2015-04-28 (+13d) |  |  | 67d → 0d |  | baseline start none → 2015-04-24; baseline finish none → 2015-04-28 |
| 102 | Realizar Testes Unitários |  |  |  |  |  |  | resources none → HRST 2; Juraci Silva; baseline start none → 2015-04-24; baseline finish none → 2015-04-24 |
| 103 | Ajustes Testes Unitários |  |  |  |  | 60d → 25d |  | resources none → HRST 2; baseline start none → 2015-04-27; baseline finish none → 2015-04-28 |
| 104 | Onda 1 - Entrega Testes Unitários - VS e VM |  |  |  |  | 60d → 25d |  | baseline start none → 2015-04-28; baseline finish none → 2015-04-28 |
| 105 | **VID São Paulo e Curitiba** | 2015-04-13 → 2015-04-27 (+14d) | 2015-04-15 → 2015-04-29 (+14d) |  |  | 67d → 0d |  | baseline start none → 2015-04-27; baseline finish none → 2015-04-29 |
| 106 | Realizar Testes Unitários |  |  |  |  |  |  | resources none → HRST 3; Juraci Silva; baseline start none → 2015-04-27; baseline finish none → 2015-04-27 |
| 107 | Ajustes Testes Unitários |  |  |  |  | 59d → 24d |  | resources none → HRST 3; baseline start none → 2015-04-28; baseline finish none → 2015-04-29 |
| 108 | **VE** | 2015-04-16 → 2015-04-28 (+12d) | 2015-04-17 → 2015-04-30 (+13d) | 2d → 3d |  |  |  | baseline start none → 2015-04-28; baseline finish none → 2015-04-30 |
| 109 | Realizar Testes Unitários |  |  |  |  |  |  | resources none → HRST 2; Juraci Silva; baseline start none → 2015-04-28; baseline finish none → 2015-04-28 |
| 110 | Ajustes Testes Unitários |  |  |  |  |  |  | resources none → HRST 2; baseline start none → 2015-04-29; baseline finish none → 2015-04-30 |
| 111 | Onda 1 - Entrega Testes Unitários - VID SP - VID CTB - VE |  |  |  |  | 58d → 23d |  | baseline start none → 2015-04-30; baseline finish none → 2015-04-30 |
| 112 | **Testes Integrados** |  | 2015-07-10 → 2015-05-15 (-56d) | 48d → 10d |  |  |  | baseline start none → 2015-05-04; baseline finish none → 2015-05-15 |
| 113 | **Gestão de Competência** |  |  |  |  |  |  | baseline start none → 2015-05-04; baseline finish none → 2015-05-15 |
| 114 | Testes Integrados VS |  |  |  |  | 48d → 13d |  | resources none → VS; Rodney; baseline start none → 2015-05-04; baseline finish none → 2015-05-08 |
| 115 | Testes Integrados VM |  |  |  |  | 48d → 13d |  | resources none → VM; Rodney; baseline start none → 2015-05-04; baseline finish none → 2015-05-08 |
| 116 | Testes Integrados VID São Paulo e Curitiba |  |  |  |  | 48d → 13d |  | resources none → Rodney; VID Curitiba; VID São Paulo; baseline start none → 2015-05-04; baseline finish none → 2015-05-08 |
| 117 | Testes Integrados VE |  |  |  |  |  |  | resources none → Rodney; VE; baseline start none → 2015-05-04; baseline finish none → 2015-05-08 |
| 118 | **Ajustes Testes Integrados** |  |  |  |  |  |  | baseline start none → 2015-05-11; baseline finish none → 2015-05-15 |
| 119 | VS |  |  |  |  | 48d → 13d |  | resources none → HRST 1; baseline start none → 2015-05-11; baseline finish none → 2015-05-15 |
| 120 | VM |  |  |  |  | 48d → 13d |  | resources none → HRST 1; baseline start none → 2015-05-11; baseline finish none → 2015-05-15 |
| 121 | VID São Paulo e Curitiba |  |  |  |  | 48d → 13d |  | resources none → HRST 1; baseline start none → 2015-05-11; baseline finish none → 2015-05-15 |
| 122 | VE |  |  |  |  |  |  | resources none → HRST 1; baseline start none → 2015-05-11; baseline finish none → 2015-05-15 |
| 123 | **Termo de Aceite Fase 4** |  |  |  |  | 48d → 13d |  | baseline start none → 2015-05-15; baseline finish none → 2015-05-15 |
| 124 | Onda 1 - Assinatura Fase 4 - Preparação Final |  |  |  |  | 48d → 13d |  | baseline start none → 2015-05-15; baseline finish none → 2015-05-15 |
| 125 | **Fase 5 - Go Live e Operação Assistida** |  | 2015-07-24 → 2015-06-03 (-51d) | 70d → 35d |  |  |  | baseline start none → 2015-04-13; baseline finish none → 2015-06-03 |
| 126 | **Go Live - Onda 1 - Gestão de Competência** |  |  |  |  | 35d → 0d |  | baseline start none → 2015-04-13; baseline finish none → 2015-06-03 |
| 127 | **Treinamento** |  |  |  |  | 43d → 8d |  | baseline start none → 2015-04-13; baseline finish none → 2015-05-22 |
| 128 | Elaborar Material de Treinamento |  |  |  |  | 48d → 13d |  | resources none → HRST 1; HRST 2; HRST 3; baseline start none → 2015-04-13; baseline finish none → 2015-04-30 |
| 129 | Validação/Ajustes Material de Treinamento | 2015-05-04 → 2015-04-30 (-4d) | 2015-05-15 → 2015-04-30 (-15d) | 10d → 0d |  | 48d → 13d |  | baseline start none → 2015-04-30; baseline finish none → 2015-04-30 |
| 130 | Validação/Ajustes Material de Treinamento | 2015-06-26 → 2015-05-04 (-53d) | 2015-07-10 → 2015-05-15 (-56d) |  |  | 10.5d → 13d | Elaborar Material de Treinamento → 129 | resources none → HRST 1; HRST 2; HRST 3; baseline start none → 2015-05-04; baseline finish none → 2015-05-15 |
| 132 | Treinamento - Realização |  |  |  |  | 35d → 0d |  | resources none → HRST 1; baseline start none → 2015-05-18; baseline finish none → 2015-05-22 |
| 134 | Cutover |  |  |  |  | 35d → 0d |  | resources none → HRST 1; HRST 2; HRST 3; Rodney; baseline start none → 2015-05-25; baseline finish none → 2015-05-29 |
| 135 | Onda 1 - Go Live |  |  |  |  | 38d → 3d |  | baseline start none → 2015-05-29; baseline finish none → 2015-05-29 |
| 136 | Operação Assistida |  |  |  |  | 35d → 0d |  | resources none → HRST 1; HRST 2; HRST 3; Rodney; baseline start none → 2015-06-01; baseline finish none → 2015-06-03 |
| 137 | **(1) Projeto Metas e Competência - VS** |  | 2015-03-06 → 2015-06-03 (+89d) | 20d? → 69d | 37% → 45% | 94d → 0d |  | baseline start none → 2015-02-09; baseline finish none → 2015-06-03 |
| 138 | **Fase 1 - Preparação do Projeto** |  |  | 10d? → 10d |  |  |  | baseline start none → 2015-02-09; baseline finish none → 2015-02-20 |
| 139 | Confirmação e Mobilização de Equipe |  |  |  |  |  |  | resources none → Rodney; baseline start none → 2015-02-09; baseline finish none → 2015-02-18 |
| 140 | Reunião Pré Kick-off |  |  |  |  |  |  | resources none → Leonardo; Rodney; baseline start none → 2015-02-19; baseline finish none → 2015-02-19 |
| 141 | Kick-off |  |  |  |  |  |  | resources none → TI Votorantim; baseline start none → 2015-02-20; baseline finish none → 2015-02-20 |
| 142 | Identificação dos Usuários |  |  |  |  |  |  | resources none → Leonardo; Rodney; baseline start none → 2015-02-19; baseline finish none → 2015-02-20 |
| 143 | **Termo de Aceite Fase 1** | 2015-02-09 A → 2015-02-20 A (+11d) | 2015-02-09 A → 2015-02-20 A (+11d) | 1d? → 0d |  |  |  | baseline start none → 2015-02-20; baseline finish none → 2015-02-20 |
| 144 | Assiantura Fase 1 - Preparação do Projeto | 2015-02-09 A → 2015-02-20 A (+11d) | 2015-02-09 A → 2015-02-20 A (+11d) | 1d? → 0d |  |  | none → 142 | baseline start none → 2015-02-20; baseline finish none → 2015-02-20 |
| 145 | **Fase 2 - Business Blueprint** |  |  |  | 92% → 95% | 94d → 49d |  | baseline start none → 2015-02-23; baseline finish none → 2015-03-06 |
| 146 | **Levantamento Gestão de Metas** |  |  |  |  | 99d → 54d |  | baseline start none → 2015-02-23; baseline finish none → 2015-02-27 |
| 147 | Mapeamento dos Processos |  |  |  |  |  |  | resources none → HRST 1; HRST 2; Rodney; baseline start none → 2015-02-23; baseline finish none → 2015-02-25 |
| 148 | Elaboração dos BBPs |  |  |  |  |  |  | resources none → HRST 1; HRST 2; baseline start none → 2015-02-26; baseline finish none → 2015-02-26 |
| 149 | Ajustes / Aprovação dos BBPs |  |  |  |  | 99d → 54d |  | resources none → HRST 1; HRST 2; Rodney; baseline start none → 2015-02-27; baseline finish none → 2015-02-27 |
| 150 | **Levantamento Gestão de Competência** |  |  |  | 90% → 95% | 94d → 49d |  | baseline start none → 2015-02-26; baseline finish none → 2015-03-06 |
| 151 | Mapeamento dos Processos |  |  |  |  |  |  | resources none → HRST 1; HRST 2; Rodney; baseline start none → 2015-02-26; baseline finish none → 2015-03-03 |
| 152 | **Elaboração dos BBPs** |  |  |  |  |  |  | baseline start none → 2015-03-04; baseline finish none → 2015-03-04 |
| 153 | EP |  |  |  |  |  |  | resources none → HRST 1; baseline start none → 2015-03-04; baseline finish none → 2015-03-04 |
| 154 | PDI |  |  |  |  |  |  | resources none → HRST 1; baseline start none → 2015-03-04; baseline finish none → 2015-03-04 |
| 155 | Competência |  |  |  |  |  |  | resources none → HRST 2; baseline start none → 2015-03-04; baseline finish none → 2015-03-04 |
| 156 | Sucessão |  |  |  |  |  |  | resources none → HRST 2; baseline start none → 2015-03-04; baseline finish none → 2015-03-04 |
| 157 | **Ajustes / Aprovação dos BBPs** |  |  |  | 75% → 88% | 94d → 49d |  | baseline start none → 2015-03-05; baseline finish none → 2015-03-06 |
| 158 | EP |  | 2015-03-05 A |  | 75% → 100% | 0.75d → none |  | resources none → HRST 1; baseline start none → 2015-03-05; baseline finish none → 2015-03-05 |
| 159 | PDI |  | 2015-03-06 A |  | 75% → 100% | 94d → none |  | resources none → HRST 1; baseline start none → 2015-03-06; baseline finish none → 2015-03-06 |
| 160 | Competência |  |  |  |  |  |  | resources none → HRST 2; baseline start none → 2015-03-05; baseline finish none → 2015-03-05 |
| 161 | Sucessão |  |  |  |  | 94d → 49d |  | resources none → HRST 2; baseline start none → 2015-03-06; baseline finish none → 2015-03-06 |
| 162 | **Termo de Aceite Fase 2** |  |  |  |  | 94d → 49d |  | baseline start none → 2015-03-06; baseline finish none → 2015-03-06 |

| ID | Task | Start | Finish | Duration | Complete | Total float | Predecessors | Other |
| --- | --- | --- | --- | --- | --- | --- | --- | --- |
| 163 | Assinatura Fase 2 - Business Blueprint |  |  |  |  | 94d → 49d |  | baseline start none → 2015-03-06; baseline finish none → 2015-03-06 |
| 164 | **Fase 3 - Realização** | 2015-02-09 → 2015-03-23 A (+42d) | 2015-02-09 → 2015-04-10 (+60d) | 1d? → 14d | 0% → 45% | 113d → 35d |  | baseline start none → 2015-03-23; baseline finish none → 2015-04-10 |
| 165 | **Gestão de Competência VS** | 2015-02-09 → 2015-03-23 A (+42d) | 2015-02-09 → 2015-04-10 (+60d) | 1d? → 14d | 0% → 45% | 113d → 35d |  | baseline start none → 2015-03-23; baseline finish none → 2015-04-10 |
| 166 | Configurar EP (Employee Profile) - VS | 2015-02-09 → 2015-03-23 A (+42d) | 2015-02-09 → 2015-03-27 A (+46d) | 1d? → 5d | 0% → 100% | 113d → none |  | constraint none → start no earlier than 2015-03-23; resources none → HRST 1; baseline start none → 2015-03-23; baseline finish none → 2015-03-27 |
| 167 | Configurar PDI (Palno de Desenvolvimento Individual) - VS | 2015-02-09 → 2015-03-23 A (+42d) | 2015-02-09 → 2015-03-27 A (+46d) | 1d? → 5d | 0% → 100% | 113d → none |  | constraint none → start no earlier than 2015-03-23; resources none → HRST 2; baseline start none → 2015-03-23; baseline finish none → 2015-03-27 |
| 168 | Configurar Sucessão - VS | 2015-02-09 → 2015-03-30 A (+49d) | 2015-02-09 → 2015-04-06 (+56d) | 1d? → 5d | 0% → 50% | 113d → 39d | none → 166, 167 | resources none → HRST 3; baseline start none → 2015-03-30; baseline finish none → 2015-04-06 |
| 169 | Configurar PM - VS |  | 2015-04-02 → 2015-04-08 (+6d) | 4d → 7d | 13% → 35% | 70d → 32d | 34 → 166, 167 | resources HRST 1 → HRST 1; HRST 2; HRST 3; baseline start none → 2015-03-30; baseline finish none → 2015-04-08 |
| 170 | **Configurar Relatórios** | 2015-02-09 → 2015-04-09 (+59d) | 2015-02-09 → 2015-04-10 (+60d) | 1d? → 2d |  | 113d → 32d |  | baseline start none → 2015-04-09; baseline finish none → 2015-04-10 |
| 171 | Cópia dos Relatórios da VC - VS | 2015-02-09 → 2015-04-09 (+59d) | 2015-02-09 → 2015-04-09 (+59d) | 1d? → 0.5d |  | 113d → 32d | none → 169 | resources none → HRST 1; baseline start none → 2015-04-09; baseline finish none → 2015-04-09 |
| 172 | Escala - Descrição e Pontuação - VS | 2015-02-09 → 2015-04-09 (+59d) | 2015-02-09 → 2015-04-09 (+59d) | 1d? → 0.5d |  | 113d → 32d | none → 171 | resources none → HRST 1; baseline start none → 2015-04-09; baseline finish none → 2015-04-09 |
| 173 | Comparativo entre Desempenho na Função e Crenças - VS | 2015-02-09 → 2015-04-10 (+60d) | 2015-02-09 → 2015-04-10 (+60d) | 1d? → 1d |  | 113d → 32d | none → 172 | resources none → HRST 1; baseline start none → 2015-04-10; baseline finish none → 2015-04-10 |
| 174 | Desenvolvimento Abap - Ajustes Integração | 2015-02-09 → 2015-03-30 (+49d) | 2015-02-09 → 2015-04-10 (+60d) | 1d? → 9d |  | 113d → 35d | none → 166, 167 | resources none → HRST 1; baseline start none → 2015-03-30; baseline finish none → 2015-04-10 |
| 175 | **Termo de Aceite Fase 3 - Realização** | 2015-02-09 → 2015-04-10 (+60d) | 2015-02-09 → 2015-04-10 (+60d) | 1d? → 0d |  | 113d → 35d |  | baseline start none → 2015-04-10; baseline finish none → 2015-04-10 |
| 176 | Onda 1 - Assinatura Fase 3 - Realização - VS | 2015-02-09 → 2015-04-10 (+60d) | 2015-02-09 → 2015-04-10 (+60d) | 1d? → 0d |  | 113d → 35d | none → 174 | baseline start none → 2015-04-10; baseline finish none → 2015-04-10 |
| 177 | **Fase 4 - Preparação Final** | 2015-02-09 → 2015-04-13 (+63d) | 2015-02-09 → 2015-05-15 (+95d) | 1d? → 22d |  | 113d → 12d |  | baseline start none → 2015-04-13; baseline finish none → 2015-05-15 |
| 178 | **Testes Funcionais** | 2015-02-09 → 2015-04-13 (+63d) | 2015-02-09 → 2015-04-15 (+65d) | 1d? → 3d |  | 113d → 32d |  | baseline start none → 2015-04-13; baseline finish none → 2015-04-15 |
| 179 | **Gestão de Competência VS** | 2015-02-09 → 2015-04-13 (+63d) | 2015-02-09 → 2015-04-15 (+65d) | 1d? → 3d |  | 113d → 32d |  | baseline start none → 2015-04-13; baseline finish none → 2015-04-15 |
| 180 | Realizar Testes Funcionais - VS | 2015-02-09 → 2015-04-13 (+63d) | 2015-02-09 → 2015-04-13 (+63d) | 1d? → 1d |  | 113d → 32d | none → 173 | resources none → HRST 1; baseline start none → 2015-04-13; baseline finish none → 2015-04-13 |
| 181 | Ajustes Testes Funcionais - VS | 2015-02-09 → 2015-04-14 (+64d) | 2015-02-09 → 2015-04-15 (+65d) | 1d? → 2d |  | 113d → 32d | none → 180 | resources none → HRST 1; baseline start none → 2015-04-14; baseline finish none → 2015-04-15 |
| 182 | Onda 1 - Entrega Testes Funcionais - VS | 2015-02-09 → 2015-04-15 (+65d) | 2015-02-09 → 2015-04-15 (+65d) | 1d? → 0d |  | 113d → 32d | none → 181 | baseline start none → 2015-04-15; baseline finish none → 2015-04-15 |
| 183 | **Testes Unitários** | 2015-02-09 → 2015-04-22 (+72d) | 2015-02-09 → 2015-04-28 (+78d) | 1d? → 5d |  | 113d → 25d |  | baseline start none → 2015-04-22; baseline finish none → 2015-04-28 |
| 184 | **Gestão de Competência VS** | 2015-02-09 → 2015-04-22 (+72d) | 2015-02-09 → 2015-04-28 (+78d) | 1d? → 5d |  | 113d → 25d |  | baseline start none → 2015-04-22; baseline finish none → 2015-04-28 |
| 185 | Realizar Testes Unitários - VS | 2015-02-09 → 2015-04-22 (+72d) | 2015-02-09 → 2015-04-23 (+73d) | 1d? → 2d |  | 113d → 25d |  | constraint none → start no earlier than 2015-04-22; resources none → HRST 1; Juraci Silva; baseline start none → 2015-04-22; baseline finish none → 2015-04-23 |
| 186 | Ajustes Testes Unitários - VS | 2015-02-09 → 2015-04-24 (+74d) | 2015-02-09 → 2015-04-28 (+78d) | 1d? → 3d |  | 113d → 25d | none → 185 | resources none → HRST 1; baseline start none → 2015-04-24; baseline finish none → 2015-04-28 |
| 187 | Onda 1 - Entrega Testes Unitários - VS | 2015-02-09 → 2015-04-28 (+78d) | 2015-02-09 → 2015-04-28 (+78d) | 1d? → 0d |  | 113d → 25d | none → 186 | baseline start none → 2015-04-28; baseline finish none → 2015-04-28 |
| 188 | **Testes Integrados** | 2015-02-09 → 2015-05-04 (+84d) | 2015-02-09 → 2015-05-15 (+95d) | 1d? → 10d |  | 113d → 0d |  | baseline start none → 2015-05-04; baseline finish none → 2015-05-15 |
| 189 | **Gestão de Competência VS** | 2015-02-09 → 2015-05-04 (+84d) | 2015-02-09 → 2015-05-15 (+95d) | 1d? → 10d |  | 113d → 0d |  | baseline start none → 2015-05-04; baseline finish none → 2015-05-15 |
| 190 | Testes Integrados VS | 2015-06-29 → 2015-05-04 (-56d) | 2015-07-03 → 2015-05-08 (-56d) |  |  | 10d → 0d | Ajustes de Testes Unitários → none | constraint none → start no earlier than 2015-05-04; resources none → VS; Rodney; baseline start none → 2015-05-04; baseline finish none → 2015-05-08 |
| 191 | Ajustes Testes Integrados VS | 2015-02-09 → 2015-05-11 (+91d) | 2015-02-09 → 2015-05-15 (+95d) | 1d? → 5d |  | 113d → 0d | none → 190 | resources none → HRST 1; baseline start none → 2015-05-11; baseline finish none → 2015-05-15 |
| 192 | **Onda 1 - Termo de Aceite Fase 4** | 2015-02-09 → 2015-05-15 (+95d) | 2015-02-09 → 2015-05-15 (+95d) | 1d? → 0d |  | 113d → 13d |  | baseline start none → 2015-05-15; baseline finish none → 2015-05-15 |
| 193 | Onda 1 - Assinatura Fase 4 - Preparação Final - VS | 2015-02-09 → 2015-05-15 (+95d) | 2015-02-09 → 2015-05-15 (+95d) | 1d? → 0d |  | 113d → 13d | none → 191 | baseline start none → 2015-05-15; baseline finish none → 2015-05-15 |
| 194 | **Fase 5 - Go Live e Operacao Assistida** | 2015-02-09 → 2015-05-18 (+98d) | 2015-02-09 → 2015-06-03 (+114d) | 1d? → 13d |  | 113d → 0d |  | baseline start none → 2015-05-18; baseline finish none → 2015-06-03 |
| 195 | **Go Live - Onda 1 - Gestão de Competência** | 2015-02-09 → 2015-05-18 (+98d) | 2015-02-09 → 2015-06-03 (+114d) | 1d? → 13d |  | 113d → 0d |  | baseline start none → 2015-05-18; baseline finish none → 2015-06-03 |
| 196 | Treinamento | 2015-02-09 → 2015-05-18 (+98d) | 2015-02-09 → 2015-05-22 (+102d) | 1d? → 5d |  | 113d → 0d | none → 191 | resources none → HRST 1; baseline start none → 2015-05-18; baseline finish none → 2015-05-22 |
| 197 | Cutover | 2015-07-13 → 2015-05-25 (-49d) | 2015-07-17 → 2015-05-29 (-49d) |  |  |  | VE → 196 | resources none → HRST 1; HRST 2; HRST 3; Rodney; baseline start none → 2015-05-25; baseline finish none → 2015-05-29 |
| 198 | Onda 1 - Go Live | 2015-02-09 → 2015-05-29 (+109d) | 2015-02-09 → 2015-05-29 (+109d) | 1d? → 0d |  | 113d → 3d | none → 197 | baseline start none → 2015-05-29; baseline finish none → 2015-05-29 |
| 199 | Operação Assistida | 2015-07-20 → 2015-06-01 (-49d) | 2015-07-24 → 2015-06-03 (-51d) | 5d → 3d |  |  |  | resources none → HRST 1; HRST 2; HRST 3; Rodney; baseline start none → 2015-06-01; baseline finish none → 2015-06-03 |
| 200 | **(2) Projeto Metas e Competência - VM** |  | 2015-03-06 → 2015-06-03 (+89d) | 20d? → 69d | 35% → 46% | 94d → 0d |  | baseline start none → 2015-02-09; baseline finish none → 2015-06-03 |
| 201 | **Fase 1 - Preparação do Projeto** |  |  |  |  |  |  | baseline start none → 2015-02-09; baseline finish none → 2015-02-20 |
| 202 | Confirmação e Mobilização de Equipe |  |  |  |  |  |  | resources none → Rodney; baseline start none → 2015-02-09; baseline finish none → 2015-02-18 |
| 203 | Reunião Pré Kick-off |  |  |  |  |  |  | resources none → Leonardo; Rodney; baseline start none → 2015-02-19; baseline finish none → 2015-02-19 |
| 204 | Kick-Off |  |  |  |  |  |  | resources none → TI Votorantim; baseline start none → 2015-02-20; baseline finish none → 2015-02-20 |
| 205 | Identificação dos Usuários |  |  |  |  |  |  | resources none → Leonardo; Rodney; baseline start none → 2015-02-19; baseline finish none → 2015-02-20 |
| 206 | **Termo de Aceite Fase 1** |  |  |  |  |  |  | baseline start none → 2015-02-20; baseline finish none → 2015-02-20 |
| 207 | Assinatura Fase 1 - Preparação do Projeto |  |  |  |  |  |  | baseline start none → 2015-02-20; baseline finish none → 2015-02-20 |
| 208 | **Fase 2 - Business Blueprint** | 2015-02-09 A → 2015-02-23 A (+14d) |  | 20d? → 10d | 88% → 95% | 94d → 49d |  | baseline start none → 2015-02-23; baseline finish none → 2015-03-06 |
| 209 | **Levantamento Gestão de Metas** |  | 2015-02-27 A → 2015-02-27 |  | 100% → 95% | none → 54d |  | baseline start none → 2015-02-23; baseline finish none → 2015-02-27 |
| 210 | Mapeamento dos Processos |  |  |  |  |  |  | resources none → HRST 1; HRST 2; Rodney; baseline start none → 2015-02-23; baseline finish none → 2015-02-25 |
| 211 | Elaboração dos BBPs |  |  |  |  |  |  | resources none → HRST 1; HRST 2; baseline start none → 2015-02-26; baseline finish none → 2015-02-26 |
| 212 | Ajustes / Aprovação dos BBPs |  | 2015-02-27 A → 2015-02-27 |  | 100% → 75% | none → 54d |  | resources none → HRST 1; HRST 2; Rodney; baseline start none → 2015-02-27; baseline finish none → 2015-02-27 |
| 213 | **Levantamento Gestão de Competência** | 2015-02-09 A → 2015-02-26 A (+17d) |  | 20d? → 7d | 82% → 95% | 94d → 49d |  | baseline start none → 2015-02-26; baseline finish none → 2015-03-06 |
| 214 | Mapeamento dos Processos |  |  |  |  |  |  | resources none → HRST 1; HRST 2; Rodney; baseline start none → 2015-02-26; baseline finish none → 2015-03-03 |
| 215 | **Elaboração dos BBPs** |  |  |  |  |  |  | baseline start none → 2015-03-04; baseline finish none → 2015-03-04 |
| 216 | EP |  |  |  |  |  |  | resources none → HRST 1; baseline start none → 2015-03-04; baseline finish none → 2015-03-04 |
| 217 | PDI |  |  |  |  |  |  | resources none → HRST 1; baseline start none → 2015-03-04; baseline finish none → 2015-03-04 |
| 218 | Competência |  |  |  |  |  |  | resources none → HRST 2; baseline start none → 2015-03-04; baseline finish none → 2015-03-04 |
| 219 | Sucessão |  |  |  |  |  |  | resources none → HRST 2; baseline start none → 2015-03-04; baseline finish none → 2015-03-04 |
| 220 | **Ajustes / Aprovação dos BBPs** |  |  |  | 75% → 88% | 94d → 49d |  | baseline start none → 2015-03-05; baseline finish none → 2015-03-06 |
| 221 | EP |  | 2015-03-05 A |  | 75% → 100% | 0.75d → none |  | resources none → HRST 1; baseline start none → 2015-03-05; baseline finish none → 2015-03-05 |
| 222 | PDI |  | 2015-03-06 A |  | 75% → 100% | 94d → none |  | resources none → HRST 1; baseline start none → 2015-03-06; baseline finish none → 2015-03-06 |
| 223 | Competência |  |  |  |  |  |  | resources none → HRST 2; baseline start none → 2015-03-05; baseline finish none → 2015-03-05 |
| 224 | Sucessão |  |  |  |  | 94d → 49d |  | resources none → HRST 2; baseline start none → 2015-03-06; baseline finish none → 2015-03-06 |
| 225 | **Termo de Aceite Fase 2** | 2015-02-09 → 2015-03-06 (+25d) | 2015-02-09 → 2015-03-06 (+25d) | 1d? → 0d |  | 113d → 49d |  | baseline start none → 2015-03-06; baseline finish none → 2015-03-06 |
| 226 | Assinatura Fase 2 - Business Blueprint | 2015-02-09 → 2015-03-06 (+25d) | 2015-02-09 → 2015-03-06 (+25d) | 1d? → 0d |  | 113d → 49d | none → 224 | baseline start none → 2015-03-06; baseline finish none → 2015-03-06 |
| 227 | **Fase 3 - Realização** | 2015-02-09 → 2015-03-23 A (+42d) | 2015-02-09 → 2015-04-10 (+60d) | 1d? → 14d | 0% → 43% | 113d → 35d |  | baseline start none → 2015-03-23; baseline finish none → 2015-04-10 |
| 228 | **Gestão de Competência VM** | 2015-02-09 → 2015-03-23 A (+42d) | 2015-02-09 → 2015-04-10 (+60d) | 1d? → 14d | 0% → 43% | 113d → 35d |  | baseline start none → 2015-03-23; baseline finish none → 2015-04-10 |
| 229 | Configurar EP (Employee Profile) - VM | 2015-02-09 → 2015-03-23 A (+42d) | 2015-02-09 → 2015-03-27 A (+46d) | 1d? → 5d | 0% → 100% | 113d → none |  | constraint none → start no earlier than 2015-03-23; resources none → HRST 1; baseline start none → 2015-03-23; baseline finish none → 2015-03-27 |
| 230 | Configurar PDI (Palno de Desenvolvimento Individual) - VM | 2015-02-09 → 2015-03-23 A (+42d) | 2015-02-09 → 2015-03-27 A (+46d) | 1d? → 5d | 0% → 100% | 113d → none |  | constraint none → start no earlier than 2015-03-23; resources none → HRST 2; baseline start none → 2015-03-23; baseline finish none → 2015-03-27 |
| 231 | Configurar Sucessão - VM | 2015-02-09 → 2015-03-30 A (+49d) | 2015-02-09 → 2015-04-06 (+56d) | 1d? → 5d | 0% → 50% | 113d → 39d | none → 229, 230 | resources none → HRST 3; baseline start none → 2015-03-30; baseline finish none → 2015-04-06 |
| 232 | Configurar PM - VM | 2015-03-30 A → 2015-04-06 (+7d) | 2015-04-02 → 2015-04-08 (+6d) | 4d → 3d | 13% → 0% | 72d → 32d | 40 → none | constraint none → start no earlier than 2015-04-06; resources HRST 2 → HRST 1; HRST 2; HRST 3; baseline start none → 2015-04-06; baseline finish none → 2015-04-08 |

| ID | Task | Start | Finish | Duration | Complete | Total float | Predecessors | Other |
| --- | --- | --- | --- | --- | --- | --- | --- | --- |
| 233 | **Configurar Relatórios** | 2015-02-09 → 2015-04-09 (+59d) | 2015-02-09 → 2015-04-10 (+60d) | 1d? → 2d |  | 113d → 32d |  | baseline start none → 2015-04-09; baseline finish none → 2015-04-10 |
| 234 | Cópia dos Relatórios da VC - VM | 2015-02-09 → 2015-04-09 (+59d) | 2015-02-09 → 2015-04-09 (+59d) | 1d? → 0.5d |  | 113d → 32d | none → 232 | resources none → HRST 1; baseline start none → 2015-04-09; baseline finish none → 2015-04-09 |
| 235 | Escala - Descrição e Pontuação - VM | 2015-02-09 → 2015-04-09 (+59d) | 2015-02-09 → 2015-04-09 (+59d) | 1d? → 0.5d |  | 113d → 32d | none → 234 | resources none → HRST 1; baseline start none → 2015-04-09; baseline finish none → 2015-04-09 |
| 236 | Comparativo entre Desempenho na Função e Crenças - VM | 2015-02-09 → 2015-04-10 (+60d) | 2015-02-09 → 2015-04-10 (+60d) | 1d? → 1d |  | 113d → 32d | none → 235 | resources none → HRST 1; baseline start none → 2015-04-10; baseline finish none → 2015-04-10 |
| 237 | Desenvolvimento Abap - Ajustes Integração | 2015-02-09 → 2015-03-30 (+49d) | 2015-02-09 → 2015-04-10 (+60d) | 1d? → 9d |  | 113d → 35d | none → 229, 230 | resources none → HRST 1; baseline start none → 2015-03-30; baseline finish none → 2015-04-10 |
| 238 | **Onda 1 - Termo de Aceite Fase 3 - Realização** | 2015-02-09 → 2015-04-10 (+60d) | 2015-02-09 → 2015-04-10 (+60d) | 1d? → 0d |  | 113d → 35d |  | baseline start none → 2015-04-10; baseline finish none → 2015-04-10 |
| 239 | Onda 1 - Assinatura Fase 3 - Realização - VM | 2015-02-09 → 2015-04-10 (+60d) | 2015-02-09 → 2015-04-10 (+60d) | 1d? → 0d |  | 113d → 35d | none → 237 | baseline start none → 2015-04-10; baseline finish none → 2015-04-10 |
| 240 | **Fase 4 - Preparação Final** | 2015-02-09 → 2015-04-13 (+63d) | 2015-02-09 → 2015-05-15 (+95d) | 1d? → 22d |  | 113d → 12d |  | baseline start none → 2015-04-13; baseline finish none → 2015-05-15 |
| 241 | **Testes Funcionais** | 2015-02-09 → 2015-04-13 (+63d) | 2015-02-09 → 2015-04-15 (+65d) | 1d? → 3d |  | 113d → 32d |  | baseline start none → 2015-04-13; baseline finish none → 2015-04-15 |
| 242 | **Gestão de Competência VM** | 2015-02-09 → 2015-04-13 (+63d) | 2015-02-09 → 2015-04-15 (+65d) | 1d? → 3d |  | 113d → 32d |  | baseline start none → 2015-04-13; baseline finish none → 2015-04-15 |
| 243 | Realizar Testes Funcionais - VM | 2015-02-09 → 2015-04-13 (+63d) | 2015-02-09 → 2015-04-13 (+63d) | 1d? → 1d |  | 113d → 32d | none → 236 | resources none → HRST 2; baseline start none → 2015-04-13; baseline finish none → 2015-04-13 |
| 244 | Ajustes Testes Funcionais - VM | 2015-02-09 → 2015-04-14 (+64d) | 2015-02-09 → 2015-04-15 (+65d) | 1d? → 2d |  | 113d → 32d | none → 243 | resources none → HRST 2; baseline start none → 2015-04-14; baseline finish none → 2015-04-15 |
| 245 | Onda 1 - Entrega Testes Funcionais - VM | 2015-02-09 → 2015-04-15 (+65d) | 2015-02-09 → 2015-04-15 (+65d) | 1d? → 0d |  | 113d → 32d | none → 244 | baseline start none → 2015-04-15; baseline finish none → 2015-04-15 |
| 246 | **Testes Unitários** | 2015-02-09 → 2015-04-24 (+74d) | 2015-02-09 → 2015-04-28 (+78d) | 1d? → 3d |  | 113d → 25d |  | baseline start none → 2015-04-24; baseline finish none → 2015-04-28 |
| 247 | **Gestão de Competência VM** | 2015-02-09 → 2015-04-24 (+74d) | 2015-02-09 → 2015-04-28 (+78d) | 1d? → 3d |  | 113d → 25d |  | baseline start none → 2015-04-24; baseline finish none → 2015-04-28 |
| 248 | Realizar Testes Unitários - VM | 2015-02-09 → 2015-04-24 (+74d) | 2015-02-09 → 2015-04-24 (+74d) | 1d? → 1d |  | 113d → 25d |  | constraint none → start no earlier than 2015-04-24; resources none → HRST 2; Juraci Silva; baseline start none → 2015-04-24; baseline finish none → 2015-04-24 |
| 249 | Ajustes Testes Unitários - VM | 2015-02-09 → 2015-04-27 (+77d) | 2015-02-09 → 2015-04-28 (+78d) | 1d? → 2d |  | 113d → 25d | none → 248 | resources none → HRST 2; baseline start none → 2015-04-27; baseline finish none → 2015-04-28 |
| 250 | Onda 1 - Entrega Testes Unitários - VM | 2015-02-09 → 2015-04-28 (+78d) | 2015-02-09 → 2015-04-28 (+78d) | 1d? → 0d |  | 113d → 25d | none → 249 | baseline start none → 2015-04-28; baseline finish none → 2015-04-28 |
| 251 | **Testes Integrados** | 2015-02-09 → 2015-05-04 (+84d) | 2015-02-09 → 2015-05-15 (+95d) | 1d? → 10d |  | 113d → 0d |  | baseline start none → 2015-05-04; baseline finish none → 2015-05-15 |
| 252 | **Gestão de Competência VM** | 2015-02-09 → 2015-05-04 (+84d) | 2015-02-09 → 2015-05-15 (+95d) | 1d? → 10d |  | 113d → 0d |  | baseline start none → 2015-05-04; baseline finish none → 2015-05-15 |
| 253 | Testes Integrados VM | 2015-06-29 → 2015-05-04 (-56d) | 2015-07-03 → 2015-05-08 (-56d) |  |  | 10d → 0d | Ajustes de Testes Unitários → none | constraint none → start no earlier than 2015-05-04; resources none → VM; Rodney; baseline start none → 2015-05-04; baseline finish none → 2015-05-08 |
| 254 | Ajustes Testes Integrados VM | 2015-02-09 → 2015-05-11 (+91d) | 2015-02-09 → 2015-05-15 (+95d) | 1d? → 5d |  | 113d → 0d | none → 253 | resources none → HRST 1; baseline start none → 2015-05-11; baseline finish none → 2015-05-15 |
| 255 | **Onda 1 - Termo de Aceite Fase 4** | 2015-02-09 → 2015-05-15 (+95d) | 2015-02-09 → 2015-05-15 (+95d) | 1d? → 0d |  | 113d → 13d |  | baseline start none → 2015-05-15; baseline finish none → 2015-05-15 |
| 256 | Onda 1 - Assinatura Fase 4 - Preparação Final - VM | 2015-02-09 → 2015-05-15 (+95d) | 2015-02-09 → 2015-05-15 (+95d) | 1d? → 0d |  | 113d → 13d | none → 254 | baseline start none → 2015-05-15; baseline finish none → 2015-05-15 |
| 257 | **Fase 5 - Go Live e Operacao Assistida** | 2015-02-09 → 2015-05-18 (+98d) | 2015-02-09 → 2015-06-03 (+114d) | 1d? → 13d |  | 113d → 0d |  | baseline start none → 2015-05-18; baseline finish none → 2015-06-03 |
| 258 | **Go Live - Onda 1 - Gestão de Competência** | 2015-02-09 → 2015-05-18 (+98d) | 2015-02-09 → 2015-06-03 (+114d) | 1d? → 13d |  | 113d → 0d |  | baseline start none → 2015-05-18; baseline finish none → 2015-06-03 |
| 259 | Treinamento | 2015-02-09 → 2015-05-18 (+98d) | 2015-02-09 → 2015-05-22 (+102d) | 1d? → 5d |  | 113d → 0d | none → 254 | resources none → HRST 1; baseline start none → 2015-05-18; baseline finish none → 2015-05-22 |
| 260 | Cutover | 2015-02-09 → 2015-05-25 (+105d) | 2015-02-09 → 2015-05-29 (+109d) | 1d? → 5d |  | 113d → 0d | none → 259 | resources none → HRST 1; HRST 2; HRST 3; Rodney; baseline start none → 2015-05-25; baseline finish none → 2015-05-29 |
| 261 | Onda 1 - Go Live | 2015-02-09 → 2015-05-29 (+109d) | 2015-02-09 → 2015-05-29 (+109d) | 1d? → 0d |  | 113d → 3d | none → 260 | baseline start none → 2015-05-29; baseline finish none → 2015-05-29 |
| 262 | Operação Assistida | 2015-02-09 → 2015-06-01 (+112d) | 2015-02-09 → 2015-06-03 (+114d) | 1d? → 3d |  | 113d → 0d | none → 260 | resources none → HRST 1; HRST 2; HRST 3; Rodney; baseline start none → 2015-06-01; baseline finish none → 2015-06-03 |
| 263 | **(3) Projeto Metas e Competência - VID São Paulo e Curitiba** |  | 2015-03-06 → 2015-06-03 (+89d) | 20d? → 69d | 34% → 46% | 94d → 0d |  | baseline start none → 2015-02-09; baseline finish none → 2015-06-03 |
| 264 | **Fase 1 - Preparação do Projeto** |  |  |  |  |  |  | baseline start none → 2015-02-09; baseline finish none → 2015-02-20 |
| 265 | Confirmação e Mobilização de Equipe |  |  |  |  |  |  | resources none → Rodney; baseline start none → 2015-02-09; baseline finish none → 2015-02-18 |
| 266 | Reunião Pré Kick-off |  |  |  |  |  |  | resources none → Leonardo; Rodney; baseline start none → 2015-02-19; baseline finish none → 2015-02-19 |
| 267 | Kick-Off |  |  |  |  |  |  | resources none → TI Votorantim; baseline start none → 2015-02-20; baseline finish none → 2015-02-20 |
| 268 | Identificação dos Usuários |  |  |  |  |  |  | resources none → Leonardo; Rodney; baseline start none → 2015-02-19; baseline finish none → 2015-02-20 |
| 269 | **Termo de Aceite Fase 1** |  |  |  |  |  |  | baseline start none → 2015-02-20; baseline finish none → 2015-02-20 |
| 270 | Assinatura Fase 1 - Preparação do Projeto |  |  |  |  |  |  | baseline start none → 2015-02-20; baseline finish none → 2015-02-20 |
| 271 | **Fase 2 - Business Blueprint** | 2015-02-09 A → 2015-02-23 A (+14d) |  | 20d? → 10d | 86% → 97% | 94d → 49d |  | baseline start none → 2015-02-23; baseline finish none → 2015-03-06 |
| 272 | **Levantamento Gestão de Metas** |  |  |  |  | 99d → 54d |  | baseline start none → 2015-02-23; baseline finish none → 2015-02-27 |
| 273 | Mapeamento dos Processos |  |  |  |  |  |  | resources none → HRST 1; HRST 2; Rodney; baseline start none → 2015-02-23; baseline finish none → 2015-02-25 |
| 274 | Elaboração dos BBPs |  |  |  |  |  |  | resources none → HRST 1; HRST 2; baseline start none → 2015-02-26; baseline finish none → 2015-02-26 |
| 275 | Ajustes / Aprovação dos BBPs |  |  |  |  | 99d → 54d |  | resources none → HRST 1; HRST 2; Rodney; baseline start none → 2015-02-27; baseline finish none → 2015-02-27 |
| 276 | **Levantamento Gestão de Competência** | 2015-02-09 A → 2015-02-26 A (+17d) |  | 20d? → 7d | 82% → 98% | 94d → 49d |  | baseline start none → 2015-02-26; baseline finish none → 2015-03-06 |
| 277 | Mapeamento dos Processos |  |  |  |  |  |  | resources none → HRST 1; HRST 2; Rodney; baseline start none → 2015-02-26; baseline finish none → 2015-03-03 |
| 278 | **Elaboração dos BBPs** |  |  |  |  |  |  | baseline start none → 2015-03-04; baseline finish none → 2015-03-04 |
| 279 | EP |  |  |  |  |  |  | resources none → HRST 1; baseline start none → 2015-03-04; baseline finish none → 2015-03-04 |
| 280 | PDI |  |  |  |  |  |  | resources none → HRST 1; baseline start none → 2015-03-04; baseline finish none → 2015-03-04 |
| 281 | Competência |  |  |  |  |  |  | resources none → HRST 2; baseline start none → 2015-03-04; baseline finish none → 2015-03-04 |
| 282 | Sucessão |  |  |  |  |  |  | resources none → HRST 2; baseline start none → 2015-03-04; baseline finish none → 2015-03-04 |
| 283 | **Ajustes / Aprovação dos BBPs** |  |  |  | 75% → 94% | 94d → 49d |  | baseline start none → 2015-03-05; baseline finish none → 2015-03-06 |
| 284 | EP |  | 2015-03-05 A |  | 75% → 100% | 0.75d → none |  | resources none → HRST 1; baseline start none → 2015-03-05; baseline finish none → 2015-03-05 |
| 285 | PDI |  | 2015-03-06 A |  | 75% → 100% | 94d → none |  | resources none → HRST 1; baseline start none → 2015-03-06; baseline finish none → 2015-03-06 |
| 286 | Competência |  |  |  |  | 0.75d → 50d |  | resources none → HRST 2; baseline start none → 2015-03-05; baseline finish none → 2015-03-05 |
| 287 | Sucessão |  | 2015-03-06 A |  | 75% → 100% | 94d → none |  | resources none → HRST 2; baseline start none → 2015-03-06; baseline finish none → 2015-03-06 |
| 288 | **Termo de Aceite Fase 2** | 2015-02-09 → 2015-03-06 (+25d) | 2015-02-09 → 2015-03-06 (+25d) | 1d? → 0d |  | 113d → 49d |  | baseline start none → 2015-03-06; baseline finish none → 2015-03-06 |
| 289 | Assinatura Fase 2 - Business Blueprint | 2015-02-09 → 2015-03-06 (+25d) | 2015-02-09 → 2015-03-06 (+25d) | 1d? → 0d |  | 113d → 49d | none → 287 | baseline start none → 2015-03-06; baseline finish none → 2015-03-06 |
| 290 | **Fase 3 - Realização** | 2015-02-09 → 2015-03-23 A (+42d) | 2015-02-09 → 2015-04-10 (+60d) | 1d? → 14d | 0% → 44% | 113d → 35d |  | baseline start none → 2015-03-23; baseline finish none → 2015-04-10 |
| 291 | **Gestão de Competência VID** | 2015-02-09 → 2015-03-23 A (+42d) | 2015-02-09 → 2015-04-10 (+60d) | 1d? → 14d | 0% → 44% | 113d → 35d |  | baseline start none → 2015-03-23; baseline finish none → 2015-04-10 |
| 292 | Configurar EP (Employee Profile) - VID | 2015-02-09 → 2015-03-23 A (+42d) | 2015-02-09 → 2015-03-27 A (+46d) | 1d? → 5d | 0% → 100% | 113d → none |  | constraint none → start no earlier than 2015-03-23; resources none → HRST 1; baseline start none → 2015-03-23; baseline finish none → 2015-03-27 |
| 293 | Configurar PDI (Palno de Desenvolvimento Individual) - VID | 2015-02-09 → 2015-03-23 A (+42d) | 2015-02-09 → 2015-03-27 (+46d) | 1d? → 5d | 0% → 90% | 113d → 1.4d |  | constraint none → start no earlier than 2015-03-23; resources none → HRST 2; baseline start none → 2015-03-23; baseline finish none → 2015-03-27 |
| 294 | Configurar Sucessão - VID | 2015-02-09 → 2015-03-30 A (+49d) | 2015-02-09 → 2015-04-06 (+56d) | 1d? → 5d | 0% → 75% | 113d → 39d | none → 292, 293 | resources none → HRST 3; baseline start none → 2015-03-30; baseline finish none → 2015-04-06 |
| 295 | Configurar PM - VID | 2015-02-09 → 2015-03-30 A (+49d) | 2015-02-09 → 2015-04-08 (+58d) | 1d? → 7d | 0% → 20% | 113d → 35d | none → 292, 293 | resources none → HRST 1; HRST 2; HRST 3; baseline start none → 2015-03-30; baseline finish none → 2015-04-08 |
| 296 | **Configurar Relatórios** | 2015-02-09 → 2015-04-09 (+59d) | 2015-02-09 → 2015-04-10 (+60d) | 1d? → 2d |  | 113d → 35d |  | baseline start none → 2015-04-09; baseline finish none → 2015-04-10 |
| 297 | Cópia dos Relatórios da VC - VID | 2015-02-09 → 2015-04-09 (+59d) | 2015-02-09 → 2015-04-09 (+59d) | 1d? → 0.5d |  | 113d → 35d | none → 295 | resources none → HRST 1; baseline start none → 2015-04-09; baseline finish none → 2015-04-09 |
| 298 | Escala - Descrição e Pontuação - VID | 2015-02-09 → 2015-04-09 (+59d) | 2015-02-09 → 2015-04-09 (+59d) | 1d? → 0.5d |  | 113d → 35d | none → 297 | resources none → HRST 1; baseline start none → 2015-04-09; baseline finish none → 2015-04-09 |
| 299 | Comparativo entre Desempenho na Função e Crenças - VID | 2015-02-09 → 2015-04-10 (+60d) | 2015-02-09 → 2015-04-10 (+60d) | 1d? → 1d |  | 113d → 35d | none → 298 | resources none → HRST 1; baseline start none → 2015-04-10; baseline finish none → 2015-04-10 |
| 300 | Desenvolvimento Abap - Ajustes Integração | 2015-02-09 → 2015-03-30 (+49d) | 2015-02-09 → 2015-04-10 (+60d) | 1d? → 9d |  | 113d → 32d | none → 292, 293 | resources none → HRST 1; baseline start none → 2015-03-30; baseline finish none → 2015-04-10 |
| 301 | **Termo de Aceite Fase 3 - Realização** | 2015-02-09 → 2015-04-10 (+60d) | 2015-02-09 → 2015-04-10 (+60d) | 1d? → 0d |  | 113d → 35d |  | baseline start none → 2015-04-10; baseline finish none → 2015-04-10 |
| 302 | Onda 1 - Assinatura Fase 3 - Realização - VID | 2015-02-09 → 2015-04-10 (+60d) | 2015-02-09 → 2015-04-10 (+60d) | 1d? → 0d |  | 113d → 35d | none → 300 | baseline start none → 2015-04-10; baseline finish none → 2015-04-10 |

| ID | Task | Start | Finish | Duration | Complete | Total float | Predecessors | Other |
| --- | --- | --- | --- | --- | --- | --- | --- | --- |
| 303 | **Fase 4 - Preparação Final** | 2015-02-09 → 2015-04-13 (+63d) | 2015-02-09 → 2015-05-15 (+95d) | 1d? → 22d |  | 113d → 12d |  | baseline start none → 2015-04-13; baseline finish none → 2015-05-15 |
| 304 | **Testes Funcionais** | 2015-02-09 → 2015-04-13 (+63d) | 2015-02-09 → 2015-04-15 (+65d) | 1d? → 3d |  | 113d → 32d |  | baseline start none → 2015-04-13; baseline finish none → 2015-04-15 |
| 305 | **Gestão de Competência VID** | 2015-02-09 → 2015-04-13 (+63d) | 2015-02-09 → 2015-04-15 (+65d) | 1d? → 3d |  | 113d → 32d |  | baseline start none → 2015-04-13; baseline finish none → 2015-04-15 |
| 306 | Realizar Testes Funcionais - VID | 2015-02-09 → 2015-04-13 (+63d) | 2015-02-09 → 2015-04-13 (+63d) | 1d? → 1d |  | 113d → 32d | none → 300 | resources none → HRST 3; baseline start none → 2015-04-13; baseline finish none → 2015-04-13 |
| 307 | Ajustes Testes Funcionais - VID | 2015-02-09 → 2015-04-14 (+64d) | 2015-02-09 → 2015-04-15 (+65d) | 1d? → 2d |  | 113d → 32d | none → 306 | resources none → HRST 3; baseline start none → 2015-04-14; baseline finish none → 2015-04-15 |
| 308 | Onda 1 - Entrega Testes Funcionais - VID | 2015-02-09 → 2015-04-15 (+65d) | 2015-02-09 → 2015-04-15 (+65d) | 1d? → 0d |  | 113d → 32d | none → 307 | baseline start none → 2015-04-15; baseline finish none → 2015-04-15 |
| 309 | **Testes Unitários** | 2015-02-09 → 2015-04-27 (+77d) | 2015-02-09 → 2015-04-29 (+79d) | 1d? → 3d |  | 113d → 24d |  | baseline start none → 2015-04-27; baseline finish none → 2015-04-29 |
| 310 | **Gestão de Competência VID** | 2015-02-09 → 2015-04-27 (+77d) | 2015-02-09 → 2015-04-29 (+79d) | 1d? → 3d |  | 113d → 24d |  | baseline start none → 2015-04-27; baseline finish none → 2015-04-29 |
| 311 | Realizar Testes Unitários - VID | 2015-02-09 → 2015-04-27 (+77d) | 2015-02-09 → 2015-04-27 (+77d) | 1d? → 1d |  | 113d → 24d |  | constraint none → start no earlier than 2015-04-27; resources none → HRST 3; Juraci Silva; baseline start none → 2015-04-27; baseline finish none → 2015-04-27 |
| 312 | Ajustes Testes Unitários - VID | 2015-02-09 → 2015-04-28 (+78d) | 2015-02-09 → 2015-04-29 (+79d) | 1d? → 2d |  | 113d → 24d | none → 311 | resources none → HRST 3; baseline start none → 2015-04-28; baseline finish none → 2015-04-29 |
| 313 | Onda 1 - Entrega Testes Unitários - VID | 2015-02-09 → 2015-04-29 (+79d) | 2015-02-09 → 2015-04-29 (+79d) | 1d? → 0d |  | 113d → 24d | none → 312 | baseline start none → 2015-04-29; baseline finish none → 2015-04-29 |
| 314 | **Testes Integrados** | 2015-02-09 → 2015-05-04 (+84d) | 2015-02-09 → 2015-05-15 (+95d) | 1d? → 10d |  | 113d → 0d |  | baseline start none → 2015-05-04; baseline finish none → 2015-05-15 |
| 315 | **Gestão de Competência VID** | 2015-02-09 → 2015-05-04 (+84d) | 2015-02-09 → 2015-05-15 (+95d) | 1d? → 10d |  | 113d → 0d |  | baseline start none → 2015-05-04; baseline finish none → 2015-05-15 |
| 316 | Testes Integrados VID | 2015-02-09 → 2015-05-04 (+84d) | 2015-02-09 → 2015-05-08 (+88d) | 1d? → 5d |  | 113d → 0d |  | constraint none → start no earlier than 2015-05-04; resources none → Rodney; VID Curitiba; VID São Paulo; baseline start none → 2015-05-04; baseline finish none → 2015-05-08 |
| 317 | Ajustes Testes Integrados VID | 2015-02-09 → 2015-05-11 (+91d) | 2015-02-09 → 2015-05-15 (+95d) | 1d? → 5d |  | 113d → 0d | none → 316 | resources none → HRST 1; baseline start none → 2015-05-11; baseline finish none → 2015-05-15 |
| 318 | **Onda 1 - Termo de Aceite Fase 4** | 2015-02-09 → 2015-05-15 (+95d) | 2015-02-09 → 2015-05-15 (+95d) | 1d? → 0d |  | 113d → 13d |  | baseline start none → 2015-05-15; baseline finish none → 2015-05-15 |
| 319 | Onda 1 - Assinatura Fase 4 - Preparação Final - VID | 2015-02-09 → 2015-05-15 (+95d) | 2015-02-09 → 2015-05-15 (+95d) | 1d? → 0d |  | 113d → 13d | none → 317 | baseline start none → 2015-05-15; baseline finish none → 2015-05-15 |
| 320 | **Fase 5 - Go Live e Operacao Assistida** | 2015-02-09 → 2015-05-18 (+98d) | 2015-02-09 → 2015-06-03 (+114d) | 1d? → 13d |  | 113d → 0d |  | baseline start none → 2015-05-18; baseline finish none → 2015-06-03 |
| 321 | **Go Live - Onda 1 - Gestão de Competência** | 2015-02-09 → 2015-05-18 (+98d) | 2015-02-09 → 2015-06-03 (+114d) | 1d? → 13d |  | 113d → 0d |  | baseline start none → 2015-05-18; baseline finish none → 2015-06-03 |
| 322 | Treinamento | 2015-02-09 → 2015-05-18 (+98d) | 2015-02-09 → 2015-05-22 (+102d) | 1d? → 5d |  | 113d → 0d | none → 317 | resources none → HRST 1; baseline start none → 2015-05-18; baseline finish none → 2015-05-22 |
| 323 | Cutover | 2015-02-09 → 2015-05-25 (+105d) | 2015-02-09 → 2015-05-29 (+109d) | 1d? → 5d |  | 113d → 0d | none → 322 | resources none → HRST 1; HRST 2; HRST 3; Rodney; baseline start none → 2015-05-25; baseline finish none → 2015-05-29 |
| 324 | Onda 1 - Go Live | 2015-02-09 → 2015-05-29 (+109d) | 2015-02-09 → 2015-05-29 (+109d) | 1d? → 0d |  | 113d → 3d | none → 323 | baseline start none → 2015-05-29; baseline finish none → 2015-05-29 |
| 325 | Operação Assistida | 2015-02-09 → 2015-06-01 (+112d) | 2015-02-09 → 2015-06-03 (+114d) | 1d? → 3d |  | 113d → 0d | none → 323 | resources none → HRST 1; HRST 2; HRST 3; Rodney; baseline start none → 2015-06-01; baseline finish none → 2015-06-03 |
| 326 | **(4) Projeto Metas e Competência - VE** |  | 2015-03-06 → 2015-06-03 (+89d) | 20d? → 69d | 35% → 47% | 94d → 0d |  | baseline start none → 2015-02-09; baseline finish none → 2015-06-03 |
| 327 | **Fase 1 - Preparação do Projeto** |  | 2015-02-23 A → 2015-02-20 A (-3d) |  |  |  |  | baseline start none → 2015-02-09; baseline finish none → 2015-02-20 |
| 328 | Confirmação e Mobilização de Equipe |  |  |  |  |  |  | constraint none → start no earlier than 2015-02-09; resources none → Rodney; baseline start none → 2015-02-09; baseline finish none → 2015-02-18 |
| 329 | Reunião Pré Kick-off |  |  |  |  |  |  | resources none → Leonardo; Rodney; baseline start none → 2015-02-19; baseline finish none → 2015-02-19 |
| 330 | Kick-Off |  |  |  |  |  |  | resources none → TI Votorantim; baseline start none → 2015-02-20; baseline finish none → 2015-02-20 |
| 331 | Identificação dos Usuários |  |  |  |  |  |  | resources none → Leonardo; Rodney; baseline start none → 2015-02-19; baseline finish none → 2015-02-20 |
| 332 | **Termo de Aceite Fase 1** | 2015-02-23 A → 2015-02-20 A (-3d) | 2015-02-23 A → 2015-02-20 A (-3d) |  |  |  |  | baseline start none → 2015-02-20; baseline finish none → 2015-02-20 |
| 333 | Assinatura Fase 1 - Preparação do Projeto | 2015-02-23 A → 2015-02-20 A (-3d) | 2015-02-23 A → 2015-02-20 A (-3d) |  |  |  |  | baseline start none → 2015-02-20; baseline finish none → 2015-02-20 |
| 334 | **Fase 2 - Business Blueprint** |  | 2015-03-06 A |  | 92% → 100% | 94d → none |  | baseline start none → 2015-02-23; baseline finish none → 2015-03-06 |
| 335 | **Levantamento Gestão de Metas** |  | 2015-02-27 A |  | 95% → 100% | 99d → none |  | baseline start none → 2015-02-23; baseline finish none → 2015-02-27 |
| 336 | Mapeamento dos Processos |  |  |  |  |  |  | resources none → HRST 1; HRST 2; Rodney; baseline start none → 2015-02-23; baseline finish none → 2015-02-25 |
| 337 | Elaboração dos BBPs |  |  |  |  |  |  | resources none → HRST 1; HRST 2; Rodney; baseline start none → 2015-02-26; baseline finish none → 2015-02-26 |
| 338 | Ajustes / Aprovação dos BBPs |  | 2015-02-27 A |  | 75% → 100% | 99d → none |  | resources none → HRST 1; HRST 2; Rodney; baseline start none → 2015-02-27; baseline finish none → 2015-02-27 |
| 339 | **Levantamento Gestão de Competência** |  | 2015-03-06 A |  | 90% → 100% | 94d → none |  | baseline start none → 2015-02-26; baseline finish none → 2015-03-06 |
| 340 | Mapeamento dos Processos |  |  |  |  |  |  | resources none → HRST 1; HRST 2; Rodney; baseline start none → 2015-02-26; baseline finish none → 2015-03-03 |
| 341 | **Elaboração dos BBPs** |  |  |  |  |  |  | baseline start none → 2015-03-04; baseline finish none → 2015-03-04 |
| 342 | EP |  |  |  |  |  |  | resources none → HRST 1; baseline start none → 2015-03-04; baseline finish none → 2015-03-04 |
| 343 | PDI |  |  |  |  |  |  | resources none → HRST 1; baseline start none → 2015-03-04; baseline finish none → 2015-03-04 |
| 344 | Competência |  |  |  |  |  |  | resources none → HRST 2; baseline start none → 2015-03-04; baseline finish none → 2015-03-04 |
| 345 | Sucessão |  |  |  |  |  |  | resources none → HRST 2; baseline start none → 2015-03-04; baseline finish none → 2015-03-04 |
| 346 | **Ajustes / Aprovação dos BBPs** |  | 2015-03-06 A |  | 75% → 100% | 94d → none |  | baseline start none → 2015-03-05; baseline finish none → 2015-03-06 |
| 347 | EP |  | 2015-03-05 A |  | 75% → 100% | 0.75d → none |  | resources none → HRST 1; baseline start none → 2015-03-05; baseline finish none → 2015-03-05 |
| 348 | PDI |  | 2015-03-06 A |  | 75% → 100% | 94d → none |  | resources none → HRST 1; baseline start none → 2015-03-06; baseline finish none → 2015-03-06 |
| 349 | Competência |  | 2015-03-05 A |  | 75% → 100% | 0.75d → none |  | resources none → HRST 2; baseline start none → 2015-03-05; baseline finish none → 2015-03-05 |
| 350 | Sucessão |  | 2015-03-06 A |  | 75% → 100% | 94d → none |  | resources none → HRST 2; baseline start none → 2015-03-06; baseline finish none → 2015-03-06 |
| 351 | **Termo de Aceite Fase 2** | 2015-03-06 A | 2015-03-06 A |  | 0% → 100% | 94d → none |  | baseline start none → 2015-03-06; baseline finish none → 2015-03-06 |
| 352 | Assinatura Fase 2 - Business Blueprint | 2015-03-06 A | 2015-03-06 A |  | 0% → 100% | 94d → none |  | baseline start none → 2015-03-06; baseline finish none → 2015-03-06 |
| 353 | **Faze 3 - Realização** | 2015-02-09 → 2015-03-23 A (+42d) | 2015-02-09 → 2015-04-10 (+60d) | 1d? → 14d | 0% → 43% | 113d → 35d |  | baseline start none → 2015-03-23; baseline finish none → 2015-04-10 |
| 354 | **Gestão de Competência VE** | 2015-02-09 → 2015-03-23 A (+42d) | 2015-02-09 → 2015-04-10 (+60d) | 1d? → 14d | 0% → 43% | 113d → 35d |  | baseline start none → 2015-03-23; baseline finish none → 2015-04-10 |
| 355 | Configurar EP (Employee Profile) - VE | 2015-02-09 → 2015-03-23 A (+42d) | 2015-02-09 → 2015-03-27 A (+46d) | 1d? → 5d | 0% → 100% | 113d → none |  | constraint none → start no earlier than 2015-03-23; resources none → HRST 1; baseline start none → 2015-03-23; baseline finish none → 2015-03-27 |
| 356 | Configurar PDI (Palno de Desenvolvimento Individual) - VE | 2015-02-09 → 2015-03-23 A (+42d) | 2015-02-09 → 2015-03-27 A (+46d) | 1d? → 5d | 0% → 100% | 113d → none |  | constraint none → start no earlier than 2015-03-23; resources none → HRST 2; baseline start none → 2015-03-23; baseline finish none → 2015-03-27 |
| 357 | Configurar Sucessão - VE | 2015-02-09 → 2015-03-30 A (+49d) | 2015-02-09 → 2015-04-06 (+56d) | 1d? → 5d | 0% → 50% | 113d → 36d | none → 355, 356 | resources none → HRST 3; baseline start none → 2015-03-30; baseline finish none → 2015-04-06 |
| 358 | Configurar PM - VE | 2015-04-06 → 2015-04-07 (+1d) | 2015-04-08 → 2015-04-09 (+1d) |  |  | 72d → 36d | 232 → 357 | resources HRST 2 → HRST 1; HRST 2; HRST 3; baseline start none → 2015-04-07; baseline finish none → 2015-04-09 |
| 359 | **Configurar Relatórios** | 2015-02-09 → 2015-04-09 (+59d) | 2015-02-09 → 2015-04-10 (+60d) | 1d? → 2d |  | 113d → 35d |  | baseline start none → 2015-04-09; baseline finish none → 2015-04-10 |
| 360 | Cópia dos Relatórios da VC - VE | 2015-02-09 → 2015-04-09 (+59d) | 2015-02-09 → 2015-04-09 (+59d) | 1d? → 0.5d |  | 113d → 35d | none → 59 | resources none → HRST 1; baseline start none → 2015-04-09; baseline finish none → 2015-04-09 |
| 361 | Escala - Descrição e Pontuação - VE | 2015-02-09 → 2015-04-09 (+59d) | 2015-02-09 → 2015-04-09 (+59d) | 1d? → 0.5d |  | 113d → 35d | none → 360 | resources none → HRST 1; baseline start none → 2015-04-09; baseline finish none → 2015-04-09 |
| 362 | Comparativo entre Desempenho na Função e Crenças - VE | 2015-02-09 → 2015-04-10 (+60d) | 2015-02-09 → 2015-04-10 (+60d) | 1d? → 1d |  | 113d → 35d | none → 361 | resources none → HRST 1; baseline start none → 2015-04-10; baseline finish none → 2015-04-10 |
| 364 | **Termo de Aceite Fase 3 - Realização** | 2015-02-09 → 2015-04-10 (+60d) | 2015-02-09 → 2015-04-10 (+60d) | 1d? → 0d |  | 113d → 35d |  | resources none → HRST 1; baseline start none → 2015-04-10; baseline finish none → 2015-04-10 |
| 365 | Onda 1 - Assinatura Fase 3 - Realização - VE | 2015-02-09 → 2015-04-10 (+60d) | 2015-02-09 → 2015-04-10 (+60d) | 1d? → 0d |  | 113d → 35d | none → 363 | baseline start none → 2015-04-10; baseline finish none → 2015-04-10 |
| 366 | **Fase 4 - Preparação Final** | 2015-02-09 → 2015-04-16 (+66d) | 2015-02-09 → 2015-05-15 (+95d) | 1d? → 19d |  | 113d → 6d |  | baseline start none → 2015-04-16; baseline finish none → 2015-05-15 |
| 367 | **Testes Funcionais** | 2015-02-09 → 2015-04-16 (+66d) | 2015-02-09 → 2015-04-17 (+67d) | 1d? → 2d |  | 113d → 30d |  | baseline start none → 2015-04-16; baseline finish none → 2015-04-17 |
| 368 | **Gestão de Competência VE** | 2015-02-09 → 2015-04-16 (+66d) | 2015-02-09 → 2015-04-17 (+67d) | 1d? → 2d |  | 113d → 30d |  | baseline start none → 2015-04-16; baseline finish none → 2015-04-17 |
| 369 | Realizar Testes Funcionais - VE | 2015-02-09 → 2015-04-16 (+66d) | 2015-02-09 → 2015-04-16 (+66d) | 1d? → 1d |  | 113d → 30d |  | constraint none → start no earlier than 2015-04-16; resources none → HRST 1; baseline start none → 2015-04-16; baseline finish none → 2015-04-16 |
| 370 | Ajustes Testes Funcionais - VE | 2015-02-09 → 2015-04-17 (+67d) | 2015-02-09 → 2015-04-17 (+67d) | 1d? → 1d |  | 113d → 30d | none → 369 | resources none → HRST 1; baseline start none → 2015-04-17; baseline finish none → 2015-04-17 |
| 371 | Onda 1 - Entrega Testes Funcionais - VE | 2015-02-09 → 2015-04-17 (+67d) | 2015-02-09 → 2015-04-17 (+67d) | 1d? → 0d |  | 113d → 30d | none → 370 | baseline start none → 2015-04-17; baseline finish none → 2015-04-17 |
| 372 | **Testes Unitários** | 2015-02-09 → 2015-04-28 (+78d) | 2015-02-09 → 2015-04-30 (+80d) | 1d? → 3d |  | 113d → 0d |  | baseline start none → 2015-04-28; baseline finish none → 2015-04-30 |
| 373 | **Gestão de Competência VE** | 2015-02-09 → 2015-04-28 (+78d) | 2015-02-09 → 2015-04-30 (+80d) | 1d? → 3d |  | 113d → 0d |  | baseline start none → 2015-04-28; baseline finish none → 2015-04-30 |

| ID | Task | Start | Finish | Duration | Total float | Predecessors | Other |
| --- | --- | --- | --- | --- | --- | --- | --- |
| 374 | Realizar Testes Unitários - VE | 2015-02-09 → 2015-04-28 (+78d) | 2015-02-09 → 2015-04-28 (+78d) | 1d? → 1d | 113d → 0d |  | constraint none → start no earlier than 2015-04-28; resources none → HRST 2; Juraci Silva; baseline start none → 2015-04-28; baseline finish none → 2015-04-28 |
| 375 | Ajustes Testes Unitários - VE | 2015-02-09 → 2015-04-29 (+79d) | 2015-02-09 → 2015-04-30 (+80d) | 1d? → 2d | 113d → 0d | none → 374 | resources none → HRST 2; baseline start none → 2015-04-29; baseline finish none → 2015-04-30 |
| 376 | Onda 1 - Entrega Testes Unitários - VE | 2015-02-09 → 2015-04-30 (+80d) | 2015-02-09 → 2015-04-30 (+80d) | 1d? → 0d | 113d → 23d | none → 375 | baseline start none → 2015-04-30; baseline finish none → 2015-04-30 |
| 377 | **Testes Integrados** | 2015-02-09 → 2015-05-04 (+84d) | 2015-02-09 → 2015-05-15 (+95d) | 1d? → 10d | 113d → 0d |  | baseline start none → 2015-05-04; baseline finish none → 2015-05-15 |
| 378 | **Gestão de Competência VE** | 2015-02-09 → 2015-05-04 (+84d) | 2015-02-09 → 2015-05-15 (+95d) | 1d? → 10d | 113d → 0d |  | baseline start none → 2015-05-04; baseline finish none → 2015-05-15 |
| 379 | Testes Integrados VE | 2015-06-29 → 2015-05-04 (-56d) | 2015-07-03 → 2015-05-08 (-56d) |  |  | Ajustes de Testes Unitários → 375 | resources none → Rodney; VE; baseline start none → 2015-05-04; baseline finish none → 2015-05-08 |
| 380 | Ajustes Testes Integrados VE | 2015-02-09 → 2015-05-11 (+91d) | 2015-02-09 → 2015-05-15 (+95d) | 1d? → 5d | 113d → 0d | none → 379 | resources none → HRST 1; baseline start none → 2015-05-11; baseline finish none → 2015-05-15 |
| 381 | **Onda 1 - Termo de Aceite Fase 4** | 2015-02-09 → 2015-05-15 (+95d) | 2015-02-09 → 2015-05-15 (+95d) | 1d? → 0d | 113d → 13d |  | baseline start none → 2015-05-15; baseline finish none → 2015-05-15 |
| 382 | Onda 1 - Assinatura Fase 4 - Preparação Final - VE | 2015-02-09 → 2015-05-15 (+95d) | 2015-02-09 → 2015-05-15 (+95d) | 1d? → 0d | 113d → 13d | none → 380 | baseline start none → 2015-05-15; baseline finish none → 2015-05-15 |
| 383 | **Fase 5 - Go Live e Operacao Assistida** | 2015-02-09 → 2015-05-18 (+98d) | 2015-02-09 → 2015-06-03 (+114d) | 1d? → 13d | 113d → 0d |  | baseline start none → 2015-05-18; baseline finish none → 2015-06-03 |
| 384 | **Go Live - Onda 1 - Gestão de Competência** | 2015-02-09 → 2015-05-18 (+98d) | 2015-02-09 → 2015-06-03 (+114d) | 1d? → 13d | 113d → 0d |  | baseline start none → 2015-05-18; baseline finish none → 2015-06-03 |
| 385 | Treinamento | 2015-02-09 → 2015-05-18 (+98d) | 2015-02-09 → 2015-05-22 (+102d) | 1d? → 5d | 113d → 0d | none → 380 | resources none → HRST 1; baseline start none → 2015-05-18; baseline finish none → 2015-05-22 |
| 386 | Cutover | 2015-02-09 → 2015-05-25 (+105d) | 2015-02-09 → 2015-05-29 (+109d) | 1d? → 5d | 113d → 0d | none → 385 | resources none → HRST 1; HRST 2; HRST 3; Rodney; baseline start none → 2015-05-25; baseline finish none → 2015-05-29 |
| 387 | Onda 1 - Go Live | 2015-02-09 → 2015-05-29 (+109d) | 2015-02-09 → 2015-05-29 (+109d) | 1d? → 0d | 113d → 3d | none → 386 | baseline start none → 2015-05-29; baseline finish none → 2015-05-29 |
| 388 | Operação Assistida | 2015-02-09 → 2015-06-01 (+112d) | 2015-02-09 → 2015-06-03 (+114d) | 1d? → 3d | 113d → 0d | none → 386 | resources none → HRST 1; HRST 2; HRST 3; Rodney; baseline start none → 2015-06-01; baseline finish none → 2015-06-03 |
