# Projeto Gestão de Metas

How a schedule from MS Project changed from version to version. A marks actual dates.

## Version 1 (data date 2015-03-19, saved 2015-03-19, file 3_Projeto Gestão de Metas.mpp)

Note of the change: Inicial

| ID | WBS | Task | Duration | Start | Finish | Predecessors | Complete | Total float | Constraint |
| --- | --- | --- | --- | --- | --- | --- | --- | --- | --- |
| 1 | A | **Projeto de Metas e Competências SuccessFactors** | 114d | 2015-02-09 A | 2015-07-24 |  | 9% | 0d |  |
| 2 | A.1 | **Fase 1 - Preparação do Projeto** | 10d | 2015-02-09 A | 2015-02-20 A |  | 100% |  |  |
| 3 |  | Confirmação e Mobilização de Equipe | 8d | 2015-02-09 A | 2015-02-18 A |  | 100% |  |  |
| 4 |  | Reunião Pré Kick-off | 1d | 2015-02-19 A | 2015-02-19 A | 3 | 100% |  | start no earlier than 2015-02-09 |
| 5 |  | Kick-off | 1d | 2015-02-20 A | 2015-02-20 A | 4 | 100% |  |  |
| 6 |  | Identificação dos Usuários | 2d | 2015-02-19 A | 2015-02-20 A | 3 | 100% |  |  |
| 7 |  | Entrega Final Fase 1 - Preparação do Projeto | 0d | 2015-02-20 A | 2015-02-20 A | 6 | 100% |  |  |
| 8 | A.2 | **Fase 2 - Business BluePrint** | 10d | 2015-02-23 A | 2015-03-06 |  | 86% | 94d |  |
| 9 | 1.2.1 | **Levantamento Gestão de Metas** | 10d | 2015-02-23 A | 2015-03-06 |  | 90% | 94d |  |
| 10 |  | Mapeamento dos Processos | 3d | 2015-02-23 A | 2015-02-25 A | 6 | 100% |  |  |
| 11 |  | Elaboração dos BBPs | 5d | 2015-02-26 A | 2015-03-04 A | 10 | 100% |  |  |
| 12 |  | Aprovação / Ajustes dos BBPs | 2d | 2015-03-05 A | 2015-03-06 | 11 | 50% | 94d |  |
| 13 | 1.2.2 | **Levantamento Gestão de Competência** | 6.25d | 2015-02-26 A | 2015-03-06 |  | 82% | 94.75d |  |
| 14 |  | Mapeamento dos Processos | 5d | 2015-02-26 A | 2015-03-04 A | 10 | 100% |  |  |
| 15 | 1.2.2.2 | **Elaboração dos BBPs** | 0.5d | 2015-03-05 A | 2015-03-05 A |  | 100% |  |  |
| 16 |  | EP | 0.5d | 2015-03-05 A | 2015-03-05 A | 14 | 100% |  |  |
| 17 |  | PDI | 0.5d | 2015-03-05 A | 2015-03-05 A | 14 | 100% |  |  |
| 18 |  | Competência | 0.5d | 2015-03-05 A | 2015-03-05 A | 14 | 100% |  |  |
| 19 |  | Sucessão | 0.5d | 2015-03-05 A | 2015-03-05 A | 14 | 100% |  |  |
| 20 | 1.2.2.3 | **Aprovação / Ajustes dos BBPs** | 1d | 2015-03-05 A | 2015-03-06 |  | 50% | 94.75d |  |
| 21 |  | EP | 1d | 2015-03-05 A | 2015-03-06 | 16 | 50% | 0.75d |  |
| 22 |  | PDI | 1d | 2015-03-05 A | 2015-03-06 | 17 | 50% | 94.75d |  |
| 23 |  | Competência | 1d | 2015-03-05 A | 2015-03-06 | 18 | 50% | 94.75d |  |
| 24 |  | Sucessão | 1d | 2015-03-05 A | 2015-03-06 | 19 | 50% | 94.75d |  |
| 25 |  | Entrega Final Fase 2 - Business Blueprint | 0d | 2015-03-06 | 2015-03-06 | 24 |  | 94.75d |  |
| 26 | A.3 | **Fase 3 - Execução** | 59d | 2015-03-09 | 2015-06-03 |  |  | 0d |  |
| 27 | A.3.1 | **Gestão de Competência** | 29d | 2015-03-09 | 2015-04-17 |  |  | 0d |  |
| 28 | 1.3.1.1 | **VS** | 14d | 2015-03-09 | 2015-03-26 |  |  | 0d |  |
| 29 |  | Configurar EP (Employee Profile) | 3d | 2015-03-09 | 2015-03-11 | 21 |  | 0d | start no earlier than 2015-03-09 |
| 30 |  | Configurar PDI (Palno de Desenvolvimento Individual) VS | 1d | 2015-03-12 | 2015-03-12 | 29 |  | 0d |  |
| 31 |  | Configurar PM - VS | 6d | 2015-03-13 | 2015-03-20 | 30 |  | 0d |  |
| 32 |  | Configurar Sucessão - VS | 3d | 2015-03-23 | 2015-03-25 | 31 |  | 0d |  |
| 33 | 1.3.1.1.5 | **Configurar Relatórios** | 1d | 2015-03-26 | 2015-03-26 |  |  | 0d |  |
| 34 |  | Cópia dos Relatórios da VC - VS | 0.5d | 2015-03-26 | 2015-03-26 | 32 |  | 0d |  |
| 35 |  | Escala - Descrição e Pontuação - VS | 0.25d | 2015-03-26 | 2015-03-26 | 34 |  | 0d |  |
| 36 |  | Comparativo entre Desempenho na Função e Crenças - VS | 0.25d | 2015-03-26 | 2015-03-26 | 35 |  | 0d |  |
| 37 |  | Onda 1 - Entrega Fase 3 - Execução - VS | 0d | 2015-03-26 | 2015-03-26 | 36 |  | 80d |  |
| 38 | 1.3.1.2 | **VM** | 11d | 2015-03-12 | 2015-03-26 |  |  | 58d |  |
| 39 |  | Configurar PDI (Palno de Desenvolvimento Individual) - VM | 1d | 2015-03-12 | 2015-03-12 | 29 |  | 58d |  |
| 40 |  | Configurar PM - VM | 6d | 2015-03-13 | 2015-03-20 | 39 |  | 58d |  |
| 41 |  | Configurar Sucessão - VM | 3d | 2015-03-23 | 2015-03-25 | 40 |  | 58d |  |
| 42 | 1.3.1.2.4 | **Configurar Relatórios** | 1d | 2015-03-26 | 2015-03-26 |  |  | 58d |  |
| 43 |  | Cópia dos Relatórios da VC - VM | 0.5d | 2015-03-26 | 2015-03-26 | 41 |  | 58d |  |
| 44 |  | Escala - Descrição e Pontuação - VM | 0.25d | 2015-03-26 | 2015-03-26 | 43 |  | 58d |  |
| 45 |  | Comparativo entre Desempenho na Função e Crenças - VM | 0.25d | 2015-03-26 | 2015-03-26 | 44 |  | 58d |  |
| 46 |  | Onda 1 - Entrega Fase 3 - Execução - VM | 0d | 2015-03-26 | 2015-03-26 | 45 |  | 80d |  |
| 47 | 1.3.1.3 | **VID São Paulo e Curitiba** | 7d | 2015-03-27 | 2015-04-07 |  |  | 0d |  |
| 48 |  | Configurar PDI (Palno de Desenvolvimento Individual) - VID | 1d | 2015-03-27 | 2015-03-27 | 36 |  | 0d |  |
| 49 |  | Configurar PM - VID | 3d | 2015-03-30 | 2015-04-01 | 48 |  | 0d |  |
| 50 |  | Configurar Sucessão - VID | 2d | 2015-04-02 | 2015-04-06 | 49 |  | 0d |  |
| 51 | 1.3.1.3.4 | **Configurar Relatórios** | 1d | 2015-04-07 | 2015-04-07 |  |  | 0d |  |
| 52 |  | Cópia dos Relatórios da VC - VID | 0.5d | 2015-04-07 | 2015-04-07 | 50 |  | 0d |  |
| 53 |  | Escala - Descrição e Pontuação - VID | 0.25d | 2015-04-07 | 2015-04-07 | 52 |  | 0d |  |
| 54 |  | Comparativo entre Desempenho na Função e Crenças - VID | 0.25d | 2015-04-07 | 2015-04-07 | 53 |  | 0d |  |
| 55 |  | Onda 1 - Entrega Fase 3 - Execução - VID São Paulo e Curitiba | 0d | 2015-04-07 | 2015-04-07 | 54 |  | 73d |  |
| 56 | 1.3.1.4 | **VE** | 7d | 2015-03-27 | 2015-04-07 |  |  | 58d |  |
| 57 |  | Configurar PDI (Palno de Desenvolvimento Individual) - VE | 1d | 2015-03-27 | 2015-03-27 | 45 |  | 58d |  |
| 58 |  | Configurar PM - VE | 3d | 2015-03-30 | 2015-04-01 | 57 |  | 58d |  |
| 59 |  | Configurar Sucessão - VE | 2d | 2015-04-02 | 2015-04-06 | 58 |  | 58d |  |
| 60 | 1.3.1.4.4 | **Configurar Relatórios** | 1d | 2015-04-07 | 2015-04-07 |  |  | 58d |  |
| 61 |  | Cópia dos Relatórios da VC - VE | 0.5d | 2015-04-07 | 2015-04-07 | 59 |  | 58d |  |
| 62 |  | Escala - Descrição e Pontuação - VE | 0.25d | 2015-04-07 | 2015-04-07 | 61 |  | 58d |  |
| 63 |  | Comparativo entre Desempenho na Função e Crenças - VE | 0.25d | 2015-04-07 | 2015-04-07 | 62 |  | 58d |  |
| 64 |  | Onda 1 - Entrega Fase 3 - Execução - VE | 0d | 2015-04-07 | 2015-04-07 | 63 |  | 73d |  |
| 65 |  | Desenvolvimento Abap - Ajustes Integração | 26d | 2015-03-12 | 2015-04-17 | 29 |  | 65d |  |
| 66 |  | Onda 1 - Entrega Final - Fase 3 - Execução | 0d | 2015-04-17 | 2015-04-17 | 65 |  | 65d |  |
| 67 | A.3.2 | **Gestão de Metas** | 18d | 2015-05-11 | 2015-06-03 |  |  | 0d |  |
| 68 | A.3.2.1 | **VS** | 12d | 2015-05-11 | 2015-05-26 |  |  | 30d |  |
| 69 |  | Alteração de label na instância | 1d | 2015-05-11 | 2015-05-11 | 189, 192 |  | 30d |  |
| 70 |  | Configurar o mapa de rota | 1d | 2015-05-12 | 2015-05-12 | 69 |  | 30d |  |

| ID | WBS | Task | Duration | Start | Finish | Predecessors | Total float |
| --- | --- | --- | --- | --- | --- | --- | --- |
| 71 |  | Configurar Formulários | 2d | 2015-05-13 | 2015-05-14 | 70 | 30d |
| 72 |  | Configurar permissões | 1d | 2015-05-15 | 2015-05-15 | 71 | 30d |
| 73 |  | Definir layout para importar a Biblioteca de Metas | 1d | 2015-05-18 | 2015-05-18 | 72 | 30d |
| 74 |  | Definir layout para carga de empregados | 1d | 2015-05-19 | 2015-05-19 | 73 | 30d |
| 75 |  | Passar para Votorantim informações para carga de fotos | 1d | 2015-05-20 | 2015-05-20 | 74 | 30d |
| 76 |  | Fazer a carga de metas | 1d | 2015-05-21 | 2015-05-21 | 75 | 30d |
| 77 |  | Fazer a carga de empregados | 1d | 2015-05-22 | 2015-05-22 | 76 | 30d |
| 78 |  | Agendar job para carga de fotos | 1d | 2015-05-25 | 2015-05-25 | 77 | 30d |
| 79 |  | Configurar Relatórios | 1d | 2015-05-26 | 2015-05-26 | 78 | 30d |
| 80 |  | Onda 2 - Entrega Fase 3 - Execução - VS | 0d | 2015-05-26 | 2015-05-26 | 79 | 41d |
| 81 | A.3.2.3 | **VM** | 12d | 2015-05-11 | 2015-05-26 |  | 0d |
| 82 |  | Alteração de label na instância | 1d | 2015-05-11 | 2015-05-11 | 189 | 0d |
| 83 |  | Configurar o mato de rota | 1d | 2015-05-12 | 2015-05-12 | 82 | 0d |
| 84 |  | Configurar Formulários | 2d | 2015-05-13 | 2015-05-14 | 83 | 0d |
| 85 |  | Configurar permissões | 1d | 2015-05-15 | 2015-05-15 | 84 | 0d |
| 86 |  | Definir layout para importar a Biblioteca de Metas | 1d | 2015-05-18 | 2015-05-18 | 85 | 0d |
| 87 |  | Definir layout para carga de empregados | 1d | 2015-05-19 | 2015-05-19 | 86 | 0d |
| 88 |  | Passar para Votorantim informações para carga de fotos | 1d | 2015-05-20 | 2015-05-20 | 87 | 0d |
| 89 |  | Fazer a carga de metas | 1d | 2015-05-21 | 2015-05-21 | 88 | 0d |
| 90 |  | Fazer a carga de empregados | 1d | 2015-05-22 | 2015-05-22 | 89 | 0d |
| 91 |  | Agendar job para carga de fotos | 1d | 2015-05-25 | 2015-05-25 | 90 | 0d |
| 92 |  | Configurar Relatórios | 1d | 2015-05-26 | 2015-05-26 | 91 | 0d |
| 93 |  | Onda 2 - Entrega Fase 3 - Execução - VM | 0d | 2015-05-26 | 2015-05-26 | 92 | 41d |
| 94 | A.3.2.4 | **VID São Paulo e Curitiba** | 6d | 2015-05-27 | 2015-06-03 |  | 35d |
| 95 |  | Alteração de label na instância | 0.5d | 2015-05-27 | 2015-05-27 | 79 | 35d |
| 96 |  | Configurar o mapa de rota | 0.5d | 2015-05-27 | 2015-05-27 | 95 | 35d |
| 97 |  | Configurar Formulários | 1d | 2015-05-28 | 2015-05-28 | 96 | 35d |
| 98 |  | Configurar permissões | 0.5d | 2015-05-29 | 2015-05-29 | 97 | 35d |
| 99 |  | Definir layout para importar a Biblioteca de Metas | 0.5d | 2015-05-29 | 2015-05-29 | 98 | 35d |
| 100 |  | Definir layout para carga de empregados | 0.5d | 2015-06-01 | 2015-06-01 | 99 | 35d |
| 101 |  | Passar para Votorantim informações para carga de fotos | 0.5d | 2015-06-01 | 2015-06-01 | 100 | 35d |
| 102 |  | Fazer a carga de metas | 0.5d | 2015-06-02 | 2015-06-02 | 101 | 35d |
| 103 |  | Fazer a carga de empregados | 0.5d | 2015-06-02 | 2015-06-02 | 102 | 35d |
| 104 |  | Agendar job para carga de fotos | 0.5d | 2015-06-03 | 2015-06-03 | 103 | 35d |
| 105 |  | Configurar Relatórios | 0.5d | 2015-06-03 | 2015-06-03 | 104 | 35d |
| 106 |  | Onda 2 - Entrega Fase 3 - Execução - VID São Paulo e Curitiba | 0d | 2015-06-03 | 2015-06-03 | 105 | 35d |
| 107 | A.3.2.5 | **VE** | 6d | 2015-05-27 | 2015-06-03 |  | 35d |
| 108 |  | Alteração de label na instância | 0.5d | 2015-05-27 | 2015-05-27 | 92 | 35d |
| 109 |  | Configurar o mapa de rota | 0.5d | 2015-05-27 | 2015-05-27 | 108 | 35d |
| 110 |  | Configurar Formulários | 1d | 2015-05-28 | 2015-05-28 | 109 | 35d |
| 111 |  | Configurar permissões | 0.5d | 2015-05-29 | 2015-05-29 | 110 | 35d |
| 112 |  | Definir layout para importar a Biblioteca de Metas | 0.5d | 2015-05-29 | 2015-05-29 | 111 | 35d |
| 113 |  | Definir layout para carga de empregados | 0.5d | 2015-06-01 | 2015-06-01 | 112 | 35d |
| 114 |  | Passar para Votorantim informações para carga de fotos | 0.5d | 2015-06-01 | 2015-06-01 | 113 | 35d |
| 115 |  | Fazer a carga de metas | 0.5d | 2015-06-02 | 2015-06-02 | 114 | 35d |
| 116 |  | Fazer a carga de empregados | 0.5d | 2015-06-02 | 2015-06-02 | 115 | 35d |
| 117 |  | Agendar job para carga de fotos | 0.5d | 2015-06-03 | 2015-06-03 | 116 | 35d |
| 118 |  | Configurar Relatórios | 0.5d | 2015-06-03 | 2015-06-03 | 117 | 35d |
| 119 |  | Onda 2 - Entrega Fase 3 - Execução - VE | 0d | 2015-06-03 | 2015-06-03 | 118 | 35d |
| 120 |  | Onda 2 - Entrega Final Fase 3 - Execução | 0d | 2015-06-03 | 2015-06-03 | 118 | 35d |
| 121 | A.4 | **Fase 4 - Preparação Final** | 70d | 2015-03-27 | 2015-07-10 |  | 7d |
| 122 | A.4.1 | **Testes Funcionais** | 50d | 2015-03-27 | 2015-06-12 |  | 7d |
| 123 | 1.4.1.1 | **Gestão de Competência** | 13d | 2015-03-27 | 2015-04-15 |  | 7d |
| 124 | A.4.1.1 | **VS** | 5d | 2015-03-27 | 2015-04-02 |  | 30d |
| 125 |  | Realizar Testes Funcionais - VS | 2.5d | 2015-03-27 | 2015-03-31 | 36 | 30d |
| 126 |  | Ajustes Testes Funcionais - VS | 2.5d | 2015-03-31 | 2015-04-02 | 125 | 30d |
| 127 | A.4.1.2 | **VM** | 5d | 2015-03-27 | 2015-04-02 |  | 62d |
| 128 |  | Realizar Testes Funcionais - VM | 2.5d | 2015-03-27 | 2015-03-31 | 45 | 62d |
| 129 |  | Ajustes Testes Funcionais - VM | 2.5d | 2015-03-31 | 2015-04-02 | 128 | 62d |
| 130 |  | Onda 1 - Entrega Testes Funcionais - VS e VM | 0d | 2015-04-02 | 2015-04-02 | 126, 129 | 75d |
| 131 | 1.4.1.1.4 | **VID São Paulo e Curitiba** | 6d | 2015-04-08 | 2015-04-15 |  | 0d |
| 132 |  | Realizar Testes Funcionais - VID | 3d | 2015-04-08 | 2015-04-10 | 54 | 0d |
| 133 |  | Ajustes Testes Funcionais - VID | 3d | 2015-04-13 | 2015-04-15 | 132 | 0d |
| 134 | 1.4.1.1.5 | **VE** | 6d | 2015-04-08 | 2015-04-15 |  | 58d |
| 135 |  | Realizar Testes Funcionais - VE | 3d | 2015-04-08 | 2015-04-10 | 63 | 58d |
| 136 |  | Ajustes Testes Funcionais - VE | 3d | 2015-04-13 | 2015-04-15 | 135 | 58d |
| 137 |  | Onda 1 - Entrega Testes Funcionais - VID SP - VID CTB - VE | 0d | 2015-04-15 | 2015-04-15 | 133, 136 | 67d |
| 138 | 1.4.1.2 | **Gestão de Metas** | 11d | 2015-05-27 | 2015-06-12 |  | 0d |
| 139 | 1.4.1.2.1 | **VS** | 6d | 2015-05-27 | 2015-06-03 |  | 30d |
| 140 |  | Realizar Testes Funcionais | 3d | 2015-05-27 | 2015-05-29 | 79 | 30d |

| ID | WBS | Task | Duration | Start | Finish | Predecessors | Total float |
| --- | --- | --- | --- | --- | --- | --- | --- |
| 141 |  | Ajustes Testes Funcionais | 3d | 2015-06-01 | 2015-06-03 | 140 | 30d |
| 142 | 1.4.1.2.2 | **VM** | 6d | 2015-05-27 | 2015-06-03 |  | 0d |
| 143 |  | Realizar Testes Funcionais | 3d | 2015-05-27 | 2015-05-29 | 92 | 0d |
| 144 |  | Ajustes Testes Funcionais | 3d | 2015-06-01 | 2015-06-03 | 143 | 0d |
| 145 |  | Onda 2 - Entrega Testes Funcionais - VS e VM | 0d | 2015-06-03 | 2015-06-03 | 141, 144 | 35d |
| 146 | 1.4.1.2.4 | **VID São Paulo e Curitiba** | 5d | 2015-06-08 | 2015-06-12 |  | 30d |
| 147 |  | Realizar Testes Funcionais | 2d | 2015-06-08 | 2015-06-09 | 141 | 30d |
| 148 |  | Ajustes Testes Funcionais | 3d | 2015-06-10 | 2015-06-12 | 147 | 30d |
| 149 | 1.4.1.2.5 | **VE** | 5d | 2015-06-08 | 2015-06-12 |  | 0d |
| 150 |  | Realizar Testes Funcionais | 2d | 2015-06-08 | 2015-06-09 | 144 | 0d |
| 151 |  | Ajustes Testes Funcionais | 3d | 2015-06-10 | 2015-06-12 | 150 | 0d |
| 152 |  | Onda 2 - Entrega Testes Funcionais - VID SP - VID CTB - VE | 0d | 2015-06-12 | 2015-06-12 | 148, 151 | 30d |
| 153 | A.4.2 | **Testes Unitários** | 55d | 2015-04-06 | 2015-06-26 |  | 8d |
| 154 | 1.4.2.1 | **Gestão de Competência** | 17d | 2015-04-06 | 2015-04-30 |  | 8d |
| 155 | 1.4.2.1.1 | **VS** | 5d | 2015-04-06 | 2015-04-10 |  | 30d |
| 156 |  | Realizar Testes Unitários | 2.5d | 2015-04-06 | 2015-04-08 | 126 | 30d |
| 157 |  | Ajustes Testes Unitários | 2.5d | 2015-04-08 | 2015-04-10 | 156 | 30d |
| 158 | 1.4.2.1.2 | **VM** | 5d | 2015-04-06 | 2015-04-10 |  | 62d |
| 159 |  | Realizar Testes Unitários | 2.5d | 2015-04-06 | 2015-04-08 | 129 | 62d |
| 160 |  | Ajustes Testes Unitários | 2.5d | 2015-04-08 | 2015-04-10 | 159 | 62d |
| 161 |  | Onda 1 - Entrega Testes Unitários - VS e VM | 0d | 2015-04-10 | 2015-04-10 | 157, 160 | 70d |
| 162 | 1.4.2.1.4 | **VID São Paulo e Curitiba** | 9d | 2015-04-16 | 2015-04-30 |  | 0d |
| 163 |  | Realizar Testes Unitários | 5d | 2015-04-16 | 2015-04-24 | 133 | 0d |
| 164 |  | Ajustes Testes Unitários | 4d | 2015-04-27 | 2015-04-30 | 163 | 0d |
| 165 | 1.4.2.1.5 | **VE** | 9d | 2015-04-16 | 2015-04-30 |  | 58d |
| 166 |  | Realizar Testes Unitários | 5d | 2015-04-16 | 2015-04-24 | 136 | 58d |
| 167 |  | Ajustes Testes Unitários | 4d | 2015-04-27 | 2015-04-30 | 166 | 58d |
| 168 |  | Onda 1 - Entrega Testes Unitários - VID SP - VID CTB - VE | 0d | 2015-04-30 | 2015-04-30 | 164, 167 | 58d |
| 169 | 1.4.2.2 | **Gestão de Metas** | 10d | 2015-06-15 | 2015-06-26 |  | 0d |
| 170 | 1.4.2.2.1 | **VS** | 5d | 2015-06-15 | 2015-06-19 |  | 0d |
| 171 |  | Realizar Testes Unitários | 2.5d | 2015-06-15 | 2015-06-17 | 151 | 0d |
| 172 |  | Ajustes de Testes Unitários | 2.5d | 2015-06-17 | 2015-06-19 | 171 | 0d |
| 173 | 1.4.2.2.2 | **VM** | 5d | 2015-06-15 | 2015-06-19 |  | 0d |
| 174 |  | Realizar Testes Unitários | 2.5d | 2015-06-15 | 2015-06-17 | 151 | 0d |
| 175 |  | Ajustes de Testes Unitários | 2.5d | 2015-06-17 | 2015-06-19 | 174 | 0d |
| 176 |  | Onda 2 - Entrega Testes Unitários - VS e VM | 0d | 2015-06-19 | 2015-06-19 | 172, 175 | 25d |
| 177 | 1.4.2.2.4 | **VID São Paulo e Curitiba** | 5d | 2015-06-22 | 2015-06-26 |  | 0d |
| 178 |  | Realizar Testes Unitários | 2.5d | 2015-06-22 | 2015-06-24 | 172 | 0d |
| 179 |  | Ajustes de Testes Unitários | 2.5d | 2015-06-24 | 2015-06-26 | 178 | 0d |
| 180 | 1.4.2.2.5 | **VE** | 5d | 2015-06-22 | 2015-06-26 |  | 0d |
| 181 |  | Realizar Testes Unitários | 2.5d | 2015-06-22 | 2015-06-24 | 175 | 0d |
| 182 |  | Ajustes de Testes Unitários | 2.5d | 2015-06-24 | 2015-06-26 | 181 | 0d |
| 183 |  | Onda 2 - Entrega Testes Unitários - VID SP - VID CTB - VE | 0d | 2015-06-26 | 2015-06-26 | 179, 182 | 20d |
| 184 | 1.4.3 | **Testes Integrados** | 60d | 2015-04-13 | 2015-07-10 |  | 10d |
| 185 | 1.4.3.1 | **Gestão de Competência** | 22d | 2015-04-13 | 2015-05-15 |  | 12d |
| 186 |  | Testes Integrados VS | 8d | 2015-04-13 | 2015-04-24 | 157 | 30d |
| 187 |  | Testes Integrados VM | 8d | 2015-04-13 | 2015-04-24 | 160 | 62d |
| 188 |  | Testes Integrados VID São Paulo e Curitiba | 5d | 2015-05-04 | 2015-05-08 | 164 | 35d |
| 189 |  | Testes Integrados VE | 5d | 2015-05-04 | 2015-05-08 | 164 | 0d |
| 190 | A.4.6 | **Ajustes Testes Integrados** | 14d | 2015-04-27 | 2015-05-15 |  | 30d |
| 191 |  | VS | 4d | 2015-04-27 | 2015-04-30 | 186 | 45d |
| 192 |  | VM | 9d | 2015-04-27 | 2015-05-08 | 186 | 30d |
| 193 |  | VID São Paulo e Curitiba | 5d | 2015-05-11 | 2015-05-15 | 188 | 35d |
| 194 |  | VE | 5d | 2015-05-11 | 2015-05-15 | 189 | 35d |
| 195 |  | Onda 1 - Entrega Fase 4 - Preparação Final | 0d | 2015-05-15 | 2015-05-15 | 194 | 48d |
| 196 | 1.4.3.2 | **Gestão de Metas** | 15d | 2015-06-22 | 2015-07-10 |  | 5d |
| 197 |  | Testes Integrados VS | 5d | 2015-06-22 | 2015-06-26 | 172 | 5d |
| 198 |  | Testes Integrados VM | 5d | 2015-06-22 | 2015-06-26 | 175 | 5d |
| 199 |  | Testes Integrados VID São Paulo e Curitiba | 5d | 2015-06-29 | 2015-07-03 | 179 | 0d |
| 200 |  | Testes Integrados VE | 5d | 2015-06-29 | 2015-07-03 | 182 | 0d |
| 201 | 1.4.3.2.5 | **Ajustes Testes Integrados** | 10d | 2015-06-29 | 2015-07-10 |  | 0d |
| 202 |  | VS | 5d | 2015-06-29 | 2015-07-03 | 197 | 5d |
| 203 |  | VM | 5d | 2015-06-29 | 2015-07-03 | 198 | 5d |
| 204 |  | VID São Paulo e Curitiba | 5d | 2015-07-06 | 2015-07-10 | 199 | 0d |
| 205 |  | VE | 5d | 2015-07-06 | 2015-07-10 | 200 | 0d |
| 206 |  | Onda 2 - Entrega Fase 4 - Preparação Final | 0d | 2015-07-10 | 2015-07-10 | 205 | 10d |
| 207 | A.5 | **Fase 5 - Go Live e Operação Assistida** | 48d | 2015-05-18 | 2015-07-24 |  | 0d |
| 208 | A.5.1 | **Go Live - Onda 1 - Gestão de Competência** | 13d | 2015-05-18 | 2015-06-03 |  | 35d |
| 209 |  | Treinamento | 5d | 2015-05-18 | 2015-05-22 | 190 | 35d |
| 210 |  | Cutover | 5d | 2015-05-25 | 2015-05-29 | 209 | 35d |

| ID | WBS | Task | Duration | Start | Finish | Predecessors | Total float |
| --- | --- | --- | --- | --- | --- | --- | --- |
| 211 |  | Onda 1 - Go Live | 0d | 2015-05-29 | 2015-05-29 | 210 | 35d |
| 212 |  | Operação Assistida | 3d | 2015-06-01 | 2015-06-03 | 211 | 35d |
| 213 | A.5.2 | **Go Live - Onda 2 - Gestão de Metas** | 10d | 2015-07-13 | 2015-07-24 |  | 0d |
| 214 |  | Treinamento | 5d | 2015-07-13 | 2015-07-17 | 202, 203, 204, 205 | 5d |
| 215 |  | Cutover | 5d | 2015-07-13 | 2015-07-17 | 202, 203, 204, 205 | 0d |
| 216 |  | Onda 2 - Go Live | 0d | 2015-07-17 | 2015-07-17 | 215 | 0d |
| 217 |  | Operação Assistida | 5d | 2015-07-20 | 2015-07-24 | 216 | 0d |

## Version 2 (data date 2015-03-20, saved 2015-03-20, file 2_Projeto Gestão de Competências.mpp)

Note of the change: Inicial

Last finish 2015-07-24 → 2015-06-11 (-43d).

Removed: 67 Gestão de Metas; 68 VS; 69 Alteração de label na instância; 70 Configurar o mapa de rota; 71 Configurar Formulários; 72 Configurar permissões; 73 Definir layout para importar a Biblioteca de Metas; 74 Definir layout para carga de empregados; 75 Passar para Votorantim informações para carga de fotos; 76 Fazer a carga de metas; 77 Fazer a carga de empregados; 78 Agendar job para carga de fotos; 79 Configurar Relatórios; 80 Onda 2 - Entrega Fase 3 - Execução - VS; 81 VM; 82 Alteração de label na instância; 83 Configurar o mato de rota; 84 Configurar Formulários; 85 Configurar permissões; 86 Definir layout para importar a Biblioteca de Metas; 87 Definir layout para carga de empregados; 88 Passar para Votorantim informações para carga de fotos; 89 Fazer a carga de metas; 90 Fazer a carga de empregados; 91 Agendar job para carga de fotos; 92 Configurar Relatórios; 93 Onda 2 - Entrega Fase 3 - Execução - VM; 94 VID São Paulo e Curitiba; 95 Alteração de label na instância; 96 Configurar o mapa de rota; 97 Configurar Formulários; 98 Configurar permissões; 99 Definir layout para importar a Biblioteca de Metas; 100 Definir layout para carga de empregados; 101 Passar para Votorantim informações para carga de fotos; 102 Fazer a carga de metas; 103 Fazer a carga de empregados; 104 Agendar job para carga de fotos; 105 Configurar Relatórios; 106 Onda 2 - Entrega Fase 3 - Execução - VID São Paulo e Curitiba; 107 VE; 108 Alteração de label na instância; 109 Configurar o mapa de rota; 110 Configurar Formulários; 111 Configurar permissões; 112 Definir layout para importar a Biblioteca de Metas; 113 Definir layout para carga de empregados; 114 Passar para Votorantim informações para carga de fotos; 115 Fazer a carga de metas; 116 Fazer a carga de empregados; 117 Agendar job para carga de fotos; 118 Configurar Relatórios; 119 Onda 2 - Entrega Fase 3 - Execução - VE; 120 Onda 2 - Entrega Final Fase 3 - Execução; 138 Gestão de Metas; 139 VS; 140 Realizar Testes Funcionais; 141 Ajustes Testes Funcionais; 142 VM; 143 Realizar Testes Funcionais; 144 Ajustes Testes Funcionais; 145 Onda 2 - Entrega Testes Funcionais - VS e VM; 146 VID São Paulo e Curitiba; 147 Realizar Testes Funcionais; 148 Ajustes Testes Funcionais; 149 VE; 150 Realizar Testes Funcionais; 151 Ajustes Testes Funcionais; 152 Onda 2 - Entrega Testes Funcionais - VID SP - VID CTB - VE; 169 Gestão de Metas; 170 VS; 171 Realizar Testes Unitários; 172 Ajustes de Testes Unitários; 173 VM; 174 Realizar Testes Unitários; 175 Ajustes de Testes Unitários; 176 Onda 2 - Entrega Testes Unitários - VS e VM; 177 VID São Paulo e Curitiba; 178 Realizar Testes Unitários; 179 Ajustes de Testes Unitários; 180 VE; 181 Realizar Testes Unitários; 182 Ajustes de Testes Unitários; 183 Onda 2 - Entrega Testes Unitários - VID SP - VID CTB - VE; 196 Gestão de Metas; 197 Testes Integrados VS; 198 Testes Integrados VM; 199 Testes Integrados VID São Paulo e Curitiba; 200 Testes Integrados VE; 201 Ajustes Testes Integrados; 202 VS; 203 VM; 204 VID São Paulo e Curitiba; 205 VE; 206 Onda 2 - Entrega Fase 4 - Preparação Final; 213 Go Live - Onda 2 - Gestão de Metas; 214 Treinamento; 215 Cutover; 216 Onda 2 - Go Live; 217 Operação Assistida

Changed:

| ID | Task | Start | Finish | Duration | Complete | Total float | Other |
| --- | --- | --- | --- | --- | --- | --- | --- |
| 1 | **Projeto de Metas e Competências SuccessFactors** |  | 2015-07-24 → 2015-06-11 (-43d) | 114d → 82.75d | 9% → 18% |  |  |
| 8 | **Fase 2 - Business BluePrint** |  | 2015-03-06 → 2015-03-12 (+6d) | 10d → 13.75d | 86% → 91% | 94d → 59d |  |
| 9 | **Levantamento Gestão de Metas** |  |  |  | 90% → 91% | 94d → 62.75d |  |
| 10 | Mapeamento dos Processos |  | 2015-02-25 A → 2015-03-02 A (+5d) | 3d → 6d |  |  | resources none → HRST 1; HRST 2; HRST 3 |
| 11 | Elaboração dos BBPs |  |  |  |  |  | resources none → HRST 1; HRST 2; HRST 3 |
| 12 | Aprovação / Ajustes dos BBPs |  |  |  | 50% → 40% | 94d → 62.75d | resources none → HRST 1; HRST 2; HRST 3 |
| 13 | **Levantamento Gestão de Competência** |  | 2015-03-06 → 2015-03-12 (+6d) | 6.25d → 10.75d | 82% → 91% | 94.75d → 59d |  |
| 14 | Mapeamento dos Processos |  | 2015-03-04 A → 2015-03-11 A (+7d) | 5d → 10d |  |  | resources none → HRST 1; HRST 2; HRST 3 |
| 15 | **Elaboração dos BBPs** |  | 2015-03-05 A → 2015-03-12 A (+7d) | 0.5d → 5.5d |  |  |  |
| 16 | EP |  | 2015-03-05 A → 2015-03-12 A (+7d) | 0.5d → 1d |  |  | resources HRST 1 → HRST 1; HRST 2; HRST 3 |
| 17 | PDI |  |  |  |  |  | resources HRST 1 → HRST 1; HRST 2; HRST 3 |
| 18 | Competência |  |  |  |  |  | resources HRST 2 → HRST 1; HRST 2; HRST 3 |
| 19 | Sucessão |  |  |  |  |  | resources HRST 2 → HRST 1; HRST 2; HRST 3 |
| 20 | **Aprovação / Ajustes dos BBPs** |  | 2015-03-06 → 2015-03-12 (+6d) | 1d → 5.5d | 50% → 63% | 94.75d → 59d |  |
| 21 | EP |  | 2015-03-06 → 2015-03-12 (+6d) |  | 50% → 75% | 0.75d → 0d | resources HRST 1 → HRST 1; HRST 2; HRST 3 |
| 22 | PDI |  |  |  | 50% → 75% | 94.75d → 63.5d | resources HRST 1 → HRST 1; HRST 2; HRST 3 |
| 23 | Competência |  |  |  |  | 94.75d → 63.5d | resources HRST 2 → HRST 1; HRST 2; HRST 3 |
| 24 | Sucessão |  |  |  |  | 94.75d → 63.5d | resources HRST 2 → HRST 1; HRST 2; HRST 3 |
| 26 | **Fase 3 - Execução** | 2015-03-09 → 2015-03-12 (+3d) | 2015-06-03 → 2015-04-27 (-37d) | 59d → 29d |  |  |  |
| 27 | **Gestão de Competência** | 2015-03-09 → 2015-03-12 (+3d) | 2015-04-17 → 2015-04-27 (+10d) |  |  |  |  |
| 28 | **VS** | 2015-03-09 → 2015-03-12 (+3d) | 2015-03-26 → 2015-04-01 (+6d) |  |  |  |  |
| 29 | Configurar EP (Employee Profile) | 2015-03-09 → 2015-03-12 (+3d) | 2015-03-11 → 2015-03-17 (+6d) |  |  |  | resources HRST 1; HRST 2 → none |
| 30 | Configurar PDI (Palno de Desenvolvimento Individual) VS | 2015-03-12 → 2015-03-17 (+5d) | 2015-03-12 → 2015-03-18 (+6d) |  |  |  | resources HRST 1 → none |
| 31 | Configurar PM - VS | 2015-03-13 → 2015-03-18 (+5d) | 2015-03-20 → 2015-03-26 (+6d) |  |  |  | resources HRST 1 → none |
| 32 | Configurar Sucessão - VS | 2015-03-23 → 2015-03-26 (+3d) | 2015-03-25 → 2015-03-31 (+6d) |  |  |  | resources HRST 1 → none |
| 33 | **Configurar Relatórios** | 2015-03-26 → 2015-03-31 (+5d) | 2015-03-26 → 2015-04-01 (+6d) |  |  |  |  |
| 34 | Cópia dos Relatórios da VC - VS | 2015-03-26 → 2015-03-31 (+5d) | 2015-03-26 → 2015-04-01 (+6d) |  |  |  | resources HRST 1 → none |
| 35 | Escala - Descrição e Pontuação - VS | 2015-03-26 → 2015-04-01 (+6d) | 2015-03-26 → 2015-04-01 (+6d) |  |  |  | resources HRST 1 → none |
| 36 | Comparativo entre Desempenho na Função e Crenças - VS | 2015-03-26 → 2015-04-01 (+6d) | 2015-03-26 → 2015-04-01 (+6d) |  |  |  | resources HRST 1 → none |
| 37 | Onda 1 - Entrega Fase 3 - Execução - VS | 2015-03-26 → 2015-04-01 (+6d) | 2015-03-26 → 2015-04-01 (+6d) |  |  | 80d → 45d |  |
| 38 | **VM** | 2015-03-12 → 2015-03-17 (+5d) | 2015-03-26 → 2015-04-01 (+6d) |  |  | 58d → 23d |  |
| 39 | Configurar PDI (Palno de Desenvolvimento Individual) - VM | 2015-03-12 → 2015-03-17 (+5d) | 2015-03-12 → 2015-03-18 (+6d) |  |  | 58d → 23d | resources HRST 2 → none |
| 40 | Configurar PM - VM | 2015-03-13 → 2015-03-18 (+5d) | 2015-03-20 → 2015-03-26 (+6d) |  |  | 58d → 23d | resources HRST 2 → none |
| 41 | Configurar Sucessão - VM | 2015-03-23 → 2015-03-26 (+3d) | 2015-03-25 → 2015-03-31 (+6d) |  |  | 58d → 23d | resources HRST 2 → none |
| 42 | **Configurar Relatórios** | 2015-03-26 → 2015-03-31 (+5d) | 2015-03-26 → 2015-04-01 (+6d) |  |  | 58d → 23d |  |
| 43 | Cópia dos Relatórios da VC - VM | 2015-03-26 → 2015-03-31 (+5d) | 2015-03-26 → 2015-04-01 (+6d) |  |  | 58d → 23d | resources HRST 2 → none |
| 44 | Escala - Descrição e Pontuação - VM | 2015-03-26 → 2015-04-01 (+6d) | 2015-03-26 → 2015-04-01 (+6d) |  |  | 58d → 23d | resources HRST 2 → none |
| 45 | Comparativo entre Desempenho na Função e Crenças - VM | 2015-03-26 → 2015-04-01 (+6d) | 2015-03-26 → 2015-04-01 (+6d) |  |  | 58d → 23d | resources HRST 2 → none |
| 46 | Onda 1 - Entrega Fase 3 - Execução - VM | 2015-03-26 → 2015-04-01 (+6d) | 2015-03-26 → 2015-04-01 (+6d) |  |  | 80d → 45d |  |
| 47 | **VID São Paulo e Curitiba** | 2015-03-27 → 2015-04-01 (+5d) | 2015-04-07 → 2015-04-13 (+6d) |  |  |  |  |
| 48 | Configurar PDI (Palno de Desenvolvimento Individual) - VID | 2015-03-27 → 2015-04-01 (+5d) | 2015-03-27 → 2015-04-02 (+6d) |  |  |  | resources HRST 1 → none |
| 49 | Configurar PM - VID | 2015-03-30 → 2015-04-02 (+3d) | 2015-04-01 → 2015-04-08 (+7d) |  |  |  | resources HRST 1 → none |
| 50 | Configurar Sucessão - VID | 2015-04-02 → 2015-04-08 (+6d) | 2015-04-06 → 2015-04-10 (+4d) |  |  |  | resources HRST 1 → none |
| 51 | **Configurar Relatórios** | 2015-04-07 → 2015-04-10 (+3d) | 2015-04-07 → 2015-04-13 (+6d) |  |  |  |  |
| 52 | Cópia dos Relatórios da VC - VID | 2015-04-07 → 2015-04-10 (+3d) | 2015-04-07 → 2015-04-13 (+6d) |  |  |  | resources HRST 1 → none |
| 53 | Escala - Descrição e Pontuação - VID | 2015-04-07 → 2015-04-13 (+6d) | 2015-04-07 → 2015-04-13 (+6d) |  |  |  | resources HRST 1 → none |
| 54 | Comparativo entre Desempenho na Função e Crenças - VID | 2015-04-07 → 2015-04-13 (+6d) | 2015-04-07 → 2015-04-13 (+6d) |  |  |  | resources HRST 1 → none |
| 55 | Onda 1 - Entrega Fase 3 - Execução - VID São Paulo e Curitiba | 2015-04-07 → 2015-04-13 (+6d) | 2015-04-07 → 2015-04-13 (+6d) |  |  | 73d → 38d |  |
| 56 | **VE** | 2015-03-27 → 2015-04-01 (+5d) | 2015-04-07 → 2015-04-13 (+6d) |  |  | 58d → 23d |  |
| 57 | Configurar PDI (Palno de Desenvolvimento Individual) - VE | 2015-03-27 → 2015-04-01 (+5d) | 2015-03-27 → 2015-04-02 (+6d) |  |  | 58d → 23d | resources HRST 2 → none |
| 58 | Configurar PM - VE | 2015-03-30 → 2015-04-02 (+3d) | 2015-04-01 → 2015-04-08 (+7d) |  |  | 58d → 23d | resources HRST 2 → none |
| 59 | Configurar Sucessão - VE | 2015-04-02 → 2015-04-08 (+6d) | 2015-04-06 → 2015-04-10 (+4d) |  |  | 58d → 23d | resources HRST 2 → none |
| 60 | **Configurar Relatórios** | 2015-04-07 → 2015-04-10 (+3d) | 2015-04-07 → 2015-04-13 (+6d) |  |  | 58d → 23d |  |
| 61 | Cópia dos Relatórios da VC - VE | 2015-04-07 → 2015-04-10 (+3d) | 2015-04-07 → 2015-04-13 (+6d) |  |  | 58d → 23d | resources HRST 2 → none |
| 62 | Escala - Descrição e Pontuação - VE | 2015-04-07 → 2015-04-13 (+6d) | 2015-04-07 → 2015-04-13 (+6d) |  |  | 58d → 23d | resources HRST 2 → none |
| 63 | Comparativo entre Desempenho na Função e Crenças - VE | 2015-04-07 → 2015-04-13 (+6d) | 2015-04-07 → 2015-04-13 (+6d) |  |  | 58d → 23d | resources HRST 2 → none |
| 64 | Onda 1 - Entrega Fase 3 - Execução - VE | 2015-04-07 → 2015-04-13 (+6d) | 2015-04-07 → 2015-04-13 (+6d) |  |  | 73d → 38d |  |
| 65 | Desenvolvimento Abap - Ajustes Integração | 2015-03-12 → 2015-03-17 (+5d) | 2015-04-17 → 2015-04-27 (+10d) |  |  | 65d → 30d | resources HRST 3 → none |
| 66 | Onda 1 - Entrega Final - Fase 3 - Execução | 2015-04-17 → 2015-04-27 (+10d) | 2015-04-17 → 2015-04-27 (+10d) |  |  | 65d → 30d |  |
| 67 | **Fase 4 - Preparação Final** | 2015-03-27 → 2015-04-01 (+5d) | 2015-07-10 → 2015-05-21 (-50d) | 70d → 32d |  | 7d → 5d |  |
| 68 | **Testes Funcionais** | 2015-03-27 → 2015-04-01 (+5d) | 2015-06-12 → 2015-04-23 (-50d) | 50d → 13d |  | 7d → 5d |  |
| 69 | **Gestão de Competência** | 2015-03-27 → 2015-04-01 (+5d) | 2015-04-15 → 2015-04-23 (+8d) |  |  | 7d → 5d |  |
| 70 | **VS** | 2015-03-27 → 2015-04-01 (+5d) | 2015-04-02 → 2015-04-09 (+7d) |  |  | 30d → 5d |  |
| 71 | Realizar Testes Funcionais - VS | 2015-03-27 → 2015-04-01 (+5d) | 2015-03-31 → 2015-04-07 (+7d) |  |  | 30d → 5d | resources HRST 1 → none |
| 72 | Ajustes Testes Funcionais - VS | 2015-03-31 → 2015-04-07 (+7d) | 2015-04-02 → 2015-04-09 (+7d) |  |  | 30d → 5d | resources HRST 1 → none |
| 73 | **VM** | 2015-03-27 → 2015-04-01 (+5d) | 2015-04-02 → 2015-04-09 (+7d) |  |  | 62d → 27d |  |
| 74 | Realizar Testes Funcionais - VM | 2015-03-27 → 2015-04-01 (+5d) | 2015-03-31 → 2015-04-07 (+7d) |  |  | 62d → 27d | resources HRST 2 → none |
| 75 | Ajustes Testes Funcionais - VM | 2015-03-31 → 2015-04-07 (+7d) | 2015-04-02 → 2015-04-09 (+7d) |  |  | 62d → 27d | resources HRST 2 → none |
| 76 | Onda 1 - Entrega Testes Funcionais - VS e VM | 2015-04-02 → 2015-04-09 (+7d) | 2015-04-02 → 2015-04-09 (+7d) |  |  | 75d → 40d |  |
| 77 | **VID São Paulo e Curitiba** | 2015-04-08 → 2015-04-13 (+5d) | 2015-04-15 → 2015-04-23 (+8d) |  |  |  |  |

| ID | Task | Start | Finish | Duration | Total float | Other |
| --- | --- | --- | --- | --- | --- | --- |
| 78 | Realizar Testes Funcionais - VID | 2015-04-08 → 2015-04-13 (+5d) | 2015-04-10 → 2015-04-16 (+6d) |  |  | resources HRST 1 → none |
| 79 | Ajustes Testes Funcionais - VID | 2015-04-13 → 2015-04-16 (+3d) | 2015-04-15 → 2015-04-23 (+8d) |  |  | resources HRST 1 → none |
| 80 | **VE** | 2015-04-08 → 2015-04-13 (+5d) | 2015-04-15 → 2015-04-23 (+8d) |  | 58d → 23d |  |
| 81 | Realizar Testes Funcionais - VE | 2015-04-08 → 2015-04-13 (+5d) | 2015-04-10 → 2015-04-16 (+6d) |  | 58d → 23d | resources HRST 2 → none |
| 82 | Ajustes Testes Funcionais - VE | 2015-04-13 → 2015-04-16 (+3d) | 2015-04-15 → 2015-04-23 (+8d) |  | 58d → 23d | resources HRST 2 → none |
| 83 | Onda 1 - Entrega Testes Funcionais - VID SP - VID CTB - VE | 2015-04-15 → 2015-04-23 (+8d) | 2015-04-15 → 2015-04-23 (+8d) |  | 67d → 32d |  |
| 84 | **Testes Unitários** | 2015-04-06 → 2015-04-09 (+3d) | 2015-06-26 → 2015-05-07 (-50d) | 55d → 17d | 8d → 5d |  |
| 85 | **Gestão de Competência** | 2015-04-06 → 2015-04-09 (+3d) | 2015-04-30 → 2015-05-07 (+7d) |  | 8d → 5d |  |
| 86 | **VS** | 2015-04-06 → 2015-04-09 (+3d) | 2015-04-10 → 2015-04-16 (+6d) |  | 30d → 5d |  |
| 87 | Realizar Testes Unitários | 2015-04-06 → 2015-04-09 (+3d) | 2015-04-08 → 2015-04-14 (+6d) |  | 30d → 5d | resources HRST 1; Juraci Silva → none |
| 88 | Ajustes Testes Unitários | 2015-04-08 → 2015-04-14 (+6d) | 2015-04-10 → 2015-04-16 (+6d) |  | 30d → 5d | resources HRST 1; Juraci Silva → none |
| 89 | **VM** | 2015-04-06 → 2015-04-09 (+3d) | 2015-04-10 → 2015-04-16 (+6d) |  | 62d → 27d |  |
| 90 | Realizar Testes Unitários | 2015-04-06 → 2015-04-09 (+3d) | 2015-04-08 → 2015-04-14 (+6d) |  | 62d → 27d | resources HRST 2; Juraci Silva → none |
| 91 | Ajustes Testes Unitários | 2015-04-08 → 2015-04-14 (+6d) | 2015-04-10 → 2015-04-16 (+6d) |  | 62d → 27d | resources HRST 2; Juraci Silva → none |
| 92 | Onda 1 - Entrega Testes Unitários - VS e VM | 2015-04-10 → 2015-04-16 (+6d) | 2015-04-10 → 2015-04-16 (+6d) |  | 70d → 35d |  |
| 93 | **VID São Paulo e Curitiba** | 2015-04-16 → 2015-04-23 (+7d) | 2015-04-30 → 2015-05-07 (+7d) |  |  |  |
| 94 | Realizar Testes Unitários | 2015-04-16 → 2015-04-23 (+7d) | 2015-04-24 → 2015-04-30 (+6d) |  |  | resources HRST 1; Juraci Silva → none |
| 95 | Ajustes Testes Unitários | 2015-04-27 → 2015-04-30 (+3d) | 2015-04-30 → 2015-05-07 (+7d) |  |  | resources HRST 1; Juraci Silva → none |
| 96 | **VE** | 2015-04-16 → 2015-04-23 (+7d) | 2015-04-30 → 2015-05-07 (+7d) |  | 58d → 23d |  |
| 97 | Realizar Testes Unitários | 2015-04-16 → 2015-04-23 (+7d) | 2015-04-24 → 2015-04-30 (+6d) |  | 58d → 23d | resources HRST 2; Juraci Silva → none |
| 98 | Ajustes Testes Unitários | 2015-04-27 → 2015-04-30 (+3d) | 2015-04-30 → 2015-05-07 (+7d) |  | 58d → 23d | resources HRST 2; Juraci Silva → none |
| 99 | Onda 1 - Entrega Testes Unitários - VID SP - VID CTB - VE | 2015-04-30 → 2015-05-07 (+7d) | 2015-04-30 → 2015-05-07 (+7d) |  | 58d → 23d |  |
| 100 | **Testes Integrados** | 2015-04-13 → 2015-04-16 (+3d) | 2015-07-10 → 2015-05-21 (-50d) | 60d → 22d | 10d → 5d |  |
| 101 | **Gestão de Competência** | 2015-04-13 → 2015-04-16 (+3d) | 2015-05-15 → 2015-05-21 (+6d) |  | 12d → 5d |  |
| 102 | Testes Integrados VS | 2015-04-13 → 2015-04-16 (+3d) | 2015-04-24 → 2015-04-30 (+6d) |  | 30d → 5d | resources VS → none |
| 103 | Testes Integrados VM | 2015-04-13 → 2015-04-16 (+3d) | 2015-04-24 → 2015-04-30 (+6d) |  | 62d → 27d | resources VM → none |
| 104 | Testes Integrados VID São Paulo e Curitiba | 2015-05-04 → 2015-05-07 (+3d) | 2015-05-08 → 2015-05-14 (+6d) |  | 35d → 0d | resources VID Curitiba; VID São Paulo → none |
| 105 | Testes Integrados VE | 2015-05-04 → 2015-05-07 (+3d) | 2015-05-08 → 2015-05-14 (+6d) |  |  | resources VE → none |
| 106 | **Ajustes Testes Integrados** | 2015-04-27 → 2015-04-30 (+3d) | 2015-05-15 → 2015-05-21 (+6d) |  | 30d → 0d |  |
| 107 | VS | 2015-04-27 → 2015-04-30 (+3d) | 2015-04-30 → 2015-05-07 (+7d) |  | 45d → 10d | resources HRST 1 → none |
| 108 | VM | 2015-04-27 → 2015-04-30 (+3d) | 2015-05-08 → 2015-05-14 (+6d) |  | 30d → 5d | resources HRST 2 → none |
| 109 | VID São Paulo e Curitiba | 2015-05-11 → 2015-05-14 (+3d) | 2015-05-15 → 2015-05-21 (+6d) |  | 35d → 0d | resources HRST 1 → none |
| 110 | VE | 2015-05-11 → 2015-05-14 (+3d) | 2015-05-15 → 2015-05-21 (+6d) |  | 35d → 0d | resources HRST 2 → none |
| 111 | Onda 1 - Entrega Fase 4 - Preparação Final | 2015-05-15 → 2015-05-21 (+6d) | 2015-05-15 → 2015-05-21 (+6d) |  | 48d → 13d |  |
| 112 | **Fase 5 - Go Live e Operação Assistida** | 2015-05-18 → 2015-05-21 (+3d) | 2015-07-24 → 2015-06-11 (-43d) | 48d → 13d |  |  |
| 113 | **Go Live - Onda 1 - Gestão de Competência** | 2015-05-18 → 2015-05-21 (+3d) | 2015-06-03 → 2015-06-11 (+8d) |  | 35d → 0d |  |
| 114 | Treinamento | 2015-05-18 → 2015-05-21 (+3d) | 2015-05-22 → 2015-05-28 (+6d) |  | 35d → 0d |  |
| 115 | Cutover | 2015-05-25 → 2015-05-28 (+3d) | 2015-05-29 → 2015-06-08 (+10d) |  | 35d → 0d |  |
| 116 | Onda 1 - Go Live | 2015-05-29 → 2015-06-08 (+10d) | 2015-05-29 → 2015-06-08 (+10d) |  | 35d → 0d |  |
| 117 | Operação Assistida | 2015-06-01 → 2015-06-08 (+7d) | 2015-06-03 → 2015-06-11 (+8d) |  | 35d → 0d |  |
